# New Project plan V1

How a schedule from MS Project changed from version to version. A marks actual dates.

## Version 1 (saved 2015-01-29, file MCAS Plan V2.mpp)

Note of the change: Add MCAS

| ID | WBS | Task | Duration | Start | Finish | Predecessors | Total float |
| --- | --- | --- | --- | --- | --- | --- | --- |
| 1 | 1 | **1 Project Initiation** | 241d | 2015-01-29 | 2015-12-31 |  |  |
| 2 |  | 1.1 Project Scope Definition | 1d | 2015-01-29 | 2015-01-29 |  |  |
| 3 |  | 1.2 Project Plan Development | 1d | 2015-01-29 | 2015-01-29 |  |  |
| 4 |  | 1.3 Project Scope Completed | 1d | 2015-01-29 | 2015-01-29 |  |  |
| 5 | 2 | **2 Requirement Gathering** | 326d? | 2014-10-02 | 2015-12-31 |  | 0d |
| 6 |  | 2.1 Dashboard Requirements | 241d | 2015-01-29 | 2015-12-31 |  |  |
| 7 | 2.2 | **2.2 Diary Listing Requirements** | 241d? | 2015-01-29 | 2015-12-31 |  |  |
| 8 |  | 2.2.1 Diary Items | 241d | 2015-01-29 | 2015-12-31 |  |  |
| 9 |  | 2.2.2 Assigned Tasks | 241d | 2015-01-29 | 2015-12-31 |  |  |
| 10 |  | 2.2.3 Escalation Tasks | 241d | 2015-01-29 | 2015-12-31 |  |  |
| 11 | 2.3 | **2.3 System Admin Requirements** | 241d | 2015-01-29 | 2015-12-31 |  | 0d |
| 12 | 2.3.1 | **2.3.1 Upload Main Menu** | 241d | 2015-01-29 | 2015-12-31 |  |  |
| 13 |  | 2.3.1.1 Bus Upload Listing | 1d? | 2015-12-31 | 2015-12-31 |  |  |
| 14 |  | 2.3.2 User Admin | 241d | 2015-01-29 | 2015-12-31 |  |  |
| 15 |  | 2.3.3 Service Provider Master | 241d | 2015-01-29 | 2015-12-31 |  |  |
| 16 | 2.4 | **2.4 Claim Requirements** | 326d | 2014-10-02 | 2015-12-31 |  | 0d |
| 17 | 2.4.1 | **2.4.1 Buses** | 36d | 2014-10-02 | 2014-11-20 |  |  |
| 18 |  | 2.4.1.1 Accident | 31d | 2014-10-02 | 2014-11-13 |  |  |
| 19 |  | 2.4.1.2 Claim | 31d | 2014-10-02 | 2014-11-13 |  |  |
| 20 |  | 2.4.1.3 Service Provider | 31d | 2014-10-02 | 2014-11-13 |  |  |
| 21 |  | 2.4.1.4 Notes | 31d | 2014-10-02 | 2014-11-13 |  |  |
| 22 |  | 2.4.1.5 Tasks | 31d | 2014-10-02 | 2014-11-13 |  |  |
| 23 |  | 2.4.1.6 Attachment | 31d | 2014-10-02 | 2014-11-13 |  |  |
| 24 |  | 2.4.1.7 Dairy | 31d | 2014-10-02 | 2014-11-13 |  |  |
| 25 |  | 2.4.1.8 Reassigned Dairy | 31d | 2014-10-02 | 2014-11-13 |  |  |
| 26 |  | 2.4.1.9 Reserve | 31d | 2014-10-02 | 2014-11-13 |  |  |
| 27 |  | 2.4.1.10 Reserve History | 31d | 2014-10-02 | 2014-11-13 |  |  |
| 28 |  | 2.4.1.11 Mandate | 31d | 2014-10-02 | 2014-11-13 |  |  |
| 29 |  | 2.4.1.12 Mandate History | 31d | 2014-10-02 | 2014-11-13 |  |  |
| 30 |  | 2.4.1.13 Payment | 31d | 2014-10-02 | 2014-11-13 |  |  |
| 31 |  | 2.4.1.14 Payment History | 31d | 2014-10-02 | 2014-11-13 |  |  |
| 32 |  | 2.4.1.15 Recovery | 31d | 2014-10-02 | 2014-11-13 |  |  |
| 33 |  | 2.4.2 Trains | 1d | 2015-01-29 | 2015-01-29 |  |  |
| 34 |  | 2.4.3 Taxis | 241d | 2015-01-29 | 2015-12-31 |  |  |
| 35 |  | 2.4.4 Rental Cars | 241d | 2015-01-29 | 2015-12-31 |  |  |
| 36 |  | 2.4.5 Private Cars | 241d | 2015-01-29 | 2015-12-31 |  |  |
| 37 | 2.5 | **2.5 Upload Requirements** | 241d | 2015-01-29 | 2015-12-31 |  |  |
| 38 |  | 2.5.1 TAC Upload | 241d | 2015-01-29 | 2015-12-31 |  |  |
| 39 |  | 2.5.2 Claim File Upload | 241d | 2015-01-29 | 2015-12-31 |  |  |
| 40 | 2.6 | **2.6 Claim Enquiry Requirements** | 241d | 2015-01-29 | 2015-12-31 |  |  |
| 41 |  | 2.6.1 Claims | 241d | 2015-01-29 | 2015-12-31 |  |  |
| 42 |  | 2.6.2 Claim Documents Printing | 241d | 2015-01-29 | 2015-12-31 |  |  |
| 43 |  | 2.6.3 Job Schedule Enquiry | 241d | 2015-01-29 | 2015-12-31 |  |  |
| 44 | 2.7 | **2.7 Security Management System** | 241d | 2015-01-29 | 2015-12-31 |  |  |
| 45 |  | 2.7.1 Permission Screen UI | 1d? | 2015-12-31 | 2015-12-31 |  |  |
| 46 |  | 2.7.2 Permission screen functionality | 1d? | 2015-12-31 | 2015-12-31 |  |  |
| 47 | 2.8 | **2.8 Document Print** | 241d | 2015-01-29 | 2015-12-31 |  |  |
| 48 |  | 2.8.1 Claim Payment Document Printing | 241d | 2015-01-29 | 2015-12-31 |  |  |
| 49 |  | 2.8.2 Claim Registration Document Printing | 241d | 2015-01-29 | 2015-12-31 |  |  |
| 50 | 2.9 | **2.9 Document Generation Module** | 241d | 2015-01-29 | 2015-12-31 |  |  |
| 51 |  | 2.9.1 Document Generation Criteria | 241d | 2015-01-29 | 2015-12-31 |  |  |
| 52 |  | 2.10 Requirements signed off by client | 1d | 2015-12-31 | 2015-12-31 |  |  |
| 53 | 2.11 | **2.10 Unreported Claim** | 241d | 2015-01-29 | 2015-12-31 |  |  |
| 54 |  | UI and Functionality | 241d | 2015-01-29 | 2015-12-31 |  |  |
| 55 | 3 | **3 Requirements Finalized in TFS** | 1d | 2015-01-30 | 2015-01-30 | 11 | 0d |
| 56 |  | 3.1 Document Upload in TFS | 1d | 2015-01-30 | 2015-01-30 | 11 |  |
| 57 | 4 | **4 Design UI and Functionality** | 349d | 2014-09-01 | 2015-12-31 | 55 | 0d |
| 58 | 4.1 | **4.1 Bus UI and Functionality** | 1d | 2015-01-30 | 2015-01-30 | 17 |  |
| 59 |  | 4.1.1 Accident | 31d | 2014-11-14 | 2014-12-26 | 18 |  |
| 60 |  | 4.1.2 Claim | 31d | 2014-11-14 | 2014-12-26 | 19 |  |
| 61 |  | 4.1.3 Service Provider | 31d | 2014-11-14 | 2014-12-26 | 20 |  |
| 62 |  | 4.1.4 Notes | 31d | 2014-11-14 | 2014-12-26 | 21 |  |
| 63 |  | 4.1.5 Tasks | 31d | 2014-11-14 | 2014-12-26 | 22 |  |
| 64 |  | 4.1.6 Attachment | 31d | 2014-11-14 | 2014-12-26 | 23 |  |
| 65 |  | 4.1.7 Dairy | 31d | 2014-11-14 | 2014-12-26 | 24 |  |
| 66 |  | 4.1.8 Reassigned Dairy | 31d | 2014-11-14 | 2014-12-26 | 25 |  |
| 67 |  | 4.1.9 Reserve | 31d | 2014-11-14 | 2014-12-26 | 26 |  |
| 68 |  | 4.1.10 Reserve History | 31d | 2014-11-14 | 2014-12-26 | 27 |  |
| 69 |  | 4.1.11 Mandate | 31d | 2014-11-14 | 2014-12-26 | 28 |  |
| 70 |  | 4.1.12 Mandate History | 31d | 2014-11-14 | 2014-12-26 | 29 |  |

| ID | WBS | Task | Duration | Start | Finish | Predecessors | Total float |
| --- | --- | --- | --- | --- | --- | --- | --- |
| 71 |  | 4.1.13 Payment | 31d | 2014-11-14 | 2014-12-26 | 30 |  |
| 72 |  | 4.1.14 Payment History | 31d | 2014-11-14 | 2014-12-26 | 31 |  |
| 73 |  | 4.1.15 Recovery | 31d | 2014-11-14 | 2014-12-26 | 32 |  |
| 74 |  | 4.1.16 Transaction History | 76d | 2014-09-01 | 2014-12-15 |  |  |
| 75 |  | 4.2 Train UI and Functionality | 1d | 2015-01-30 | 2015-01-30 | 33 |  |
| 76 |  | 4.3 Taxi UI and Functionality | 240d | 2015-01-30 | 2015-12-31 | 34 |  |
| 77 |  | 4.4 Rental Cars UI and Functionality | 240d | 2015-01-30 | 2015-12-31 | 35 |  |
| 78 |  | 4.5 Private Cars UI and Functionality | 240d | 2015-01-30 | 2015-12-31 | 36 |  |
| 79 |  | 4.6 Bus UI and Functionality signed off by client | 239d | 2015-02-02 | 2015-12-31 | 58 |  |
| 80 |  | 4.7 Train UI and Functionality signed off by client | 239d | 2015-02-02 | 2015-12-31 | 75 |  |
| 81 |  | 4.8 Taxi UI and Functionality signed off by client | 239d | 2015-02-02 | 2015-12-31 | 76 |  |
| 82 |  | 4.9 Rental Cars UI and Functionality signed off by client | 239d | 2015-02-02 | 2015-12-31 | 77 |  |
| 83 |  | 4.10 Private Cars UI and Functionality signed off by client | 239d | 2015-02-02 | 2015-12-31 | 78 |  |
| 84 | 5 | **5 Iterative Development and Testing** | 273d | 2014-12-16 | 2015-12-31 | 55 | 0d |
| 85 | 5.1 | **5.1 Dashboard** | 240d | 2015-01-30 | 2015-12-31 | 6 | 0d |
| 86 |  | 5.1.1 User Manual | 3d | 2015-02-04 | 2015-02-06 | 6 |  |
| 87 |  | 5.1.2 Functionality of dashboard | 240d | 2015-01-30 | 2015-12-31 | 6 |  |
| 88 |  | 5.1.3 Test Approach/Test Cases | 240d | 2015-01-30 | 2015-12-31 | 6 |  |
| 89 |  | 5.1.4 QA Testing | 239d | 2015-02-02 | 2015-12-31 | 87 |  |
| 90 |  | 5.1.5 UAT | 239d | 2015-02-02 | 2015-12-31 | 89 |  |
| 91 | 5.2 | **5.2 Diary Listing** | 240d | 2015-01-30 | 2015-12-31 | 7 |  |
| 92 |  | 5.2.1 Diary Items | 240d | 2015-01-30 | 2015-12-31 | 8 |  |
| 93 |  | 5.2.2 Assigned Tasks | 240d | 2015-01-30 | 2015-12-31 | 9 |  |
| 94 |  | 5.2.3 Escalation Tasks | 240d | 2015-01-30 | 2015-12-31 | 10 |  |
| 95 |  | 5.2.4 User Manual | 240d | 2015-01-30 | 2015-12-31 | 8, 9, 10 |  |
| 96 |  | 5.2.5 Test Approach/Test Cases | 240d | 2015-01-30 | 2015-12-31 | 8, 9, 10 |  |
| 97 |  | 5.2.6 QA Testing | 240d | 2015-01-30 | 2015-12-31 | 8, 9, 10 |  |
| 98 |  | 5.2.7 UAT | 239d | 2015-02-02 | 2015-12-31 | 97 |  |
| 99 | 5.3 | **5.3 System Admin** | 240d | 2015-01-30 | 2015-12-31 | 11 |  |
| 100 |  | 5.3.1 Upload Main Menu | 240d | 2015-01-30 | 2015-12-31 | 12 |  |
| 101 |  | 5.3.2 User Admin | 240d | 2015-01-30 | 2015-12-31 | 14 |  |
| 102 |  | 5.3.3 Service Provider Master | 240d | 2015-01-30 | 2015-12-31 | 15 |  |
| 103 |  | 5.3.4 User Manual | 240d | 2015-01-30 | 2015-12-31 | 11 |  |
| 104 |  | 5.3.5 Test Approach/Test Cases | 240d | 2015-01-30 | 2015-12-31 | 11 |  |
| 105 |  | 5.3.6 QA Testing | 239d | 2015-02-02 | 2015-12-31 | 100, 101, 102 |  |
| 106 |  | 5.3.7 UAT | 238d | 2015-02-03 | 2015-12-31 | 105 |  |
| 107 | 5.4 | **5.4 Claim** | 64d | 2015-01-01 | 2015-03-31 | 16 |  |
| 108 | 5.4.1 | **5.4.1 Buses** | 64d | 2015-01-01 | 2015-03-31 | 58 |  |
| 109 |  | 5.4.1.1 Accident | 34d | 2014-12-16 | 2015-01-30 | 59 |  |
| 110 |  | 5.4.1.2 Claim | 34d | 2014-12-16 | 2015-01-30 | 60 |  |
| 111 |  | 5.4.1.3 Service Provider | 34d | 2014-12-16 | 2015-01-30 | 61 |  |
| 112 |  | 5.4.1.4 Notes | 34d | 2014-12-16 | 2015-01-30 | 62 |  |
| 113 |  | 5.4.1.5 Tasks | 34d | 2014-12-16 | 2015-01-30 | 63 |  |
| 114 |  | 5.4.1.6 Attachment | 41d | 2014-12-16 | 2015-02-10 | 64 |  |
| 115 |  | 5.4.1.7 Dairy | 39d | 2014-12-16 | 2015-02-06 | 65 |  |
| 116 |  | 5.4.1.8 Reassigned Dairy | 23d | 2014-12-16 | 2015-01-15 | 66 |  |
| 117 |  | 5.4.1.9 Reserve | 49d | 2014-12-16 | 2015-02-20 | 67 |  |
| 118 |  | 5.4.1.10 Reserve History | 52d | 2014-12-16 | 2015-02-25 | 68 |  |
| 119 |  | 5.4.1.11 Mandate | 52d | 2014-12-29 | 2015-03-10 | 69 |  |
| 120 |  | 5.4.1.12 Mandate History | 52d | 2014-12-29 | 2015-03-10 | 70 |  |
| 121 |  | 5.4.1.13 Payment | 75d | 2014-12-29 | 2015-04-10 | 71 |  |
| 122 |  | 5.4.1.14 Payment History | 75d | 2014-12-29 | 2015-04-10 | 72 |  |
| 123 |  | 5.4.1.15 Recovery | 75d | 2014-12-16 | 2015-03-30 | 73 |  |
| 124 |  | 5.4.1.16 Transaction History | 38d | 2014-12-16 | 2015-02-05 | 74 |  |
| 125 |  | 5.4.2 Trains | 1d | 2015-01-30 | 2015-01-30 | 33 |  |
| 126 |  | 5.4.3 Taxis | 240d | 2015-01-30 | 2015-12-31 | 34 |  |
| 127 |  | 5.4.4 Rental Cars | 240d | 2015-01-30 | 2015-12-31 | 35 |  |
| 128 |  | 5.4.5 Private Cars | 240d | 2015-01-30 | 2015-12-31 | 36 |  |
| 129 |  | 5.4.6 User Manual | 240d | 2015-01-30 | 2015-12-31 | 17, 33, 34, 35, 36 |  |
| 130 |  | 5.4.7 Test Approach/Test Cases | 240d | 2015-01-30 | 2015-12-31 | 17, 33, 34, 35, 36 |  |
| 131 |  | 5.4.8 QA Testing | 239d | 2015-02-02 | 2015-12-31 | 108, 125, 126, 127, 128 |  |
| 132 |  | 5.4.9 UAT | 238d | 2015-02-03 | 2015-12-31 | 131 |  |
| 133 | 5.5 | **5.5 Upload** | 240d | 2015-01-30 | 2015-12-31 | 37 |  |
| 134 |  | 5.5.1 TAC Upload | 240d | 2015-01-30 | 2015-12-31 | 38 |  |
| 135 |  | 5.5.2 Claim File Upload | 240d | 2015-01-30 | 2015-12-31 | 39 |  |
| 136 |  | 5.5.3 User Manual | 240d | 2015-01-30 | 2015-12-31 | 38, 39 |  |
| 137 |  | 5.5.4 Test Approach/Test Cases | 240d | 2015-01-30 | 2015-12-31 | 38, 39 |  |
| 138 |  | 5.5.5 QA Testing | 239d | 2015-02-02 | 2015-12-31 | 134, 135 |  |
| 139 |  | 5.5.6 UAT | 238d | 2015-02-03 | 2015-12-31 | 138 |  |
| 140 | 5.6 | **5.6 Claim Enquiry** | 240d | 2015-01-30 | 2015-12-31 | 40 |  |

| ID | WBS | Task | Duration | Start | Finish | Predecessors |
| --- | --- | --- | --- | --- | --- | --- |
| 141 |  | 5.6.1 Claims | 240d | 2015-01-30 | 2015-12-31 | 41 |
| 142 |  | 5.6.2 Claim Documents Printing | 240d | 2015-01-30 | 2015-12-31 | 42 |
| 143 |  | 5.6.3 Job Schedule Enquiry | 240d | 2015-01-30 | 2015-12-31 | 43 |
| 144 |  | 5.6.4 User Manual | 240d | 2015-01-30 | 2015-12-31 | 40 |
| 145 |  | 5.6.5 Test Approach/Test Cases | 240d | 2015-01-30 | 2015-12-31 | 41, 42, 43 |
| 146 |  | 5.6.6 QA Testing | 239d | 2015-02-02 | 2015-12-31 | 141, 142, 143 |
| 147 |  | 5.6.7 UAT | 238d | 2015-02-03 | 2015-12-31 | 146 |
| 148 | 5.7 | **5.7 Security Management System** | 240d | 2015-01-30 | 2015-12-31 | 44 |
| 149 |  | 5.7.1 Permission Screen UI and Functionality | 1d? | 2015-12-31 | 2015-12-31 |  |
| 150 |  | 5.7.2 User Manual | 1d | 2015-12-31 | 2015-12-31 |  |
| 151 |  | 5.7.3 Test Approach/Test Cases | 240d | 2015-01-30 | 2015-12-31 | 44 |
| 152 |  | 5.7.4 QA Testing | 1d | 2015-12-31 | 2015-12-31 | 151 |
| 153 |  | 5.7.5 UAT | 238d | 2015-02-03 | 2015-12-31 | 152 |
| 154 | 5.8 | **5.8 Document Print** | 240d | 2015-01-30 | 2015-12-31 | 47 |
| 155 |  | 5.8.1 Claim Payment Document Printing | 240d | 2015-01-30 | 2015-12-31 | 48 |
| 156 |  | 5.8.2 Claim Registration Document Printing | 240d | 2015-01-30 | 2015-12-31 | 49 |
| 157 |  | 5.8.3 User Manual | 1d | 2015-12-31 | 2015-12-31 |  |
| 158 |  | 5.8.4 Test Approach/Test Cases | 240d | 2015-01-30 | 2015-12-31 | 47 |
| 159 |  | 5.8.5 QA Testing | 239d | 2015-02-02 | 2015-12-31 | 155, 156 |
| 160 |  | 5.8.6 UAT | 238d | 2015-02-03 | 2015-12-31 | 159 |
| 161 | 5.9 | **5.9 Document Generation Module** | 240d | 2015-01-30 | 2015-12-31 | 50 |
| 162 |  | 5.9.1 User Manual | 240d | 2015-01-30 | 2015-12-31 | 50 |
| 163 |  | 5.9.2 Test Approach/Test Cases | 240d | 2015-01-30 | 2015-12-31 | 50 |
| 164 |  | 5.9.4 Document Generation Criteria | 240d | 2015-01-30 | 2015-12-31 | 50 |
| 165 |  | 5.9.5 QA Testing | 239d | 2015-02-02 | 2015-12-31 | 162, 163, 164 |
| 166 |  | 5.9.6 UAT | 238d | 2015-02-03 | 2015-12-31 | 165 |
| 167 | 5.10 | **5.10 Unreported Claim Menu** | 240d | 2015-01-30 | 2015-12-31 |  |
| 168 |  | 5.10.1 UI and functionality implementation | 240d | 2015-01-30 | 2015-12-31 | 54 |
| 169 |  | 5.10.2 User Manual | 240d | 2015-01-30 | 2015-12-31 | 54 |
| 170 |  | 5.10.3 Test Approach/Test Cases | 240d | 2015-01-30 | 2015-12-31 | 54 |
| 171 |  | 5.10.4 QA Testing | 239d | 2015-02-02 | 2015-12-31 | 168 |
| 172 |  | 5.10.5 UAT | 1d | 2015-12-31 | 2015-12-31 | 171 |
| 173 | 6 | **6 QA Test Scripts** | 241d | 2015-01-29 | 2015-12-31 |  |
| 174 |  | 6.1 Testing Approach Development/Confirmation | 1d | 2015-12-31 | 2015-12-31 |  |
| 175 |  | 6.2 Test Condition Development | 1d | 2015-12-31 | 2015-12-31 |  |
| 176 |  | 6.3 Test Script Development | 1d | 2015-12-31 | 2015-12-31 |  |
| 177 |  | 6.4 Expected Results Development | 1d | 2015-12-31 | 2015-12-31 |  |
| 178 | 7 | **7 QA Testing** | 1d | 2015-12-31 | 2015-12-31 |  |
| 179 |  | 7.1 QA Testing | 1d | 2015-12-31 | 2015-12-31 |  |
| 180 |  | 7.2 Review results | 1d | 2015-12-31 | 2015-12-31 |  |
| 181 | 8 | **8 End-to-end UAT** | 1d | 2015-12-31 | 2015-12-31 |  |
| 182 |  | 8.1 Access to UAT Environment | 1d | 2015-12-31 | 2015-12-31 |  |
| 183 |  | 8.2 Product Testing | 1d | 2015-12-31 | 2015-12-31 |  |
| 184 | 9 | **9 Client UAT** | 1d | 2015-12-31 | 2015-12-31 |  |
| 185 |  | 9.1 Access to UAT Environment | 1d | 2015-12-31 | 2015-12-31 |  |
| 186 |  | 9.2 Product Testing | 1d | 2015-12-31 | 2015-12-31 |  |
| 187 | 10 | **10 Deployment** | 1d | 2015-12-31 | 2015-12-31 |  |
| 188 |  | 10.1 Deployment Approach | 1d | 2015-12-31 | 2015-12-31 |  |
| 189 |  | 10.2 Platform Readiness | 1d | 2015-12-31 | 2015-12-31 |  |
| 190 |  | 10.3 Software Installation | 1d | 2015-12-31 | 2015-12-31 |  |
| 191 |  | 10.4 UAT Sign-off | 1d | 2015-12-31 | 2015-12-31 |  |
| 192 |  | 10.5 Go Live Preparation | 1d | 2015-12-31 | 2015-12-31 |  |
| 193 |  | 10.6 Support Kick Off | 1d | 2015-12-31 | 2015-12-31 |  |

## Version 2 (saved 2015-02-02, file MCAS Plan V3.mpp)

Note of the change: Add MCAS

Last finish stays 2015-12-31.

Added:

| ID | Task | Duration | Start | Finish | Resources |
| --- | --- | --- | --- | --- | --- |
| 6 | **2.1 System Admin Requirements** | 241d | 2015-01-29 | 2015-12-31 | Singapore |
| 7 | **2.1.1 Upload Main Menu** | 241d | 2015-01-29 | 2015-12-31 | Singapore |
| 8 | 2.1.1.1 Bus Upload Listing | 1d? | 2015-12-31 | 2015-12-31 |  |
| 9 | 2.1.1.2 User Admin | 241d | 2015-01-29 | 2015-12-31 | Singapore |
| 10 | 2.1.1.3 Service Provider Master | 241d | 2015-01-29 | 2015-12-31 | Singapore |
| 11 | **2.2 Upload Requirements** | 241d | 2015-01-29 | 2015-12-31 | Singapore |
| 12 | 2.2.1 TAC Upload | 241d | 2015-01-29 | 2015-12-31 | Singapore |
| 13 | 2.2.2 Claim File Upload | 241d | 2015-01-29 | 2015-12-31 | Singapore |
| 84 | **5.1 System Admin** | 240d | 2015-01-30 | 2015-12-31 | India |
| 85 | 5.1.1 Upload Main Menu | 240d | 2015-01-30 | 2015-12-31 | India |
| 86 | 5.1.2 User Admin | 240d | 2015-01-30 | 2015-12-31 | India |
| 87 | 5.1.3 Service Provider Master | 240d | 2015-01-30 | 2015-12-31 | India |
| 88 | 5.1.4 User Manual | 240d | 2015-01-30 | 2015-12-31 | India |
| 89 | 5.1.5 Test Approach/Test Cases | 240d | 2015-01-30 | 2015-12-31 | India |
| 90 | 5.1.6 QA Testing | 239d | 2015-02-02 | 2015-12-31 | India |
| 91 | 5.1.7 UAT | 238d | 2015-02-03 | 2015-12-31 | India |
| 92 | **5.2 Upload** | 240d | 2015-01-30 | 2015-12-31 | India |
| 93 | 5.2.1 TAC Upload | 240d | 2015-01-30 | 2015-12-31 | India |
| 94 | 5.2.2 Claim File Upload | 240d | 2015-01-30 | 2015-12-31 | India |
| 95 | 5.2.3 User Manual | 240d | 2015-01-30 | 2015-12-31 | India |
| 96 | 5.2.4 Test Approach/Test Cases | 240d | 2015-01-30 | 2015-12-31 | India |
| 97 | 5.2.5 QA Testing | 239d | 2015-02-02 | 2015-12-31 | India |
| 98 | 5.2.6 UAT | 238d | 2015-02-03 | 2015-12-31 | India |

Removed: 11 2.3 System Admin Requirements; 12 2.3.1 Upload Main Menu; 13 2.3.1.1 Bus Upload Listing; 14 2.3.2 User Admin; 15 2.3.3 Service Provider Master; 37 2.5 Upload Requirements; 38 2.5.1 TAC Upload; 39 2.5.2 Claim File Upload; 54 UI and Functionality; 99 5.3 System Admin; 100 5.3.1 Upload Main Menu; 101 5.3.2 User Admin; 102 5.3.3 Service Provider Master; 103 5.3.4 User Manual; 104 5.3.5 Test Approach/Test Cases; 105 5.3.6 QA Testing; 106 5.3.7 UAT; 133 5.5 Upload; 134 5.5.1 TAC Upload; 135 5.5.2 Claim File Upload; 136 5.5.3 User Manual; 137 5.5.4 Test Approach/Test Cases; 138 5.5.5 QA Testing; 139 5.5.6 UAT

Changed:

| ID | Task | Duration | Predecessors | Other |
| --- | --- | --- | --- | --- |
| 14 | **2.3 Dashboard Requirements** |  |  | was named 2.1 Dashboard Requirements |
| 15 | **2.3.1 Diary Listing Requirements** |  |  | was named 2.2 Diary Listing Requirements |
| 16 | 2.3.1.1 Diary Items |  |  | was named 2.2.1 Diary Items |
| 17 | 2.3.1.2 Assigned Tasks |  |  | was named 2.2.2 Assigned Tasks |
| 18 | 2.3.1.3 Escalation Tasks |  |  | was named 2.2.3 Escalation Tasks |
| 40 | **2.5 Claim Enquiry Requirements** |  |  | was named 2.6 Claim Enquiry Requirements |
| 41 | 2.5.1 Claims |  |  | was named 2.6.1 Claims |
| 42 | 2.5.2 Claim Documents Printing |  |  | was named 2.6.2 Claim Documents Printing |
| 43 | 2.5.3 Job Schedule Enquiry |  |  | was named 2.6.3 Job Schedule Enquiry |
| 44 | **2.6 Security Management System** |  |  | was named 2.7 Security Management System |
| 45 | 2.6.1 Permission Screen UI |  |  | was named 2.7.1 Permission Screen UI |
| 46 | 2.6.2 Permission screen functionality |  |  | was named 2.7.2 Permission screen functionality |
| 47 | **2.7 Document Print** |  |  | was named 2.8 Document Print |
| 48 | 2.7.1 Claim Payment Document Printing |  |  | was named 2.8.1 Claim Payment Document Printing |
| 49 | 2.7.2 Claim Registration Document Printing |  |  | was named 2.8.2 Claim Registration Document Printing |
| 50 | **2.8 Document Generation Module** |  |  | was named 2.9 Document Generation Module |
| 51 | 2.8.1 Document Generation Criteria |  |  | was named 2.9.1 Document Generation Criteria |
| 52 | 2.9 Unreported Claim |  |  | was named 2.10 Unreported Claim |
| 53 | 2.10 Requirements signed off by client | 1d → 1d? |  |  |
| 54 | **3 Requirements Finalized in TFS** |  | 2.3 System Admin Requirements → none |  |
| 55 | 3.1 Document Upload in TFS |  | 2.3 System Admin Requirements → none |  |
| 99 | **5.3 Dashboard** |  |  | was named 5.1 Dashboard |
| 100 | 5.3.1 User Manual |  |  | was named 5.1.1 User Manual |
| 101 | 5.3.2 Functionality of dashboard |  |  | was named 5.1.2 Functionality of dashboard |
| 102 | 5.3.3 Test Approach/Test Cases |  |  | was named 5.1.3 Test Approach/Test Cases |
| 103 | 5.3.4 QA Testing |  |  | was named 5.1.4 QA Testing |
| 104 | 5.3.5 UAT |  |  | was named 5.1.5 UAT |
| 105 | **5.4 Diary Listing** |  |  | was named 5.2 Diary Listing |
| 106 | 5.4.1 Diary Items |  |  | was named 5.2.1 Diary Items |
| 107 | 5.4.2 Assigned Tasks |  |  | was named 5.2.2 Assigned Tasks |
| 108 | 5.4.3 Escalation Tasks |  |  | was named 5.2.3 Escalation Tasks |
| 109 | 5.4.4 User Manual |  |  | was named 5.2.4 User Manual |
| 110 | 5.4.5 Test Approach/Test Cases |  |  | was named 5.2.5 Test Approach/Test Cases |
| 111 | 5.4.6 QA Testing |  |  | was named 5.2.6 QA Testing |
| 112 | 5.4.7 UAT |  |  | was named 5.2.7 UAT |
| 113 | **5.5 Claim** |  |  | was named 5.4 Claim |
| 114 | **5.5.1 Buses** |  |  | was named 5.4.1 Buses |
| 115 | 5.5.1.1 Accident |  |  | was named 5.4.1.1 Accident |
| 116 | 5.5.1.2 Claim |  |  | was named 5.4.1.2 Claim |
| 117 | 5.5.1.3 Service Provider |  |  | was named 5.4.1.3 Service Provider |
| 118 | 5.5.1.4 Notes |  |  | was named 5.4.1.4 Notes |
| 119 | 5.5.1.5 Tasks |  |  | was named 5.4.1.5 Tasks |
| 120 | 5.5.1.6 Attachment |  |  | was named 5.4.1.6 Attachment |
| 121 | 5.5.1.7 Dairy |  |  | was named 5.4.1.7 Dairy |
| 122 | 5.5.1.8 Reassigned Dairy |  |  | was named 5.4.1.8 Reassigned Dairy |
| 123 | 5.5.1.9 Reserve |  |  | was named 5.4.1.9 Reserve |
| 124 | 5.5.1.10 Reserve History |  |  | was named 5.4.1.10 Reserve History |
| 125 | 5.5.1.11 Mandate |  |  | was named 5.4.1.11 Mandate |
| 126 | 5.5.1.12 Mandate History |  |  | was named 5.4.1.12 Mandate History |
| 127 | 5.5.1.13 Payment |  |  | was named 5.4.1.13 Payment |
| 128 | 5.5.1.14 Payment History |  |  | was named 5.4.1.14 Payment History |
| 129 | 5.5.1.15 Recovery |  |  | was named 5.4.1.15 Recovery |
| 130 | 5.5.1.16 Transaction History |  |  | was named 5.4.1.16 Transaction History |
| 131 | 5.5.2 Trains |  |  | was named 5.4.2 Trains |
| 132 | 5.5.3 Taxis |  |  | was named 5.4.3 Taxis |
| 133 | 5.5.4 Rental Cars |  |  | was named 5.4.4 Rental Cars |
| 134 | 5.5.5 Private Cars |  |  | was named 5.4.5 Private Cars |
| 135 | 5.5.6 User Manual |  |  | was named 5.4.6 User Manual |
| 136 | 5.5.7 Test Approach/Test Cases |  |  | was named 5.4.7 Test Approach/Test Cases |
| 137 | 5.5.8 QA Testing |  |  | was named 5.4.8 QA Testing |
| 138 | 5.5.9 UAT |  |  | was named 5.4.9 UAT |
| 167 | 5.10.1 UI and functionality implementation |  | UI and Functionality → none |  |
| 168 | 5.10.2 User Manual |  | UI and Functionality → none |  |
| 169 | 5.10.3 Test Approach/Test Cases |  | UI and Functionality → none |  |

## Version 3 (saved 2015-02-02, file MCAS Plan V4.mpp)

Note of the change: Add MCAS

Last finish stays 2015-12-31. Complete tasks 0 → 15.

Added:

| ID | Task | Duration | Start | Finish | Predecessors | Resources |
| --- | --- | --- | --- | --- | --- | --- |
| 10 | **2.1.2 User Admin** | 1d? | 2015-01-29 | 2015-01-29 |  | Singapore |
| 11 | 2.1.2.1 Entity Details | 1d | 2015-01-29 | 2015-01-29 |  | Singapore |
| 12 | 2.1.2.2. User Groups | 1d? | 2015-01-29 | 2015-01-29 |  |  |
| 13 | 2.1.2.3 User | 1d? | 2015-01-29 | 2015-01-29 |  |  |
| 14 | 2.1.2.4 Department Master | 1d? | 2015-01-29 | 2015-01-29 |  |  |
| 15 | 2.1.2.5 Password Setup | 1d? | 2015-01-29 | 2015-01-29 |  |  |
| 16 | 2.1.2.6 Release Locked Users | 1d? | 2015-01-29 | 2015-01-29 |  |  |
| 17 | 2.1.2.7 Country for User Access | 1d? | 2015-01-29 | 2015-01-29 |  |  |
| 18 | **2.1.3 Service Provider** | 1d? | 2015-01-29 | 2015-01-29 |  |  |
| 19 | 2.1.3.1 Insurer Master | 1d? | 2015-01-29 | 2015-01-29 |  |  |
| 20 | 2.1.3.2 Surveyor Master | 1d? | 2015-01-29 | 2015-01-29 |  |  |
| 21 | 2.1.3.3 Lawyer Master | 1d? | 2015-01-29 | 2015-01-29 |  |  |
| 22 | 2.1.3.4 Workshop/Dept Master | 1d? | 2015-01-29 | 2015-01-29 |  |  |
| 23 | 2.1.3.5 Hospital Master | 1d? | 2015-01-29 | 2015-01-29 |  |  |
| 24 | 2.1.3.6 Adjuster Master | 1d? | 2015-01-29 | 2015-01-29 |  |  |
| 25 | 2.1.3.7 Nature Of Loss | 1d? | 2015-01-29 | 2015-01-29 |  |  |
| 26 | 2.1.3.8 Type of Loss | 1d? | 2015-01-29 | 2015-01-29 |  |  |
| 27 | 2.1.3.9 Main Class Business | 1d? | 2015-01-29 | 2015-01-29 |  |  |
| 28 | 2.1.3.10 Sub Class | 1d? | 2015-01-29 | 2015-01-29 |  |  |
| 29 | 2.1.3.11 Claims Expense Master | 1d? | 2015-01-29 | 2015-01-29 |  |  |
| 30 | 2.1.3.12 Claims Close Reason Master | 1d? | 2015-01-29 | 2015-01-29 |  |  |
| 31 | 2.1.3.13 Currency Master | 1d? | 2015-01-29 | 2015-01-29 |  |  |
| 32 | 2.1.3.14 Exchange Rate Master | 1d? | 2015-01-29 | 2015-01-29 |  |  |
| 33 | 2.1.3.15 Vehicle Class | 1d? | 2015-01-29 | 2015-01-29 |  |  |
| 34 | 2.1.3.16 Vehicle Make | 1d? | 2015-01-29 | 2015-01-29 |  |  |
| 35 | 2.1.3.17 Vehicle Model | 1d? | 2015-01-29 | 2015-01-29 |  |  |
| 36 | 2.1.3.18 Insurance Policy | 1d? | 2015-01-29 | 2015-01-29 |  |  |
| 37 | 2.1.3.19 GST Setting | 1d? | 2015-01-29 | 2015-01-29 |  |  |
| 38 | 2.1.3.20 Organization | 1d? | 2015-01-29 | 2015-01-29 |  |  |
| 39 | 2.1.3.21 Claim Officer Duty | 1d? | 2015-01-29 | 2015-01-29 |  |  |
| 40 | 2.1.3.22 LOU Rate | 1d? | 2015-01-29 | 2015-01-29 |  |  |
| 41 | 2.1.3.23 Interchange | 1d? | 2015-01-29 | 2015-01-29 |  |  |
| 42 | 2.1.3.24 Deductible | 1d? | 2015-01-29 | 2015-01-29 |  |  |
| 46 | 2.2.3 SAP File Upload | 1d? | 2015-01-29 | 2015-01-29 |  |  |
| 47 | **2.3 Claim Requirements** | 326d | 2014-10-02 A | 2015-12-31 |  | Singapore |
| 48 | **2.3.1 Buses** | 36d | 2014-10-02 A | 2014-11-20 |  | Singapore |
| 49 | 2.3.1.1 Accident | 31d | 2014-10-02 A | 2014-11-13 A |  | Singapore |
| 50 | 2.3.1.2 Claim | 31d | 2014-10-02 A | 2014-11-13 A |  | Singapore |
| 51 | 2.3.1.3 Service Provider | 31d | 2014-10-02 A | 2014-11-13 A |  | Singapore |
| 52 | 2.3.1.4 Notes | 31d | 2014-10-02 A | 2014-11-13 A |  | Singapore |
| 53 | 2.3.1.5 Tasks | 31d | 2014-10-02 A | 2014-11-13 A |  | Singapore |
| 54 | 2.3.1.6 Attachment | 31d | 2014-10-02 A | 2014-11-13 A |  | Singapore |
| 55 | 2.3.1.7 Dairy | 31d | 2014-10-02 A | 2014-11-13 A |  | Singapore |
| 56 | 2.3.1.8 Reassigned Dairy | 31d | 2014-10-02 A | 2014-11-13 A |  | Singapore |
| 57 | 2.3.1.9 Reserve | 31d | 2014-10-02 A | 2014-11-13 A |  | Singapore |
| 58 | 2.3.1.10 Reserve History | 31d | 2014-10-02 A | 2014-11-13 A |  | Singapore |
| 59 | 2.3.1.11 Mandate | 31d | 2014-10-02 A | 2014-11-13 A |  | Singapore |
| 60 | 2.3.1.12 Mandate History | 31d | 2014-10-02 A | 2014-11-13 A |  | Singapore |
| 61 | 2.3.1.13 Payment | 31d | 2014-10-02 A | 2014-11-13 A |  | Singapore |
| 62 | 2.3.1.14 Payment History | 31d | 2014-10-02 A | 2014-11-13 A |  | Singapore |
| 63 | 2.3.1.15 Recovery | 31d | 2014-10-02 A | 2014-11-13 A |  | Singapore |
| 64 | 2.3.2 Trains | 1d | 2015-01-29 | 2015-01-29 |  | Singapore |
| 65 | 2.3.3 Taxis | 241d | 2015-01-29 | 2015-12-31 |  | Singapore |
| 66 | 2.3.4 Rental Cars | 241d | 2015-01-29 | 2015-12-31 |  | Singapore |
| 67 | 2.3.5 Private Cars | 241d | 2015-01-29 | 2015-12-31 |  | Singapore |
| 77 | **2.6 Document Generation Module** | 241d | 2015-01-29 | 2015-12-31 |  | Singapore |
| 78 | 2.6.1 Document Generation Criteria | 241d | 2015-01-29 | 2015-12-31 |  | Singapore |
| 82 | 2.8 Unreported Claim | 241d | 2015-01-29 | 2015-12-31 |  | Singapore |
| 118 | **5.1.1 Upload Main Menu** | 1d? | 2015-01-30 | 2015-01-30 |  |  |
| 119 | 5.1.1.1 Vehicle Listing Upload | 1d? | 2015-01-30 | 2015-01-30 |  |  |
| 120 | 5.1.1.2 Bus Captain Listing | 1d? | 2015-01-30 | 2015-01-30 |  |  |
| 121 | **5.1.2 User Admin** | 1d? | 2015-01-30 | 2015-01-30 |  |  |
| 122 | 5.1.2.1 Entity Details | 1d? | 2015-01-30 | 2015-01-30 |  |  |
| 123 | 5.1.2.2. User Groups | 1d? | 2015-01-30 | 2015-01-30 |  |  |
| 124 | 5.1.2.3 User | 1d? | 2015-01-30 | 2015-01-30 |  |  |
| 125 | 5.1.2.4 Department Master | 1d? | 2015-01-30 | 2015-01-30 |  |  |
| 126 | 5.1.2.5 Password Setup | 1d? | 2015-01-30 | 2015-01-30 |  |  |
| 127 | 5.1.2.6 Release Locked Users | 1d? | 2015-01-30 | 2015-01-30 |  |  |
| 128 | 5.1.2.7 Country for User Access | 1d? | 2015-01-30 | 2015-01-30 |  |  |
| 129 | **5.1.3 Service Provider** | 1d? | 2015-01-30 | 2015-01-30 |  |  |
| 130 | 5.1.3.1 Insurer Master | 1d? | 2015-01-30 | 2015-01-30 |  |  |
| 131 | 5.1.3.2 Surveyor Master | 1d? | 2015-01-30 | 2015-01-30 |  |  |
| 132 | 5.1.3.3 Lawyer Master | 1d? | 2015-01-30 | 2015-01-30 |  |  |
| 133 | 5.1.3.4 Workshop/Dept Master | 1d? | 2015-01-30 | 2015-01-30 |  |  |
| 134 | 5.1.3.5 Hospital Master | 1d? | 2015-01-30 | 2015-01-30 |  |  |
| 135 | 5.1.3.6 Adjuster Master | 1d? | 2015-01-30 | 2015-01-30 |  |  |
| 136 | 5.1.3.7 Nature Of Loss | 1d? | 2015-01-30 | 2015-01-30 |  |  |
| 137 | 5.1.3.8 Type of Loss | 1d? | 2015-01-30 | 2015-01-30 |  |  |
| 138 | 5.1.3.9 Main Class Business | 1d? | 2015-01-30 | 2015-01-30 |  |  |
| 139 | 5.1.3.10 Sub Class | 1d? | 2015-01-30 | 2015-01-30 |  |  |
| 140 | 5.1.3.11 Claims Expense Master | 1d? | 2015-01-30 | 2015-01-30 |  |  |
| 141 | 5.1.3.12 Claims Close Reason Master | 1d? | 2015-01-30 | 2015-01-30 |  |  |
| 142 | 5.1.3.13 Currency Master | 1d? | 2015-01-30 | 2015-01-30 |  |  |
| 143 | 5.1.3.14 Exchange Rate Master | 1d? | 2015-01-30 | 2015-01-30 |  |  |
| 144 | 5.1.3.15 Vehicle Class | 1d? | 2015-01-30 | 2015-01-30 |  |  |
| 145 | 5.1.3.16 Vehicle Make | 1d? | 2015-01-30 | 2015-01-30 |  |  |
| 146 | 5.1.3.17 Vehicle Model | 1d? | 2015-01-30 | 2015-01-30 |  |  |
| 147 | 5.1.3.18 Insurance Policy | 1d? | 2015-01-30 | 2015-01-30 |  |  |
| 148 | 5.1.3.19 GST Setting | 1d? | 2015-01-30 | 2015-01-30 |  |  |
| 149 | 5.1.3.20 Organization | 1d? | 2015-01-30 | 2015-01-30 |  |  |
| 150 | 5.1.3.21 Claim Officer Duty | 1d? | 2015-01-30 | 2015-01-30 |  |  |
| 151 | 5.1.3.22 LOU Rate | 1d? | 2015-01-30 | 2015-01-30 |  |  |
| 152 | 5.1.3.23 Interchange | 1d? | 2015-01-30 | 2015-01-30 |  |  |
| 153 | 5.1.3.24 Deductible | 1d? | 2015-01-30 | 2015-01-30 |  |  |
| 161 | 5.2.3 SAP File Upload | 1d? | 2015-01-30 | 2015-01-30 |  |  |
| 166 | **5.3 Claim** | 64d | 2015-01-01 | 2015-03-31 | 47 | India |
| 167 | **5.3.1 Buses** | 64d | 2015-01-01 | 2015-03-31 | 90 | India |
| 168 | 5.3.1.1 Accident | 34d | 2014-12-16 | 2015-01-30 | 91 | India |
| 169 | 5.3.1.2 Claim | 34d | 2014-12-16 | 2015-01-30 | 92 | India |
| 170 | 5.3.1.3 Service Provider | 34d | 2014-12-16 | 2015-01-30 | 93 | India |
| 171 | 5.3.1.4 Notes | 34d | 2014-12-16 | 2015-01-30 | 94 | India |
| 172 | 5.3.1.5 Tasks | 34d | 2014-12-16 | 2015-01-30 | 95 | India |
| 173 | 5.3.1.6 Attachment | 41d | 2014-12-16 | 2015-02-10 | 96 | India |
| 174 | 5.3.1.7 Dairy | 39d | 2014-12-16 | 2015-02-06 | 97 | India |
| 175 | 5.3.1.8 Reassigned Dairy | 23d | 2014-12-16 | 2015-01-15 | 98 | India |
| 176 | 5.3.1.9 Reserve | 49d | 2014-12-16 | 2015-02-20 | 99 | India |
| 177 | 5.3.1.10 Reserve History | 52d | 2014-12-16 | 2015-02-25 | 100 | India |
| 178 | 5.3.1.11 Mandate | 52d | 2014-12-29 | 2015-03-10 | 101 | India |
| 179 | 5.3.1.12 Mandate History | 52d | 2014-12-29 | 2015-03-10 | 102 | India |
| 180 | 5.3.1.13 Payment | 75d | 2014-12-29 | 2015-04-10 | 103 | India |
| 181 | 5.3.1.14 Payment History | 75d | 2014-12-29 | 2015-04-10 | 104 | India |
| 182 | 5.3.1.15 Recovery | 75d | 2014-12-16 | 2015-03-30 | 105 | India |
| 183 | 5.3.1.16 Transaction History | 38d | 2014-12-16 | 2015-02-05 | 106 | India |
| 184 | 5.3.2 Trains | 1d | 2015-01-30 | 2015-01-30 | 64 | India |
| 185 | 5.3.3 Taxis | 240d | 2015-01-30 | 2015-12-31 | 65 | India |
| 186 | 5.3.4 Rental Cars | 240d | 2015-01-30 | 2015-12-31 | 66 | India |
| 187 | 5.3.5 Private Cars | 240d | 2015-01-30 | 2015-12-31 | 67 | India |
| 188 | 5.3.6 User Manual | 240d | 2015-01-30 | 2015-12-31 | 48, 64, 65, 66, 67 | India |
| 189 | 5.3.7 Test Approach/Test Cases | 240d | 2015-01-30 | 2015-12-31 | 48, 64, 65, 66, 67 | India |
| 190 | 5.3.8 QA Testing | 239d | 2015-02-02 | 2015-12-31 | 167, 184, 185, 186, 187 | India |
| 191 | 5.3.9 UAT | 238d | 2015-02-03 | 2015-12-31 | 190 | India |
| 214 | **5.7 Document Generation Module** | 240d | 2015-01-30 | 2015-12-31 | 77 | India |
| 215 | 5.7.1 User Manual | 240d | 2015-01-30 | 2015-12-31 | 77 | India |
| 216 | 5.7.2 Test Approach/Test Cases | 240d | 2015-01-30 | 2015-12-31 | 77 | India |
| 217 | 5.7.3 Document Generation Criteria | 240d | 2015-01-30 | 2015-12-31 | 77 | India |
| 218 | 5.7.4 QA Testing | 239d | 2015-02-02 | 2015-12-31 | 215, 216, 217 | India |
| 219 | 5.7.5 UAT | 238d | 2015-02-03 | 2015-12-31 | 218 | India |
| 227 | **5.9 Unreported Claim Menu** | 240d | 2015-01-30 | 2015-12-31 |  | India |
| 228 | 5.9.1 UI and functionality implementation | 240d | 2015-01-30 | 2015-12-31 |  | India |
| 229 | 5.9.2 User Manual | 240d | 2015-01-30 | 2015-12-31 |  | India |
| 230 | 5.9.3 Test Approach/Test Cases | 240d | 2015-01-30 | 2015-12-31 |  | India |
| 231 | 5.9.4 QA Testing | 239d | 2015-02-02 | 2015-12-31 | 228 | India |
| 232 | 5.9.5 UAT | 1d | 2015-12-31 | 2015-12-31 | 231 | India |

Removed: 10 2.1.1.3 Service Provider Master; 19 2.4 Claim Requirements; 20 2.4.1 Buses; 21 2.4.1.1 Accident; 22 2.4.1.2 Claim; 23 2.4.1.3 Service Provider; 24 2.4.1.4 Notes; 25 2.4.1.5 Tasks; 26 2.4.1.6 Attachment; 27 2.4.1.7 Dairy; 28 2.4.1.8 Reassigned Dairy; 29 2.4.1.9 Reserve; 30 2.4.1.10 Reserve History; 31 2.4.1.11 Mandate; 32 2.4.1.12 Mandate History; 33 2.4.1.13 Payment; 34 2.4.1.14 Payment History; 35 2.4.1.15 Recovery; 36 2.4.2 Trains; 37 2.4.3 Taxis; 38 2.4.4 Rental Cars; 39 2.4.5 Private Cars; 50 2.8 Document Generation Module; 51 2.8.1 Document Generation Criteria; 52 2.9 Unreported Claim; 85 5.1.1 Upload Main Menu; 86 5.1.2 User Admin; 87 5.1.3 Service Provider Master; 113 5.5 Claim; 114 5.5.1 Buses; 115 5.5.1.1 Accident; 116 5.5.1.2 Claim; 117 5.5.1.3 Service Provider; 118 5.5.1.4 Notes; 119 5.5.1.5 Tasks; 120 5.5.1.6 Attachment; 121 5.5.1.7 Dairy; 122 5.5.1.8 Reassigned Dairy; 123 5.5.1.9 Reserve; 124 5.5.1.10 Reserve History; 125 5.5.1.11 Mandate; 126 5.5.1.12 Mandate History; 127 5.5.1.13 Payment; 128 5.5.1.14 Payment History; 129 5.5.1.15 Recovery; 130 5.5.1.16 Transaction History; 131 5.5.2 Trains; 132 5.5.3 Taxis; 133 5.5.4 Rental Cars; 134 5.5.5 Private Cars; 135 5.5.6 User Manual; 136 5.5.7 Test Approach/Test Cases; 137 5.5.8 QA Testing; 138 5.5.9 UAT; 160 5.9 Document Generation Module; 161 5.9.1 User Manual; 162 5.9.2 Test Approach/Test Cases; 163 5.9.4 Document Generation Criteria; 164 5.9.5 QA Testing; 165 5.9.6 UAT; 166 5.10 Unreported Claim Menu; 167 5.10.1 UI and functionality implementation; 168 5.10.2 User Manual; 169 5.10.3 Test Approach/Test Cases; 170 5.10.4 QA Testing; 171 5.10.5 UAT

Changed:

| ID | Task | Start | Finish | Duration | Complete | Predecessors | Other |
| --- | --- | --- | --- | --- | --- | --- | --- |
| 1 | **1 Project Initiation** | 2015-01-29 → 2015-01-01 (-28d) | 2015-12-31 → 2015-01-01 (-364d) | 241d → 1d |  |  |  |
| 2 | 1.1 Project Scope Definition | 2015-01-29 → 2015-01-01 (-28d) | 2015-01-29 → 2015-02-13 (+15d) | 1d → 32d |  |  |  |
| 3 | 1.2 Project Plan Development | 2015-01-29 → 2015-01-01 (-28d) | 2015-01-29 → 2015-02-13 (+15d) | 1d → 32d |  |  |  |
| 4 | 1.3 Project Scope Completed | 2015-01-29 → 2015-01-01 (-28d) | 2015-01-29 → 2015-12-31 (+336d) | 1d → 261d |  |  |  |
| 5 | **2 Requirement Gathering** | 2014-10-02 A |  |  | 0% → 11% |  |  |
| 6 | **2.1 System Admin Requirements** |  |  | 241d → 241d? |  |  |  |
| 8 | 2.1.1.1 Vehicle Listing Upload |  |  |  |  |  | was named 2.1.1.1 Bus Upload Listing; resources none → Singapore |
| 9 | 2.1.1.2 Bus Captain Listing |  |  |  |  |  | was named 2.1.1.2 User Admin |
| 68 | **2.4 Dashboard Requirements** |  |  |  |  |  | was named 2.3 Dashboard Requirements |
| 69 | **2.4.1 Diary Listing Requirements** |  |  |  |  |  | was named 2.3.1 Diary Listing Requirements |
| 70 | 2.4.1.1 Diary Items |  |  |  |  |  | was named 2.3.1.1 Diary Items |
| 71 | 2.4.1.2 Assigned Tasks |  |  |  |  |  | was named 2.3.1.2 Assigned Tasks |
| 72 | 2.4.1.3 Escalation Tasks |  |  |  |  |  | was named 2.3.1.3 Escalation Tasks |
| 83 | **2.9 Security Management System** |  |  |  |  |  | was named 2.6 Security Management System |
| 84 | 2.9.1 Permission Screen UI |  |  |  |  |  | was named 2.6.1 Permission Screen UI |
| 85 | 2.9.2 Permission screen functionality |  |  |  |  |  | was named 2.6.2 Permission screen functionality |
| 90 | **4.1 Bus UI and Functionality** |  |  |  |  | 2.4.1 Buses → 48 |  |
| 91 | 4.1.1 Accident |  |  |  |  | 2.4.1.1 Accident → 49 |  |
| 92 | 4.1.2 Claim |  |  |  |  | 2.4.1.2 Claim → 50 |  |
| 93 | 4.1.3 Service Provider |  |  |  |  | 2.4.1.3 Service Provider → 51 |  |
| 94 | 4.1.4 Notes |  |  |  |  | 2.4.1.4 Notes → 52 |  |
| 95 | 4.1.5 Tasks |  |  |  |  | 2.4.1.5 Tasks → 53 |  |
| 96 | 4.1.6 Attachment |  |  |  |  | 2.4.1.6 Attachment → 54 |  |
| 97 | 4.1.7 Dairy |  |  |  |  | 2.4.1.7 Dairy → 55 |  |
| 98 | 4.1.8 Reassigned Dairy |  |  |  |  | 2.4.1.8 Reassigned Dairy → 56 |  |
| 99 | 4.1.9 Reserve |  |  |  |  | 2.4.1.9 Reserve → 57 |  |
| 100 | 4.1.10 Reserve History |  |  |  |  | 2.4.1.10 Reserve History → 58 |  |
| 101 | 4.1.11 Mandate |  |  |  |  | 2.4.1.11 Mandate → 59 |  |
| 102 | 4.1.12 Mandate History |  |  |  |  | 2.4.1.12 Mandate History → 60 |  |
| 103 | 4.1.13 Payment |  |  |  |  | 2.4.1.13 Payment → 61 |  |
| 104 | 4.1.14 Payment History |  |  |  |  | 2.4.1.14 Payment History → 62 |  |
| 105 | 4.1.15 Recovery |  |  |  |  | 2.4.1.15 Recovery → 63 |  |
| 107 | 4.2 Train UI and Functionality |  |  |  |  | 2.4.2 Trains → 64 |  |
| 108 | 4.3 Taxi UI and Functionality |  |  |  |  | 2.4.3 Taxis → 65 |  |
| 109 | 4.4 Rental Cars UI and Functionality |  |  |  |  | 2.4.4 Rental Cars → 66 |  |
| 110 | 4.5 Private Cars UI and Functionality |  |  |  |  | 2.4.5 Private Cars → 67 |  |
| 162 | 5.2.4 User Manual |  |  |  |  |  | was named 5.2.3 User Manual |
| 163 | 5.2.5 Test Approach/Test Cases |  |  |  |  |  | was named 5.2.4 Test Approach/Test Cases |
| 164 | 5.2.6 QA Testing |  |  |  |  |  | was named 5.2.5 QA Testing |
| 165 | 5.2.7 UAT |  |  |  |  |  | was named 5.2.6 UAT |
| 192 | **5.4 Dashboard** |  |  |  |  |  | was named 5.3 Dashboard |
| 193 | 5.4.1 User Manual |  |  |  |  |  | was named 5.3.1 User Manual |
| 194 | 5.4.2 Functionality of dashboard |  |  |  |  |  | was named 5.3.2 Functionality of dashboard |
| 195 | 5.4.3 Test Approach/Test Cases |  |  |  |  |  | was named 5.3.3 Test Approach/Test Cases |
| 196 | 5.4.4 QA Testing |  |  |  |  |  | was named 5.3.4 QA Testing |
| 197 | 5.4.5 UAT |  |  |  |  |  | was named 5.3.5 UAT |
| 198 | **5.5 Diary Listing** |  |  |  |  |  | was named 5.4 Diary Listing |
| 199 | 5.5.1 Diary Items |  |  |  |  |  | was named 5.4.1 Diary Items |
| 200 | 5.5.2 Assigned Tasks |  |  |  |  |  | was named 5.4.2 Assigned Tasks |
| 201 | 5.5.3 Escalation Tasks |  |  |  |  |  | was named 5.4.3 Escalation Tasks |
| 202 | 5.5.4 User Manual |  |  |  |  |  | was named 5.4.4 User Manual |
| 203 | 5.5.5 Test Approach/Test Cases |  |  |  |  |  | was named 5.4.5 Test Approach/Test Cases |
| 204 | 5.5.6 QA Testing |  |  |  |  |  | was named 5.4.6 QA Testing |
| 205 | 5.5.7 UAT |  |  |  |  |  | was named 5.4.7 UAT |
| 233 | **5.10 Security Management System** |  |  |  |  |  | was named 5.7 Security Management System |

## Version 4 (saved 2015-02-05, file MCAS Plan V5.mpp)

Note of the change: Add MCAS

Last finish 2015-12-31 → 2016-01-27 (+27d). Complete tasks 15 → 33.

Added:

| ID | Task | Duration | Start | Finish | Predecessors | Resources |
| --- | --- | --- | --- | --- | --- | --- |
| 73 | **2.5 Diary Listing** | 240d | 2015-01-30 | 2015-12-31 |  | India |
| 74 | 2.5.1 Diary Items | 240d | 2015-01-30 | 2015-12-31 |  | India |
| 75 | 2.5.2 Assigned Tasks | 240d | 2015-01-30 | 2015-12-31 |  | India |
| 76 | 2.5.3 Escalation Tasks | 240d | 2015-01-30 | 2015-12-31 |  | India |
| 77 | 2.5.4 User Manual | 240d | 2015-01-30 | 2015-12-31 |  | India |
| 78 | 2.5.5 Test Approach/Test Cases | 240d | 2015-01-30 | 2015-12-31 |  | India |
| 79 | 2.5.6 QA Testing | 240d | 2015-01-30 | 2015-12-31 |  | India |
| 80 | 2.5.7 UAT | 239d | 2015-02-02 | 2015-12-31 | 79 | India |
| 98 | **4.1 System Admin Requirements** | 455d | 2014-05-01 A | 2016-01-27 |  | India |
| 99 | **4.1.1 Upload Main Menu** | 191d | 2014-06-01 A | 2015-02-20 | 7 | India |
| 100 | 4.1.1.1 Vehicle Listing Upload | 20d | 2014-06-01 A | 2016-01-27 A | 8 | Singapore |
| 101 | 4.1.1.2 Bus Captain Listing | 10d | 2015-02-09 A | 2015-02-20 A | 9 | Singapore |
| 102 | **4.1.2 User Admin** | 217d | 2014-05-01 A | 2015-02-27 | 10 | India |
| 103 | 4.1.2.1 Entity Details | 15d | 2014-05-01 A | 2014-05-21 A | 11 | India |
| 104 | 4.1.2.2. User Groups | 20d | 2015-02-02 A | 2015-02-27 | 12 | India |
| 105 | 4.1.2.3 User | 20d | 2015-01-30 A | 2015-02-26 | 13 | India |
| 106 | 4.1.2.4 Department Master | 10d | 2015-01-30 A | 2015-02-12 | 14 | India |
| 107 | 4.1.2.5 Password Setup | 5d | 2015-01-30 A | 2015-02-05 | 15 | India |
| 108 | 4.1.2.6 Release Locked Users | 5d | 2015-01-30 A | 2015-02-05 | 16 | India |
| 109 | 4.1.2.7 Country for User Access | 10d | 2015-01-30 A | 2015-02-12 | 17 | India |
| 110 | **4.1.3 Service Provider** | 10d | 2014-11-05 | 2014-11-18 |  | India |
| 111 | 4.1.3.1 Insurer Master | 10d | 2014-11-05 | 2014-11-18 |  | India |
| 112 | 4.1.3.2 Surveyor Master | 10d | 2014-11-05 | 2014-11-18 |  | India |
| 113 | 4.1.3.3 Lawyer Master | 10d | 2014-11-05 | 2014-11-18 |  | India |
| 114 | 4.1.3.4 Workshop/Dept Master | 10d | 2014-11-05 | 2014-11-18 |  | India |
| 115 | 4.1.3.5 Hospital Master | 10d | 2014-11-05 | 2014-11-18 |  | India |
| 116 | 4.1.3.6 Adjuster Master | 10d | 2014-11-05 | 2014-11-18 |  | India |
| 117 | 4.1.4 Nature Of Loss | 15d | 2014-06-04 | 2014-06-24 |  | India |
| 118 | 4.1.5 Type of Loss | 10d | 2014-06-04 | 2014-06-17 |  | India |
| 119 | 4.1.6 Main Class Business | 10d | 2014-06-04 | 2014-06-17 |  | India |
| 120 | 4.1.7 Sub Class | 10d | 2014-06-04 | 2014-06-17 |  | India |
| 121 | 4.1.8 Claims Expense Master | 10d | 2014-06-04 | 2014-06-17 |  | India |
| 122 | 4.1.9 Claims Close Reason Master | 10d | 2014-06-04 | 2014-06-17 |  | India |
| 123 | 4.1.10 Currency Master | 10d | 2014-06-04 | 2014-06-17 |  | India |
| 124 | 4.1.11 Exchange Rate Master | 10d | 2014-06-04 | 2014-06-17 |  | India |
| 125 | 4.1.12 Vehicle Class | 10d | 2014-06-04 | 2014-06-17 |  | India |
| 126 | 4.1.13 Vehicle Make | 10d | 2014-06-04 | 2014-06-17 |  | India |
| 127 | 4.1.14 Vehicle Model | 10d | 2014-06-04 | 2014-06-17 |  | India |
| 128 | 4.1.15 Insurance Policy | 15d | 2014-06-04 | 2014-06-24 |  | India |
| 129 | 4.1.16 GST Setting | 10d | 2014-06-04 | 2014-06-17 |  | India |
| 130 | 4.1.17 Organization | 20d | 2014-12-15 | 2015-01-09 |  | India |
| 131 | 4.1.18 Claim Officer Duty | 10d | 2014-09-03 | 2014-09-16 |  | India |
| 132 | 4.1.19 LOU Rate | 10d | 2014-09-10 | 2014-09-23 |  | India |
| 133 | 4.1.20 Interchange | 10d | 2014-09-10 | 2014-09-23 |  | India |
| 134 | 4.1.21 Deductible | 10d | 2014-12-15 | 2014-12-26 |  | India |
| 135 | **4.2 Upload** | 241d | 2015-01-29 | 2015-12-31 |  | India |
| 136 | 4.2.1 TAC Upload | 20d | 2015-01-29 | 2015-02-25 |  | India |
| 137 | 4.2.2 Claim File Upload | 20d | 2015-01-29 | 2015-02-25 |  | India |
| 138 | 4.2.3 SAP File Upload | 20d | 2015-01-29 | 2015-02-25 |  | India |
| 139 | **4.3 Claim** | 156d | 2014-10-02 A | 2015-05-07 |  | India |
| 140 | **4.3.1 Buses** | 36d | 2014-10-02 A | 2014-11-20 |  | India |
| 141 | 4.3.1.1 Accident | 31d | 2014-10-02 A | 2014-11-13 A |  | India |
| 142 | 4.3.1.2 Claim | 31d | 2014-10-02 A | 2014-11-13 A |  | India |
| 143 | 4.3.1.3 Service Provider | 31d | 2014-10-02 A | 2014-11-13 A |  | India |
| 144 | 4.3.1.4 Notes | 31d | 2014-10-02 A | 2014-11-13 A |  | India |
| 145 | 4.3.1.5 Tasks | 31d | 2014-10-02 A | 2014-11-13 A |  | India |
| 146 | 4.3.1.6 Attachment | 31d | 2014-10-02 A | 2014-11-13 A |  | India |
| 147 | 4.3.1.7 Dairy | 31d | 2014-10-02 A | 2014-11-13 A |  | India |
| 148 | 4.3.1.8 Reassigned Dairy | 31d | 2014-10-02 A | 2014-11-13 A |  | India |
| 149 | 4.3.1.9 Reserve | 31d | 2014-10-02 A | 2014-11-13 A |  | India |
| 150 | 4.3.1.10 Reserve History | 31d | 2014-10-02 A | 2014-11-13 A |  | India |
| 151 | 4.3.1.11 Mandate | 31d | 2014-10-02 A | 2014-11-13 A |  | India |
| 152 | 4.3.1.12 Mandate History | 31d | 2014-10-02 A | 2014-11-13 A |  | India |
| 153 | 4.3.1.13 Payment | 31d | 2014-10-02 A | 2014-11-13 A |  | India |
| 154 | 4.3.1.14 Payment History | 31d | 2014-10-02 A | 2014-11-13 A |  | India |
| 155 | 4.3.1.15 Recovery | 31d | 2014-10-02 A | 2014-11-13 A |  | India |
| 156 | 4.3.1.16 Transaction History | 20d | 2014-10-02 | 2014-10-29 |  | India |
| 157 | 4.3.2 Trains | 31d | 2014-10-02 | 2014-11-13 |  | India |
| 158 | 4.3.3 Taxis | 20d | 2015-03-10 | 2015-04-06 |  | India |
| 159 | 4.3.4 Rental Cars | 20d | 2015-04-10 | 2015-05-07 |  | India |
| 160 | 4.3.5 Private Cars | 20d | 2015-04-10 | 2015-05-07 |  | India |
| 161 | **4.4 Dashboard** | 15d | 2015-02-10 | 2015-03-02 |  | India |
| 162 | 4.4.1 Sections of Dashboard per User Group | 15d | 2015-02-10 | 2015-03-02 |  | India |
| 163 | **4.5 Diary Listing** | 10d | 2015-02-10 | 2015-02-23 |  | India |
| 164 | 4.5.1 Diary Items | 10d | 2015-02-10 | 2015-02-23 |  | India |
| 165 | 4.5.2 Assigned Tasks | 10d | 2015-02-10 | 2015-02-23 |  | India |
| 166 | 4.5.3 Escalation Tasks | 10d | 2015-02-10 | 2015-02-23 |  | India |
| 167 | **4.6 Claim Enquiry** | 70d | 2015-01-29 | 2015-05-06 |  | India |
| 168 | 4.6.1 Claims | 30d | 2015-01-29 | 2015-03-11 |  | India |
| 169 | 4.6.2 Claim Documents Printing | 30d | 2015-03-20 | 2015-04-30 |  | India |
| 170 | 4.6.3 Job Schedule Enquiry | 10d | 2015-01-29 | 2015-02-11 |  | India |
| 171 | **4.7 Document Generation Module** | 60d | 2015-03-25 | 2015-06-16 |  | India |
| 172 | 4.7.1 Document Generation Criteria | 60d | 2015-01-29 | 2015-04-22 |  | India |
| 173 | **4.8 Document Print** | 30d | 2015-03-25 | 2015-05-05 |  | India |
| 174 | 4.7.1 Claim Payment Document Printing | 30d | 2015-03-25 | 2015-05-05 |  | India |
| 175 | 4.9 Unreported Claim | 10d | 2015-02-05 | 2015-02-18 |  | India |
| 176 | **4.10 Security Management System** | 30d | 2014-11-10 | 2014-12-19 |  | India |
| 177 | 4.10.1 Permission Screen UI | 15d | 2014-11-10 | 2014-11-28 |  | India |
| 178 | 4.10.2 Permission screen functionality | 15d | 2014-11-10 | 2014-11-28 |  | India |
| 179 | 4.11 UI and Design signed off by client | 1d? | 2015-12-31 | 2015-12-31 |  | India |
| 299 | 5.11 Functionality Signed off by client | 1d? | 2014-07-01 | 2014-07-01 |  |  |

Removed: 90 4.1 Bus UI and Functionality; 91 4.1.1 Accident; 92 4.1.2 Claim; 93 4.1.3 Service Provider; 94 4.1.4 Notes; 95 4.1.5 Tasks; 96 4.1.6 Attachment; 97 4.1.7 Dairy; 98 4.1.8 Reassigned Dairy; 99 4.1.9 Reserve; 100 4.1.10 Reserve History; 101 4.1.11 Mandate; 102 4.1.12 Mandate History; 103 4.1.13 Payment; 104 4.1.14 Payment History; 105 4.1.15 Recovery; 106 4.1.16 Transaction History; 107 4.2 Train UI and Functionality; 108 4.3 Taxi UI and Functionality; 109 4.4 Rental Cars UI and Functionality; 110 4.5 Private Cars UI and Functionality; 111 4.6 Bus UI and Functionality signed off by client; 112 4.7 Train UI and Functionality signed off by client; 113 4.8 Taxi UI and Functionality signed off by client; 114 4.9 Rental Cars UI and Functionality signed off by client; 115 4.10 Private Cars UI and Functionality signed off by client; 194 5.4.2 Functionality of dashboard; 195 5.4.3 Test Approach/Test Cases; 196 5.4.4 QA Testing; 197 5.4.5 UAT

Changed:

| ID | Task | Start | Finish | Duration | Complete | Total float | Predecessors | Other |
| --- | --- | --- | --- | --- | --- | --- | --- | --- |
| 5 | **2 Requirement Gathering** |  |  |  | 11% → 8% |  |  |  |
| 25 | 2.1.4 Nature Of Loss |  |  |  |  |  |  | was named 2.1.3.7 Nature Of Loss |
| 26 | 2.1.5 Type of Loss |  |  |  |  |  |  | was named 2.1.3.8 Type of Loss |
| 27 | 2.1.6 Main Class Business |  |  |  |  |  |  | was named 2.1.3.9 Main Class Business |
| 28 | 2.1.7 Sub Class |  |  |  |  |  |  | was named 2.1.3.10 Sub Class |
| 29 | 2.1.8 Claims Expense Master |  |  |  |  |  |  | was named 2.1.3.11 Claims Expense Master |
| 30 | 2.1.9 Claims Close Reason Master |  |  |  |  |  |  | was named 2.1.3.12 Claims Close Reason Master |
| 31 | 2.1.10 Currency Master |  |  |  |  |  |  | was named 2.1.3.13 Currency Master |
| 32 | 2.1.11 Exchange Rate Master |  |  |  |  |  |  | was named 2.1.3.14 Exchange Rate Master |
| 33 | 2.1.12 Vehicle Class |  |  |  |  |  |  | was named 2.1.3.15 Vehicle Class |
| 34 | 2.1.13 Vehicle Make |  |  |  |  |  |  | was named 2.1.3.16 Vehicle Make |
| 35 | 2.1.14 Vehicle Model |  |  |  |  |  |  | was named 2.1.3.17 Vehicle Model |
| 36 | 2.1.15 Insurance Policy |  |  |  |  |  |  | was named 2.1.3.18 Insurance Policy |
| 37 | 2.1.16 GST Setting |  |  |  |  |  |  | was named 2.1.3.19 GST Setting |
| 38 | 2.1.17 Organization |  |  |  |  |  |  | was named 2.1.3.20 Organization |
| 39 | 2.1.18 Claim Officer Duty |  |  |  |  |  |  | was named 2.1.3.21 Claim Officer Duty |
| 40 | 2.1.19 LOU Rate |  |  |  |  |  |  | was named 2.1.3.22 LOU Rate |
| 41 | 2.1.20 Interchange |  |  |  |  |  |  | was named 2.1.3.23 Interchange |
| 42 | 2.1.21 Deductible |  |  |  |  |  |  | was named 2.1.3.24 Deductible |
| 81 | **2.6 Claim Enquiry Requirements** |  |  |  |  |  |  | was named 2.5 Claim Enquiry Requirements |
| 82 | 2.6.1 Claims |  |  |  |  |  |  | was named 2.5.1 Claims |
| 83 | 2.6.2 Claim Documents Printing |  |  |  |  |  |  | was named 2.5.2 Claim Documents Printing |
| 84 | 2.6.3 Job Schedule Enquiry |  |  |  |  |  |  | was named 2.5.3 Job Schedule Enquiry |
| 85 | **2.7 Document Generation Module** |  |  |  |  |  |  | was named 2.6 Document Generation Module |
| 86 | 2.7.1 Document Generation Criteria |  |  |  |  |  |  | was named 2.6.1 Document Generation Criteria |
| 87 | **2.8 Document Print** |  |  |  |  |  |  | was named 2.7 Document Print |
| 90 | 2.9 Unreported Claim |  |  |  |  |  |  | was named 2.8 Unreported Claim |
| 91 | **2.10 Security Management System** |  |  |  |  |  |  | was named 2.9 Security Management System |
| 92 | 2.10.1 Permission Screen UI |  |  |  |  |  |  | was named 2.9.1 Permission Screen UI |
| 93 | 2.10.2 Permission screen functionality |  |  |  |  |  |  | was named 2.9.2 Permission screen functionality |
| 94 | 2.11 Requirements signed off by client |  |  |  |  |  |  | was named 2.10 Requirements signed off by client |
| 97 | **4 Design UI and Functionality** | 2014-09-01 → 2014-05-01 A (-123d) | 2015-12-31 → 2016-01-27 (+27d) | 349d → 455d? | 0% → 43% |  |  |  |
| 180 | **5 Iterative Development and Testing** | 2014-12-16 → 2014-05-22 (-208d) |  | 273d → 421d? |  |  |  |  |
| 181 | **5.1 System Admin** | 2015-01-30 → 2014-07-01 (-213d) | 2015-12-31 → 2015-06-01 (-213d) |  |  |  |  |  |
| 182 | **5.1.1 Upload Main Menu** | 2015-01-30 → 2015-02-23 (+24d) | 2015-01-30 → 2015-09-15 (+228d) | 1d? → 147d |  |  | none → 99 | resources none → India |
| 183 | 5.1.1.1 Vehicle Listing Upload | 2015-01-30 → 2015-09-02 (+215d) | 2015-01-30 → 2015-09-15 (+228d) | 1d? → 10d |  |  | none → 100 | resources none → India |
| 184 | 5.1.1.2 Bus Captain Listing | 2015-01-30 → 2015-02-23 (+24d) | 2015-01-30 → 2015-03-06 (+35d) | 1d? → 10d |  |  | none → 101 | resources none → India |
| 185 | **5.1.2 User Admin** | 2015-01-30 → 2014-05-22 (-253d) | 2015-01-30 → 2015-03-13 (+42d) | 1d? → 212d |  |  | none → 102 | resources none → India |
| 186 | 5.1.2.1 Entity Details | 2015-01-30 → 2014-05-22 (-253d) | 2015-01-30 → 2014-06-04 (-240d) | 1d? → 10d |  |  | none → 103 | resources none → India |
| 187 | 5.1.2.2. User Groups | 2015-01-30 → 2015-03-02 (+31d) | 2015-01-30 → 2015-03-13 (+42d) | 1d? → 10d |  |  | none → 104 | resources none → India |
| 188 | 5.1.2.3 User | 2015-01-30 → 2015-02-27 (+28d) | 2015-01-30 → 2015-03-12 (+41d) | 1d? → 10d |  |  | none → 105 | resources none → India |
| 189 | 5.1.2.4 Department Master | 2015-01-30 → 2015-02-13 (+14d) | 2015-01-30 → 2015-02-26 (+27d) | 1d? → 10d |  |  | none → 106 | resources none → India |
| 190 | 5.1.2.5 Password Setup | 2015-01-30 → 2015-02-06 (+7d) | 2015-01-30 → 2015-02-19 (+20d) | 1d? → 10d |  |  | none → 107 | resources none → India |
| 191 | 5.1.2.6 Release Locked Users | 2015-01-30 → 2015-02-06 (+7d) | 2015-01-30 → 2015-02-19 (+20d) | 1d? → 10d |  |  | none → 108 | resources none → India |
| 192 | 5.1.2.7 Country for User Access | 2015-01-30 → 2015-02-13 (+14d) | 2015-01-30 → 2015-02-26 (+27d) | 1d? → 10d |  |  | none → 109 | resources none → India |
| 193 | **5.1.3 Service Provider** | 2015-01-30 → 2014-07-01 (-213d) | 2015-01-30 → 2014-07-01 (-213d) |  |  | 0d → none |  | resources none → India |
| 194 | 5.1.3.1 Insurer Master | 2015-01-30 → 2014-11-19 (-72d) | 2015-01-30 → 2014-11-19 (-72d) |  |  |  | none → 111 | resources none → India |
| 195 | 5.1.3.2 Surveyor Master | 2015-01-30 → 2014-11-19 (-72d) | 2015-01-30 → 2014-11-19 (-72d) |  |  |  | none → 112 | resources none → India |
| 196 | 5.1.3.3 Lawyer Master | 2015-01-30 → 2014-11-19 (-72d) | 2015-01-30 → 2014-11-19 (-72d) |  |  |  | none → 113 | resources none → India |
| 197 | 5.1.3.4 Workshop/Dept Master | 2015-01-30 → 2014-11-19 (-72d) | 2015-01-30 → 2014-11-19 (-72d) |  |  |  | none → 114 | resources none → India |
| 198 | 5.1.3.5 Hospital Master | 2015-01-30 → 2014-11-19 (-72d) | 2015-01-30 → 2014-11-19 (-72d) |  |  |  | none → 115 | resources none → India |
| 199 | 5.1.3.6 Adjuster Master | 2015-01-30 → 2014-11-19 (-72d) | 2015-01-30 → 2014-11-19 (-72d) |  |  |  | none → 116 | resources none → India |
| 200 | 5.1.4 Nature Of Loss | 2015-01-30 → 2014-06-25 (-219d) | 2015-01-30 → 2014-07-08 (-206d) | 1d? → 10d |  |  | none → 117 | was named 5.1.3.7 Nature Of Loss; resources none → India |
| 201 | 5.1.5 Type of Loss | 2015-01-30 → 2014-06-18 (-226d) | 2015-01-30 → 2014-07-01 (-213d) | 1d? → 10d |  |  | none → 118 | was named 5.1.3.8 Type of Loss; resources none → India |
| 202 | 5.1.6 Main Class Business | 2015-01-30 → 2014-06-18 (-226d) | 2015-01-30 → 2014-07-01 (-213d) | 1d? → 10d |  |  | none → 119 | was named 5.1.3.9 Main Class Business; resources none → India |
| 203 | 5.1.7 Sub Class | 2015-01-30 → 2014-06-18 (-226d) | 2015-01-30 → 2014-07-01 (-213d) | 1d? → 10d |  |  | none → 120 | was named 5.1.3.10 Sub Class; resources none → India |
| 204 | 5.1.8 Claims Expense Master | 2015-01-30 → 2014-06-18 (-226d) | 2015-01-30 → 2014-07-01 (-213d) | 1d? → 10d |  |  | none → 121 | was named 5.1.3.11 Claims Expense Master; resources none → India |
| 205 | 5.1.9 Claims Close Reason Master | 2015-01-30 → 2014-06-18 (-226d) | 2015-01-30 → 2014-07-01 (-213d) | 1d? → 10d |  |  | none → 122 | was named 5.1.3.12 Claims Close Reason Master; resources none → India |
| 206 | 5.1.10 Currency Master | 2015-01-30 → 2014-06-18 (-226d) | 2015-01-30 → 2014-07-01 (-213d) | 1d? → 10d |  |  | none → 123 | was named 5.1.3.13 Currency Master; resources none → India |
| 207 | 5.1.11 Exchange Rate Master | 2015-01-30 → 2014-06-18 (-226d) | 2015-01-30 → 2014-07-01 (-213d) | 1d? → 10d |  |  | none → 124 | was named 5.1.3.14 Exchange Rate Master; resources none → India |
| 208 | 5.1.12 Vehicle Class | 2015-01-30 → 2014-06-18 (-226d) | 2015-01-30 → 2014-07-01 (-213d) | 1d? → 10d |  |  | none → 125 | was named 5.1.3.15 Vehicle Class; resources none → India |
| 209 | 5.1.13 Vehicle Make | 2015-01-30 → 2014-06-18 (-226d) | 2015-01-30 → 2014-07-01 (-213d) | 1d? → 10d |  |  | none → 126 | was named 5.1.3.16 Vehicle Make; resources none → India |
| 210 | 5.1.14 Vehicle Model | 2015-01-30 → 2014-06-18 (-226d) | 2015-01-30 → 2014-07-01 (-213d) | 1d? → 10d |  |  | none → 127 | was named 5.1.3.17 Vehicle Model; resources none → India |
| 211 | 5.1.15 Insurance Policy | 2015-01-30 → 2014-06-25 (-219d) | 2015-01-30 → 2014-07-08 (-206d) | 1d? → 10d |  |  | none → 128 | was named 5.1.3.18 Insurance Policy; resources none → India |
| 212 | 5.1.16 GST Setting | 2015-01-30 → 2014-06-18 (-226d) | 2015-01-30 → 2014-07-01 (-213d) | 1d? → 10d |  |  | none → 129 | was named 5.1.3.19 GST Setting; resources none → India |
| 213 | 5.1.17 Organization | 2015-01-30 → 2015-01-12 (-18d) | 2015-01-30 → 2015-01-23 (-7d) | 1d? → 10d |  |  | none → 130 | was named 5.1.3.20 Organization; resources none → India |
| 214 | 5.1.18 Claim Officer Duty | 2015-01-30 → 2014-09-17 (-135d) | 2015-01-30 → 2014-09-30 (-122d) | 1d? → 10d |  |  | none → 131 | was named 5.1.3.21 Claim Officer Duty; resources none → India |
| 215 | 5.1.19 LOU Rate | 2015-01-30 → 2014-09-24 (-128d) | 2015-01-30 → 2014-10-07 (-115d) | 1d? → 10d |  |  | none → 132 | was named 5.1.3.22 LOU Rate; resources none → India |
| 216 | 5.1.20 Interchange | 2015-01-30 → 2014-09-24 (-128d) | 2015-01-30 → 2014-10-07 (-115d) | 1d? → 10d |  |  | none → 133 | was named 5.1.3.23 Interchange; resources none → India |
| 217 | 5.1.21 Deductible | 2015-01-30 → 2014-12-29 (-32d) | 2015-01-30 → 2015-01-09 (-21d) | 1d? → 10d |  |  | none → 134 | was named 5.1.3.24 Deductible; resources none → India |

| ID | Task | Start | Finish | Duration | Total float | Predecessors | Other |
| --- | --- | --- | --- | --- | --- | --- | --- |
| 218 | 5.1.22 User Manual | 2015-01-30 → 2015-02-02 (+3d) | 2015-12-31 → 2015-02-27 (-307d) | 240d → 20d |  |  | was named 5.1.4 User Manual |
| 219 | 5.1.23 Test Approach/Test Cases | 2015-01-30 → 2015-02-02 (+3d) | 2015-12-31 → 2015-02-06 (-328d) | 240d → 5d |  |  | was named 5.1.5 Test Approach/Test Cases |
| 220 | 5.1.24 QA Testing | 2015-02-02 → 2015-02-11 (+9d) | 2015-12-31 → 2015-03-10 (-296d) | 239d → 20d |  |  | was named 5.1.6 QA Testing |
| 221 | 5.1.25 UAT | 2015-02-03 → 2015-03-10 (+35d) | 2015-12-31 → 2015-04-06 (-269d) | 238d → 20d |  |  | was named 5.1.7 UAT |
| 222 | **5.2 Upload** |  | 2015-12-31 → 2015-03-05 (-301d) | 240d → 25d |  | none → 135 |  |
| 223 | 5.2.1 TAC Upload | 2015-01-30 → 2015-02-26 (+27d) | 2015-12-31 → 2015-04-01 (-274d) | 240d → 25d |  | none → 136 |  |
| 224 | 5.2.2 Claim File Upload | 2015-01-30 → 2015-02-26 (+27d) | 2015-12-31 → 2015-04-01 (-274d) | 240d → 25d |  | none → 137 |  |
| 225 | 5.2.3 SAP File Upload | 2015-01-30 → 2015-02-26 (+27d) | 2015-01-30 → 2015-04-01 (+61d) | 1d? → 25d |  | none → 138 | resources none → India |
| 226 | 5.2.4 User Manual | 2015-01-30 → 2015-02-26 (+27d) | 2015-12-31 → 2015-03-04 (-302d) | 240d → 5d |  | none → 138 |  |
| 227 | 5.2.5 Test Approach/Test Cases | 2015-01-30 → 2015-02-26 (+27d) | 2015-12-31 → 2015-03-04 (-302d) | 240d → 5d |  | none → 138 |  |
| 228 | 5.2.6 QA Testing | 2015-02-02 → 2015-02-26 (+24d) | 2015-12-31 → 2015-03-04 (-302d) | 239d → 5d |  | none → 138 |  |
| 229 | 5.2.7 UAT | 2015-02-03 → 2014-11-14 (-81d) | 2015-12-31 → 2014-11-27 (-399d) | 238d → 10d |  |  |  |
| 230 | **5.3 Claim** |  |  |  |  | 47 → none |  |
| 231 | **5.3.1 Buses** |  |  |  |  | 4.1 Bus UI and Functionality → 140 |  |
| 232 | 5.3.1.1 Accident | 2014-12-16 → 2014-11-14 (-32d) | 2015-01-30 → 2014-11-27 (-64d) | 34d → 10d |  | 4.1.1 Accident → 141 |  |
| 233 | 5.3.1.2 Claim | 2014-12-16 → 2014-11-14 (-32d) | 2015-01-30 → 2014-12-01 (-60d) | 34d → 12d |  | 4.1.2 Claim → 142 |  |
| 234 | 5.3.1.3 Service Provider | 2014-12-16 → 2014-11-14 (-32d) | 2015-01-30 → 2014-12-04 (-57d) | 34d → 15d |  | 4.1.3 Service Provider → 143 |  |
| 235 | 5.3.1.4 Notes | 2014-12-16 → 2014-11-14 (-32d) | 2015-01-30 → 2014-11-27 (-64d) | 34d → 10d |  | 4.1.4 Notes → 144 |  |
| 236 | 5.3.1.5 Tasks | 2014-12-16 → 2014-11-14 (-32d) | 2015-01-30 → 2014-12-01 (-60d) | 34d → 12d |  | 4.1.5 Tasks → 145 |  |
| 237 | 5.3.1.6 Attachment | 2014-12-16 → 2014-11-14 (-32d) | 2015-02-10 → 2014-12-01 (-71d) | 41d → 12d |  | 4.1.6 Attachment → 146 |  |
| 238 | 5.3.1.7 Dairy | 2014-12-16 → 2014-11-14 (-32d) | 2015-02-06 → 2014-12-11 (-57d) | 39d → 20d |  | 4.1.7 Dairy → 147 |  |
| 239 | 5.3.1.8 Reassigned Dairy | 2014-12-16 → 2014-11-14 (-32d) | 2015-01-15 → 2014-11-27 (-49d) | 23d → 10d |  | 4.1.8 Reassigned Dairy → 148 |  |
| 240 | 5.3.1.9 Reserve | 2014-12-16 → 2014-11-14 (-32d) | 2015-02-20 → 2014-11-27 (-85d) | 49d → 10d |  | 4.1.9 Reserve → 149 |  |
| 241 | 5.3.1.10 Reserve History | 2014-12-16 → 2014-11-14 (-32d) | 2015-02-25 → 2014-11-20 (-97d) | 52d → 5d |  | 4.1.10 Reserve History → 150 |  |
| 242 | 5.3.1.11 Mandate | 2014-12-29 → 2014-11-14 (-45d) | 2015-03-10 → 2014-11-27 (-103d) | 52d → 10d |  | 4.1.11 Mandate → 151 |  |
| 243 | 5.3.1.12 Mandate History | 2014-12-29 → 2014-11-14 (-45d) | 2015-03-10 → 2014-11-20 (-110d) | 52d → 5d |  | 4.1.12 Mandate History → 152 |  |
| 244 | 5.3.1.13 Payment | 2014-12-29 → 2014-11-14 (-45d) | 2015-04-10 → 2014-11-27 (-134d) | 75d → 10d |  | 4.1.13 Payment → 153 |  |
| 245 | 5.3.1.14 Payment History | 2014-12-29 → 2014-11-14 (-45d) | 2015-04-10 → 2014-11-20 (-141d) | 75d → 5d |  | 4.1.14 Payment History → 154 |  |
| 246 | 5.3.1.15 Recovery | 2014-12-16 → 2014-11-14 (-32d) | 2015-03-30 → 2014-12-11 (-109d) | 75d → 20d |  | 4.1.15 Recovery → 155 |  |
| 247 | 5.3.1.16 Transaction History | 2014-12-16 → 2014-10-30 (-47d) | 2015-02-05 → 2014-12-22 (-45d) |  |  | 4.1.16 Transaction History → 156 |  |
| 248 | 5.3.2 Trains | 2015-01-30 → 2014-11-14 (-77d) | 2015-01-30 → 2015-02-11 (+12d) | 1d → 64d |  | 64 → 157 |  |
| 249 | 5.3.3 Taxis | 2015-01-30 → 2015-04-07 (+67d) | 2015-12-31 → 2015-05-18 (-227d) | 240d → 30d |  | 65 → 158 |  |
| 250 | 5.3.4 Rental Cars | 2015-01-30 → 2015-04-07 (+67d) | 2015-12-31 → 2015-05-11 (-234d) | 240d → 25d |  | 66 → 159 |  |
| 251 | 5.3.5 Private Cars | 2015-01-30 → 2015-04-07 (+67d) | 2015-12-31 → 2015-05-11 (-234d) | 240d → 25d |  | 67 → 160 |  |
| 252 | 5.3.6 User Manual | 2015-01-30 → 2015-05-11 (+101d) | 2015-12-31 → 2015-05-22 (-223d) | 240d → 10d |  |  |  |
| 253 | 5.3.7 Test Approach/Test Cases | 2015-01-30 → 2015-05-22 (+112d) | 2015-12-31 → 2015-05-28 (-217d) | 240d → 5d |  |  |  |
| 254 | 5.3.8 QA Testing | 2015-02-02 → 2015-05-28 (+115d) | 2015-12-31 → 2015-07-01 (-183d) | 239d → 25d |  |  |  |
| 255 | 5.3.9 UAT | 2015-02-03 → 2015-07-01 (+148d) | 2015-12-31 → 2015-07-28 (-156d) | 238d → 20d |  |  |  |
| 256 | **5.4 Dashboard** | 2015-01-30 → 2014-07-01 (-213d) | 2015-12-31 → 2015-06-01 (-213d) |  | 0d → none | 68 → none |  |
| 257 | 5.4.1 Sections of Dashboard per User Group |  |  |  |  |  | was named 5.4.1 User Manual |
| 283 | 5.8.3 User Manual | 2015-12-31 → 2015-12-18 (-13d) |  | 1d → 10d |  |  |  |

## Version 5 (saved 2015-02-06, file MCAS Plan V6.mpp)

Note of the change: Add MCAS

Last finish 2016-01-27 → 2016-01-01 (-26d). Complete tasks 33 → 84.

Added:

| ID | Task | Duration | Start | Finish | Predecessors | Resources |
| --- | --- | --- | --- | --- | --- | --- |
| 175 | 4.8.2 Claim Registration Document Printing | 30d | 2015-03-25 | 2015-05-05 |  | India |
| 276 | 5.7.1 Document Generation Criteria | 15d | 2015-04-23 | 2015-05-13 | 172 |  |

Removed: 277 5.7.3 Document Generation Criteria

Changed:

| ID | Task | Start | Finish | Duration | Complete | Total float | Predecessors | Other |
| --- | --- | --- | --- | --- | --- | --- | --- | --- |
| 1 | **1 Project Initiation** | 2015-01-01 → 2014-01-01 (-365d) | 2015-01-01 → 2015-12-31 (+364d) | 1d → 522d |  |  |  |  |
| 5 | **2 Requirement Gathering** |  |  |  | 8% → 0% | 0d → none |  |  |
| 6 | **2.1 System Admin Requirements** | 2015-01-29 → 2014-10-02 (-119d) |  | 241d? → 326d? |  |  |  |  |
| 18 | **2.1.3 Service Provider** | 2015-01-29 → 2014-10-02 (-119d) | 2015-01-29 → 2014-10-02 (-119d) |  |  |  |  |  |
| 19 | 2.1.3.1 Insurer Master | 2015-01-29 → 2014-10-02 (-119d) | 2015-01-29 → 2014-10-02 (-119d) |  |  |  |  |  |
| 20 | 2.1.3.2 Surveyor Master | 2015-01-29 → 2014-10-02 (-119d) | 2015-01-29 → 2014-10-02 (-119d) |  |  |  |  |  |
| 21 | 2.1.3.3 Lawyer Master | 2015-01-29 → 2014-10-02 (-119d) | 2015-01-29 → 2014-10-02 (-119d) |  |  |  |  |  |
| 22 | 2.1.3.4 Workshop/Dept Master | 2015-01-29 → 2014-10-02 (-119d) | 2015-01-29 → 2014-10-02 (-119d) |  |  |  |  |  |
| 23 | 2.1.3.5 Hospital Master | 2015-01-29 → 2014-10-02 (-119d) | 2015-01-29 → 2014-10-02 (-119d) |  |  |  |  |  |
| 24 | 2.1.3.6 Adjuster Master | 2015-01-29 → 2014-10-02 (-119d) | 2015-01-29 → 2014-10-02 (-119d) |  |  |  |  |  |
| 25 | 2.1.4 Nature Of Loss | 2015-01-29 → 2014-10-02 (-119d) | 2015-01-29 → 2014-10-02 (-119d) |  |  |  |  |  |
| 26 | 2.1.5 Type of Loss | 2015-01-29 → 2014-10-02 (-119d) | 2015-01-29 → 2014-10-02 (-119d) |  |  |  |  |  |
| 27 | 2.1.6 Main Class Business | 2015-01-29 → 2014-10-02 (-119d) | 2015-01-29 → 2014-10-02 (-119d) |  |  |  |  |  |
| 28 | 2.1.7 Sub Class | 2015-01-29 → 2014-10-02 (-119d) | 2015-01-29 → 2014-10-02 (-119d) |  |  |  |  |  |
| 29 | 2.1.8 Claims Expense Master | 2015-01-29 → 2014-10-02 (-119d) | 2015-01-29 → 2014-10-02 (-119d) |  |  |  |  |  |
| 30 | 2.1.9 Claims Close Reason Master | 2015-01-29 → 2014-10-02 (-119d) | 2015-01-29 → 2014-10-02 (-119d) |  |  |  |  |  |
| 31 | 2.1.10 Currency Master | 2015-01-29 → 2014-10-02 (-119d) | 2015-01-29 → 2014-10-02 (-119d) |  |  |  |  |  |
| 32 | 2.1.11 Exchange Rate Master | 2015-01-29 → 2014-10-02 (-119d) | 2015-01-29 → 2014-10-02 (-119d) |  |  |  |  |  |
| 33 | 2.1.12 Vehicle Class | 2015-01-29 → 2014-10-02 (-119d) | 2015-01-29 → 2014-10-02 (-119d) |  |  |  |  |  |
| 34 | 2.1.13 Vehicle Make | 2015-01-29 → 2014-10-02 (-119d) | 2015-01-29 → 2014-10-02 (-119d) |  |  |  |  |  |
| 35 | 2.1.14 Vehicle Model | 2015-01-29 → 2014-10-02 (-119d) | 2015-01-29 → 2014-10-02 (-119d) |  |  |  |  |  |
| 36 | 2.1.15 Insurance Policy | 2015-01-29 → 2014-10-02 (-119d) | 2015-01-29 → 2014-10-02 (-119d) |  |  |  |  |  |
| 37 | 2.1.16 GST Setting | 2015-01-29 → 2014-10-02 (-119d) | 2015-01-29 → 2014-10-02 (-119d) |  |  |  |  |  |
| 38 | 2.1.17 Organization | 2015-01-29 → 2014-10-02 (-119d) | 2015-01-29 → 2014-10-02 (-119d) |  |  |  |  |  |
| 39 | 2.1.18 Claim Officer Duty | 2015-01-29 → 2014-10-02 (-119d) | 2015-01-29 → 2014-10-02 (-119d) |  |  |  |  |  |
| 40 | 2.1.19 LOU Rate | 2015-01-29 → 2014-10-02 (-119d) | 2015-01-29 → 2014-10-02 (-119d) |  |  |  |  |  |
| 41 | 2.1.20 Interchange | 2015-01-29 → 2014-10-02 (-119d) | 2015-01-29 → 2014-10-02 (-119d) |  |  |  |  |  |
| 42 | 2.1.21 Deductible | 2015-01-29 → 2014-10-02 (-119d) | 2015-01-29 → 2014-10-02 (-119d) |  |  |  |  |  |
| 47 | **2.3 Claim Requirements** | 2014-10-02 A → 2014-10-02 |  |  | 39% → 0% |  |  |  |
| 48 | **2.3.1 Buses** | 2014-10-02 A → 2014-10-02 |  |  | 99% → 0% |  |  |  |
| 49 | 2.3.1.1 Accident | 2014-10-02 A → 2014-10-02 | 2014-11-13 A → 2014-11-13 |  | 100% → 0% |  |  |  |
| 50 | 2.3.1.2 Claim | 2014-10-02 A → 2014-10-02 | 2014-11-13 A → 2014-11-13 |  | 100% → 0% |  |  |  |
| 51 | 2.3.1.3 Service Provider | 2014-10-02 A → 2014-10-02 | 2014-11-13 A → 2014-11-13 |  | 100% → 0% |  |  |  |
| 52 | 2.3.1.4 Notes | 2014-10-02 A → 2014-10-02 | 2014-11-13 A → 2014-11-13 |  | 100% → 0% |  |  |  |
| 53 | 2.3.1.5 Tasks | 2014-10-02 A → 2014-10-02 | 2014-11-13 A → 2014-11-13 |  | 100% → 0% |  |  |  |
| 54 | 2.3.1.6 Attachment | 2014-10-02 A → 2014-10-02 | 2014-11-13 A → 2014-11-13 |  | 100% → 0% |  |  |  |
| 55 | 2.3.1.7 Dairy | 2014-10-02 A → 2014-10-02 | 2014-11-13 A → 2014-11-13 |  | 100% → 0% |  |  |  |
| 56 | 2.3.1.8 Reassigned Dairy | 2014-10-02 A → 2014-10-02 | 2014-11-13 A → 2014-11-13 |  | 100% → 0% |  |  |  |
| 57 | 2.3.1.9 Reserve | 2014-10-02 A → 2014-10-02 | 2014-11-13 A → 2014-11-13 |  | 100% → 0% |  |  |  |
| 58 | 2.3.1.10 Reserve History | 2014-10-02 A → 2014-10-02 | 2014-11-13 A → 2014-11-13 |  | 100% → 0% |  |  |  |
| 59 | 2.3.1.11 Mandate | 2014-10-02 A → 2014-10-02 | 2014-11-13 A → 2014-11-13 |  | 100% → 0% |  |  |  |
| 60 | 2.3.1.12 Mandate History | 2014-10-02 A → 2014-10-02 | 2014-11-13 A → 2014-11-13 |  | 100% → 0% |  |  |  |
| 61 | 2.3.1.13 Payment | 2014-10-02 A → 2014-10-02 | 2014-11-13 A → 2014-11-13 |  | 100% → 0% |  |  |  |
| 62 | 2.3.1.14 Payment History | 2014-10-02 A → 2014-10-02 | 2014-11-13 A → 2014-11-13 |  | 100% → 0% |  |  |  |
| 63 | 2.3.1.15 Recovery | 2014-10-02 A → 2014-10-02 | 2014-11-13 A → 2014-11-13 |  | 100% → 0% |  |  |  |
| 95 | **3 Requirements Finalized in TFS** | 2015-01-30 → 2014-03-03 A (-333d) | 2015-01-30 → 2015-09-01 (+214d) | 1d → 392d | 0% → 50% |  |  |  |
| 96 | 3.1 Document Upload in TFS | 2015-01-30 → 2014-03-03 A (-333d) | 2015-01-30 → 2015-09-01 (+214d) | 1d → 392d | 0% → 50% |  |  |  |
| 97 | **4 Design UI and Functionality** |  | 2016-01-27 → 2015-07-03 (-208d) | 455d? → 307d? | 43% → 69% | 0d → 130d |  |  |
| 98 | **4.1 System Admin Requirements** |  | 2016-01-27 → 2015-07-03 (-208d) | 455d → 307d | 19% → 80% | 0d → none |  |  |
| 99 | **4.1.1 Upload Main Menu** | 2014-06-01 A → 2014-06-01 | 2015-02-20 → 2015-02-23 (+3d) | 191d → 192d | 99% → 0% |  | 7 → none |  |
| 100 | 4.1.1.1 Vehicle Listing Upload | 2014-06-01 A → 2014-05-05 (-27d) | 2016-01-27 A → 2014-07-02 (-574d) |  | 100% → 0% | none → 392d | 8 → none | constraint none → finish no earlier than 2014-07-02 |
| 101 | 4.1.1.2 Bus Captain Listing | 2015-02-09 A → 2015-02-10 (+1d) | 2015-02-20 A → 2015-02-23 (+3d) |  | 100% → 0% |  |  |  |
| 110 | **4.1.3 Service Provider** | 2014-11-05 A | 2014-11-18 A |  | 0% → 100% | 0d → none |  |  |
| 111 | 4.1.3.1 Insurer Master | 2014-11-05 A | 2014-11-18 A |  | 0% → 100% |  |  |  |
| 112 | 4.1.3.2 Surveyor Master | 2014-11-05 A | 2014-11-18 A |  | 0% → 100% |  |  |  |
| 113 | 4.1.3.3 Lawyer Master | 2014-11-05 A | 2014-11-18 A |  | 0% → 100% |  |  |  |
| 114 | 4.1.3.4 Workshop/Dept Master | 2014-11-05 A | 2014-11-18 A |  | 0% → 100% |  |  |  |
| 115 | 4.1.3.5 Hospital Master | 2014-11-05 A | 2014-11-18 A |  | 0% → 100% |  |  |  |
| 116 | 4.1.3.6 Adjuster Master | 2014-11-05 A | 2014-11-18 A |  | 0% → 100% |  |  |  |
| 117 | 4.1.4 Nature Of Loss | 2014-06-04 A | 2014-06-24 A |  | 0% → 100% |  |  |  |
| 118 | 4.1.5 Type of Loss | 2014-06-04 A | 2014-06-17 A |  | 0% → 100% |  |  |  |
| 119 | 4.1.6 Main Class Business | 2014-06-04 A | 2014-06-17 A |  | 0% → 100% |  |  |  |
| 120 | 4.1.7 Sub Class | 2014-06-04 A | 2014-06-17 A |  | 0% → 100% |  |  |  |
| 121 | 4.1.8 Claims Expense Master | 2014-06-04 A | 2014-06-17 A |  | 0% → 100% |  |  |  |
| 122 | 4.1.9 Claims Close Reason Master | 2014-06-04 A | 2014-06-17 A |  | 0% → 100% |  |  |  |
| 123 | 4.1.10 Currency Master | 2014-06-04 A | 2014-06-17 A |  | 0% → 100% |  |  |  |
| 124 | 4.1.11 Exchange Rate Master | 2014-06-04 A | 2014-06-17 A |  | 0% → 100% |  |  |  |
| 125 | 4.1.12 Vehicle Class | 2014-06-04 A | 2014-06-17 A |  | 0% → 100% |  |  |  |
| 126 | 4.1.13 Vehicle Make | 2014-06-04 A | 2014-06-17 A |  | 0% → 100% |  |  |  |
| 127 | 4.1.14 Vehicle Model | 2014-06-04 A | 2014-06-17 A |  | 0% → 100% |  |  |  |

| ID | Task | Start | Finish | Duration | Complete | Total float | Other |
| --- | --- | --- | --- | --- | --- | --- | --- |
| 128 | 4.1.15 Insurance Policy | 2014-06-04 A | 2014-06-24 A |  | 0% → 100% |  |  |
| 129 | 4.1.16 GST Setting | 2014-06-04 A | 2014-06-17 A |  | 0% → 100% |  |  |
| 130 | 4.1.17 Organization | 2014-12-15 A | 2015-01-09 A |  | 0% → 100% |  |  |
| 131 | 4.1.18 Claim Officer Duty | 2014-09-03 A | 2014-09-16 A |  | 0% → 100% |  |  |
| 132 | 4.1.19 LOU Rate | 2014-09-10 A | 2014-09-23 A |  | 0% → 100% |  |  |
| 133 | 4.1.20 Interchange | 2014-09-10 A | 2014-09-23 A |  | 0% → 100% |  |  |
| 134 | 4.1.21 Deductible | 2014-12-15 A | 2014-12-26 A |  | 0% → 100% |  |  |
| 135 | **4.2 Upload** | 2015-01-29 A | 2015-12-31 → 2015-02-25 (-309d) | 241d → 20d | 0% → 27% |  |  |
| 136 | 4.2.1 TAC Upload | 2015-01-29 A |  |  | 0% → 40% |  |  |
| 137 | 4.2.2 Claim File Upload | 2015-01-29 A |  |  | 0% → 40% |  |  |
| 139 | **4.3 Claim** |  |  |  | 81% → 89% |  |  |
| 140 | **4.3.1 Buses** |  | 2014-11-20 → 2015-02-12 (+84d) | 36d → 96d | 96% → 99% |  |  |
| 149 | 4.3.1.9 Reserve | 2014-10-02 A → 2014-11-21 A (+50d) | 2014-11-13 A → 2015-01-02 A (+50d) |  |  |  |  |
| 150 | 4.3.1.10 Reserve History | 2014-10-02 A → 2014-11-21 A (+50d) | 2014-11-13 A → 2015-01-02 A (+50d) |  |  |  |  |
| 151 | 4.3.1.11 Mandate | 2014-10-02 A → 2014-11-21 A (+50d) | 2014-11-13 A → 2015-01-02 A (+50d) |  |  |  |  |
| 152 | 4.3.1.12 Mandate History | 2014-10-02 A → 2014-11-21 A (+50d) | 2014-11-13 A → 2015-01-02 A (+50d) |  |  |  |  |
| 153 | 4.3.1.13 Payment | 2014-10-02 A → 2014-12-05 A (+64d) | 2014-11-13 A → 2015-01-16 A (+64d) |  |  |  |  |
| 154 | 4.3.1.14 Payment History | 2014-10-02 A → 2014-12-05 A (+64d) | 2014-11-13 A → 2015-01-16 A (+64d) |  |  |  |  |
| 155 | 4.3.1.15 Recovery | 2014-10-02 A → 2015-01-01 A (+91d) | 2014-11-13 A → 2015-02-12 (+91d) |  | 100% → 85% |  |  |
| 156 | 4.3.1.16 Transaction History | 2014-10-02 A | 2014-10-29 A |  | 0% → 100% |  |  |
| 157 | 4.3.2 Trains | 2014-10-02 A | 2014-11-13 A |  | 0% → 100% |  |  |
| 161 | **4.4 Dashboard** | 2015-02-10 A |  |  | 0% → 10% |  |  |
| 162 | 4.4.1 Sections of Dashboard as per User Group | 2015-02-10 A |  |  | 0% → 10% |  | was named 4.4.1 Sections of Dashboard per User Group |
| 167 | **4.6 Claim Enquiry** | 2015-01-29 A |  |  | 0% → 39% |  |  |
| 168 | 4.6.1 Claims | 2015-01-29 A |  |  | 0% → 40% |  |  |
| 169 | 4.6.2 Claim Documents Printing | 2015-03-20 A |  |  | 0% → 25% |  |  |
| 170 | 4.6.3 Job Schedule Enquiry | 2015-01-29 A |  |  | 0% → 80% |  |  |
| 174 | 4.8.1 Claim Payment Document Printing |  |  |  |  |  | was named 4.7.1 Claim Payment Document Printing |
| 177 | **4.10 Security Management System** | 2014-11-10 A |  |  | 0% → 85% |  |  |
| 178 | 4.10.1 Permission Screen UI | 2014-11-10 A |  |  | 0% → 85% |  |  |
| 179 | 4.10.2 Permission screen functionality | 2014-11-10 A |  |  | 0% → 85% |  |  |
| 180 | 4.11 UI and Design signed off by client | 2015-12-31 → 2014-05-01 (-609d) | 2015-12-31 → 2014-05-01 (-609d) |  |  |  |  |
| 181 | **5 Iterative Development and Testing** | 2014-05-22 A | 2015-12-31 → 2015-07-28 (-156d) | 421d? → 309d? | 0% → 39% |  |  |
| 182 | **5.1 System Admin** |  |  |  | 0% → 88% |  |  |
| 183 | **5.1.1 Upload Main Menu** | 2015-02-23 → 2014-09-09 A (-167d) | 2015-09-15 → 2015-03-06 (-193d) | 147d → 129d | 0% → 75% |  |  |
| 184 | 5.1.1.1 Vehicle Listing Upload | 2015-09-02 → 2014-09-09 A (-358d) | 2015-09-15 → 2014-09-22 A (-358d) |  | 0% → 100% |  |  |
| 185 | 5.1.1.2 Bus Captain Listing | 2015-02-23 A |  |  | 0% → 50% |  |  |
| 186 | **5.1.2 User Admin** | 2014-05-22 A | 2015-03-13 A |  | 0% → 100% | 0d → none |  |
| 187 | 5.1.2.1 Entity Details | 2014-05-22 A | 2014-06-04 A |  | 0% → 100% |  |  |
| 188 | 5.1.2.2. User Groups | 2015-03-02 A | 2015-03-13 A |  | 0% → 100% |  |  |
| 189 | 5.1.2.3 User | 2015-02-27 A | 2015-03-12 A |  | 0% → 100% |  |  |
| 190 | 5.1.2.4 Department Master | 2015-02-13 A | 2015-02-26 A |  | 0% → 100% |  |  |
| 191 | 5.1.2.5 Password Setup | 2015-02-06 A | 2015-02-19 A |  | 0% → 100% |  |  |
| 192 | 5.1.2.6 Release Locked Users | 2015-02-06 A | 2015-02-19 A |  | 0% → 100% |  |  |
| 193 | 5.1.2.7 Country for User Access | 2015-02-13 A | 2015-02-26 A |  | 0% → 100% |  |  |
| 194 | **5.1.3 Service Provider** | 2014-07-01 → 2014-11-19 A (+141d) | 2014-07-01 → 2014-12-09 (+161d) | 1d? → 15d | 0% → 99% |  |  |
| 195 | 5.1.3.1 Insurer Master | 2014-11-19 A | 2014-11-19 → 2014-12-02 A (+13d) | 1d? → 10d | 0% → 100% |  |  |
| 196 | 5.1.3.2 Surveyor Master | 2014-11-19 A | 2014-11-19 → 2014-12-02 A (+13d) | 1d? → 10d | 0% → 100% |  |  |
| 197 | 5.1.3.3 Lawyer Master | 2014-11-19 A | 2014-11-19 → 2014-12-02 A (+13d) | 1d? → 10d | 0% → 100% |  |  |
| 198 | 5.1.3.4 Workshop/Dept Master | 2014-11-19 → 2014-11-25 A (+6d) | 2014-11-19 → 2014-12-08 A (+19d) | 1d? → 10d | 0% → 100% |  |  |
| 199 | 5.1.3.5 Hospital Master | 2014-11-19 → 2014-11-26 A (+7d) | 2014-11-19 → 2014-12-09 A (+20d) | 1d? → 10d | 0% → 100% |  |  |
| 200 | 5.1.3.6 Adjuster Master | 2014-11-19 → 2014-11-25 A (+6d) | 2014-11-19 → 2014-12-08 A (+19d) | 1d? → 10d | 0% → 100% |  |  |
| 201 | 5.1.4 Nature Of Loss | 2014-06-25 A | 2014-07-08 A |  | 0% → 100% |  |  |
| 202 | 5.1.5 Type of Loss | 2014-06-18 A | 2014-07-01 A |  | 0% → 100% |  |  |
| 203 | 5.1.6 Main Class Business | 2014-06-18 A | 2014-07-01 A |  | 0% → 100% |  |  |
| 204 | 5.1.7 Sub Class | 2014-06-18 A | 2014-07-01 A |  | 0% → 100% |  |  |
| 205 | 5.1.8 Claims Expense Master | 2014-06-18 A | 2014-07-01 A |  | 0% → 100% |  |  |
| 206 | 5.1.9 Claims Close Reason Master | 2014-06-18 A | 2014-07-01 A |  | 0% → 100% |  |  |
| 207 | 5.1.10 Currency Master | 2014-06-18 A | 2014-07-01 A |  | 0% → 100% |  |  |
| 208 | 5.1.11 Exchange Rate Master | 2014-06-18 A | 2014-07-01 A |  | 0% → 100% |  |  |
| 209 | 5.1.12 Vehicle Class | 2014-06-18 A | 2014-07-01 A |  | 0% → 100% |  |  |
| 210 | 5.1.13 Vehicle Make | 2014-06-18 A | 2014-07-01 A |  | 0% → 100% |  |  |
| 211 | 5.1.14 Vehicle Model | 2014-06-18 A | 2014-07-01 A |  | 0% → 100% |  |  |
| 212 | 5.1.15 Insurance Policy | 2014-06-25 A | 2014-07-08 A |  | 0% → 100% |  |  |
| 213 | 5.1.16 GST Setting | 2014-06-18 A | 2014-07-01 A |  | 0% → 100% |  |  |
| 214 | 5.1.17 Organization | 2015-01-12 A | 2015-01-23 A |  | 0% → 100% |  |  |
| 215 | 5.1.18 Claim Officer Duty | 2014-09-17 A | 2014-09-30 A |  | 0% → 100% |  |  |
| 216 | 5.1.19 LOU Rate | 2014-09-24 A | 2014-10-07 A |  | 0% → 100% |  |  |
| 217 | 5.1.20 Interchange | 2014-09-24 A | 2014-10-07 A |  | 0% → 100% |  |  |
| 218 | 5.1.21 Deductible | 2014-12-29 A | 2015-01-09 A |  | 0% → 100% |  |  |

| ID | Task | Start | Finish | Duration | Complete | Predecessors | Other |
| --- | --- | --- | --- | --- | --- | --- | --- |
| 219 | 5.1.22 User Manual | 2015-02-02 A |  |  | 0% → 10% |  |  |
| 220 | 5.1.23 Test Approach/Test Cases | 2015-02-02 A | 2015-02-06 A |  | 0% → 100% |  |  |
| 221 | 5.1.24 QA Testing | 2015-02-11 A |  |  | 0% → 80% |  |  |
| 222 | 5.1.25 UAT |  |  |  |  |  | resources India → Singapore |
| 223 | **5.2 Upload** |  | 2015-03-05 → 2015-04-21 (+47d) | 25d → 58d |  |  |  |
| 227 | 5.2.4 User Manual | 2015-02-26 → 2015-04-02 (+35d) | 2015-03-04 → 2015-04-08 (+35d) |  |  | 138 → 226 |  |
| 228 | 5.2.5 Test Approach/Test Cases | 2015-02-26 → 2015-04-01 (+34d) | 2015-03-04 → 2015-04-02 (+29d) | 5d → 2d |  |  |  |
| 229 | 5.2.6 QA Testing | 2015-02-26 → 2015-04-01 (+34d) | 2015-03-04 → 2015-04-07 (+34d) |  |  |  |  |
| 230 | 5.2.7 UAT | 2014-11-14 → 2015-04-08 (+145d) | 2014-11-27 → 2015-04-21 (+145d) |  |  |  |  |
| 231 | **5.3 Claim** | 2015-01-01 → 2014-11-14 (-48d) | 2015-03-31 → 2015-07-28 (+119d) | 64d → 183d | 0% → 45% |  |  |
| 232 | **5.3.1 Buses** | 2015-01-01 → 2014-11-14 (-48d) | 2015-03-31 → 2015-05-11 (+41d) | 64d → 127d | 0% → 85% |  |  |
| 233 | 5.3.1.1 Accident | 2014-11-14 A | 2014-11-27 A |  | 0% → 100% |  |  |
| 234 | 5.3.1.2 Claim | 2014-11-14 A | 2014-12-01 A |  | 0% → 100% |  |  |
| 235 | 5.3.1.3 Service Provider | 2014-11-14 A | 2014-12-04 A |  | 0% → 100% |  |  |
| 236 | 5.3.1.4 Notes | 2014-11-14 A | 2014-11-27 A |  | 0% → 100% |  |  |
| 237 | 5.3.1.5 Tasks | 2014-11-14 A | 2014-12-01 A |  | 0% → 100% |  |  |
| 238 | 5.3.1.6 Attachment | 2014-11-14 A | 2014-12-01 A |  | 0% → 100% |  |  |
| 239 | 5.3.1.7 Dairy | 2014-11-14 A | 2014-12-11 A |  | 0% → 100% |  |  |
| 240 | 5.3.1.8 Reassigned Dairy | 2014-11-14 A | 2014-11-27 A |  | 0% → 100% |  |  |
| 241 | 5.3.1.9 Reserve | 2014-11-14 → 2015-01-02 A (+49d) | 2014-11-27 → 2015-01-15 (+49d) |  | 0% → 85% |  |  |
| 242 | 5.3.1.10 Reserve History | 2014-11-14 → 2015-01-16 A (+63d) | 2014-11-20 → 2015-01-22 (+63d) |  | 0% → 85% | 150 → 241 |  |
| 243 | 5.3.1.11 Mandate | 2014-11-14 → 2015-01-02 A (+49d) | 2014-11-27 → 2015-01-15 (+49d) |  | 0% → 85% |  |  |
| 244 | 5.3.1.12 Mandate History | 2014-11-14 → 2015-01-16 A (+63d) | 2014-11-20 → 2015-01-22 (+63d) |  | 0% → 30% | 152 → 243 |  |
| 245 | 5.3.1.13 Payment | 2014-11-14 → 2015-01-19 A (+66d) | 2014-11-27 → 2015-01-30 (+64d) | 10d → 10d? | 0% → 40% |  |  |
| 246 | 5.3.1.14 Payment History | 2014-11-14 → 2015-02-16 (+94d) | 2014-11-20 → 2015-02-20 (+92d) |  |  |  |  |
| 247 | 5.3.1.15 Recovery | 2014-11-14 → 2015-02-10 A (+88d) | 2014-12-11 → 2015-03-09 (+88d) |  | 0% → 40% |  |  |
| 248 | 5.3.1.16 Transaction History | 2014-10-30 A | 2014-12-22 A |  | 0% → 100% |  |  |
| 249 | 5.3.2 Trains | 2014-11-14 A | 2015-02-11 → 2015-05-11 (+89d) | 64d → 127d | 0% → 35% |  |  |
| 251 | 5.3.4 Rental Cars | 2015-04-07 → 2015-05-08 (+31d) | 2015-05-11 → 2015-06-18 (+38d) | 25d → 30d |  |  |  |
| 252 | 5.3.5 Private Cars | 2015-04-07 → 2015-05-08 (+31d) | 2015-05-11 → 2015-06-18 (+38d) | 25d → 30d |  |  |  |
| 253 | 5.3.6 User Manual |  |  |  |  | 48, 64, 65, 66, 67 → none |  |
| 254 | 5.3.7 Test Approach/Test Cases |  |  |  |  | 48, 64, 65, 66, 67 → none |  |
| 255 | 5.3.8 QA Testing |  |  |  |  | 232, 249, 250, 251, 252 → none |  |
| 256 | 5.3.9 UAT |  |  |  |  | 255 → none |  |
| 257 | **5.4 Dashboard** | 2014-07-01 → 2015-02-12 (+226d) | 2015-06-01 → 2015-02-25 (-96d) | 240d → 10d |  |  |  |
| 258 | 5.4.1 Sections of Dashboard per User Group | 2015-02-04 → 2015-02-12 (+8d) | 2015-02-06 → 2015-02-25 (+19d) | 3d → 10d |  | 68 → none |  |
| 259 | **5.5 Diary Listing** | 2015-01-30 → 2014-07-01 (-213d) | 2015-12-31 → 2015-06-01 (-213d) |  |  | 69 → none |  |
| 260 | 5.5.1 Diary Items | 2015-01-30 → 2015-02-24 (+25d) | 2015-12-31 → 2015-03-09 (-297d) | 240d → 10d |  | 70 → 164 |  |
| 261 | 5.5.2 Assigned Tasks | 2015-01-30 → 2015-02-24 (+25d) | 2015-12-31 → 2015-03-09 (-297d) | 240d → 10d |  | 71 → 165 |  |
| 262 | 5.5.3 Escalation Tasks | 2015-01-30 → 2015-02-24 (+25d) | 2015-12-31 → 2015-03-18 (-288d) | 240d → 17d |  | 72 → 166 |  |
| 263 | 5.5.4 User Manual | 2015-01-30 → 2015-03-19 (+48d) | 2015-12-31 → 2015-03-25 (-281d) | 240d → 5d |  | 70, 71, 72 → 262 |  |
| 264 | 5.5.5 Test Approach/Test Cases | 2015-01-30 → 2015-03-26 (+55d) | 2015-12-31 → 2015-04-01 (-274d) | 240d → 5d |  | 70, 71, 72 → 263 |  |
| 265 | 5.5.6 QA Testing | 2015-01-30 → 2015-03-26 (+55d) | 2015-12-31 → 2015-04-01 (-274d) | 240d → 5d |  | 70, 71, 72 → 263 |  |
| 266 | 5.5.7 UAT | 2015-02-02 → 2014-07-01 (-216d) | 2015-12-31 → 2015-05-29 (-216d) |  |  | 265 → none |  |
| 267 | **5.6 Claim Enquiry** | 2015-01-30 → 2015-03-11 (+40d) | 2015-12-31 → 2015-06-11 (-203d) | 240d → 67d |  | 81 → 167 |  |
| 268 | 5.6.1 Claims | 2015-01-30 → 2015-03-12 (+41d) | 2015-12-31 → 2015-04-01 (-274d) | 240d → 15d |  | 82 → 168 |  |
| 269 | 5.6.2 Claim Documents Printing | 2015-01-30 → 2015-05-01 (+91d) | 2015-12-31 → 2015-05-14 (-231d) | 240d → 10d |  | 83 → 169 |  |
| 270 | 5.6.3 Job Schedule Enquiry | 2015-01-30 → 2015-05-15 (+105d) | 2015-12-31 → 2015-05-28 (-217d) | 240d → 10d |  | 84 → 269 |  |
| 271 | 5.6.4 User Manual | 2015-01-30 → 2015-05-29 (+119d) | 2015-12-31 → 2015-06-04 (-210d) | 240d → 5d |  | 81 → 270 |  |
| 272 | 5.6.5 Test Approach/Test Cases | 2015-01-30 → 2015-05-29 (+119d) | 2015-12-31 → 2015-06-04 (-210d) | 240d → 5d |  | 82, 83, 84 → 270 |  |
| 273 | 5.6.6 QA Testing | 2015-02-02 → 2015-05-29 (+116d) | 2015-12-31 → 2015-06-04 (-210d) | 239d → 5d |  | 268, 269, 270 → 270 |  |
| 274 | 5.6.7 UAT | 2015-02-03 → 2015-06-05 (+122d) | 2015-12-31 → 2015-06-11 (-203d) | 238d → 5d |  | 273 → 271 |  |
| 275 | **5.7 Document Generation Module** | 2015-01-30 → 2014-07-01 (-213d) | 2015-12-31 → 2014-08-11 (-507d) | 240d → 30d |  | 85 → none |  |
| 277 | 5.7.2 User Manual | 2015-01-30 → 2015-05-14 (+104d) | 2015-12-31 → 2015-05-20 (-225d) | 240d → 5d |  | 85 → 276 | was named 5.7.1 User Manual |
| 278 | 5.7.3 Test Approach/Test Cases | 2015-01-30 → 2015-05-21 (+111d) | 2015-12-31 → 2015-05-27 (-218d) | 240d → 5d |  | 85 → 276 | was named 5.7.2 Test Approach/Test Cases |
| 279 | 5.7.4 QA Testing | 2015-02-02 → 2015-05-21 (+108d) | 2015-12-31 → 2015-05-27 (-218d) | 239d → 5d |  | 277, 278, 5.7.3 Document Generation Criteria → 276 |  |
| 280 | 5.7.5 UAT | 2015-02-03 → 2015-05-25 (+111d) | 2015-12-31 → 2015-05-25 (-220d) | 238d → 0d |  | 279 → 277 |  |
| 281 | **5.8 Document Print** | 2015-01-30 → 2014-07-01 (-213d) | 2015-12-31 → 2015-06-01 (-213d) | 240d → 240d? |  | 87 → none |  |
| 282 | 5.8.1 Claim Payment Document Printing | 2015-01-30 → 2015-02-19 (+20d) | 2015-12-31 → 2015-03-04 (-302d) | 240d → 10d |  | 88 → 176 |  |
| 283 | 5.8.2 Claim Registration Document Printing | 2015-01-30 → 2014-12-22 (-39d) | 2015-12-31 → 2015-01-02 (-363d) | 240d → 10d |  | 89 → 177 |  |
| 284 | 5.8.3 User Manual | 2015-12-18 → 2015-01-05 (-347d) | 2015-12-31 → 2015-01-09 (-356d) | 10d → 5d |  | none → 283 |  |
| 285 | 5.8.4 Test Approach/Test Cases | 2015-01-30 → 2015-01-05 (-25d) | 2015-12-31 → 2015-01-09 (-356d) | 240d → 5d |  | 87 → 283 |  |
| 286 | 5.8.5 QA Testing | 2015-02-02 → 2015-01-05 (-28d) | 2015-12-31 → 2015-01-09 (-356d) | 239d → 5d |  | 282, 283 → 283 |  |
| 287 | 5.8.6 UAT |  | 2015-12-31 → 2015-02-16 (-318d) | 238d → 10d |  |  |  |
| 288 | **5.9 Unreported Claim Menu** |  | 2015-12-31 → 2015-01-30 (-335d) | 240d → 0d? |  |  |  |
| 289 | 5.9.1 UI and functionality implementation | 2015-01-30 → 2015-02-19 (+20d) | 2015-12-31 → 2015-03-04 (-302d) | 240d → 10d |  | none → 176 |  |
| 290 | 5.9.2 User Manual | 2015-01-30 → 2015-03-05 (+34d) | 2015-12-31 → 2015-03-11 (-295d) | 240d → 5d |  | none → 289 |  |
| 291 | 5.9.3 Test Approach/Test Cases | 2015-01-30 → 2015-03-12 (+41d) | 2015-12-31 → 2015-03-18 (-288d) | 240d → 5d |  | none → 290 |  |
| 292 | 5.9.4 QA Testing | 2015-02-02 → 2015-03-19 (+45d) | 2015-12-31 → 2015-03-25 (-281d) | 239d → 5d |  | 289 → 290 |  |
| 293 | 5.9.5 UAT | 2015-12-31 → 2015-03-26 (-280d) | 2015-12-31 → 2015-04-08 (-267d) | 1d → 10d |  |  |  |

| ID | Task | Start | Finish | Duration | Complete | Predecessors | Other |
| --- | --- | --- | --- | --- | --- | --- | --- |
| 294 | **5.10 Security Management System** | 2015-01-30 → 2014-07-01 (-213d) | 2015-12-31 → 2014-07-16 (-533d) | 240d → 12d | 0% → 26% | 91 → none |  |
| 295 | 5.7.1 Permission Screen UI and Functionality | 2015-12-31 → 2014-12-01 (-395d) | 2015-12-31 → 2014-12-12 (-384d) | 1d? → 10d |  | none → 178 |  |
| 296 | 5.7.2 User Manual | 2015-12-31 → 2015-02-09 (-325d) | 2015-12-31 → 2015-02-13 (-321d) | 1d → 5d |  | none → 295 |  |
| 297 | 5.7.3 Test Approach/Test Cases | 2015-01-30 → 2015-02-02 A (+3d) | 2015-12-31 → 2015-02-06 A (-328d) | 240d → 5d | 0% → 100% | 91 → none |  |
| 298 | 5.7.4 QA Testing | 2015-12-31 → 2015-02-02 A (-332d) | 2015-12-31 → 2015-02-09 (-325d) | 1d → 5d | 0% → 80% |  |  |
| 299 | 5.7.5 UAT | 2015-02-03 → 2015-02-10 (+7d) | 2015-12-31 → 2015-02-23 (-311d) | 238d → 10d |  | 298 → 297 |  |
| 300 | 5.11 Functionality Signed off by client |  |  |  |  |  | resources none → CDGI |
| 301 | **6 QA Test Scripts** | 2015-01-29 → 2015-07-01 (+153d) | 2015-12-31 → 2015-08-11 (-142d) | 241d → 30d |  |  |  |
| 302 | 6.1 Testing Approach Development/Confirmation | 2015-12-31 → 2015-07-01 (-183d) | 2015-12-31 → 2015-07-01 (-183d) |  |  |  |  |
| 303 | 6.2 Test Condition Development | 2015-12-31 → 2015-07-01 (-183d) | 2015-12-31 → 2015-07-01 (-183d) |  |  |  |  |
| 304 | 6.3 Test Script Development | 2015-12-31 → 2015-07-01 (-183d) | 2015-12-31 → 2015-07-01 (-183d) |  |  |  |  |
| 305 | 6.4 Expected Results Development | 2015-12-31 → 2015-07-01 (-183d) | 2015-12-31 → 2015-07-01 (-183d) |  |  |  |  |
| 306 | **7 QA Testing** | 2015-12-31 → 2015-08-03 (-150d) | 2015-12-31 → 2015-09-14 (-108d) | 1d → 31d |  |  |  |
| 307 | 7.1 QA Testing | 2015-12-31 → 2015-08-03 (-150d) | 2015-12-31 → 2015-08-03 (-150d) |  |  |  |  |
| 308 | 7.2 Review results | 2015-12-31 → 2015-08-03 (-150d) | 2015-12-31 → 2015-08-03 (-150d) |  |  |  |  |
| 309 | **8 End-to-end UAT** | 2015-12-31 → 2015-10-01 (-91d) | 2015-12-31 → 2015-11-11 (-50d) | 1d → 30d |  |  |  |
| 310 | 8.1 Access to UAT Environment | 2015-12-31 → 2015-10-01 (-91d) | 2015-12-31 → 2015-10-01 (-91d) |  |  |  |  |
| 311 | 8.2 Product Testing | 2015-12-31 → 2015-10-01 (-91d) | 2015-12-31 → 2015-10-01 (-91d) |  |  |  |  |
| 312 | **9 Client UAT** | 2015-12-31 → 2015-11-12 (-49d) | 2015-12-31 → 2015-12-23 (-8d) | 1d → 30d |  |  |  |
| 313 | 9.1 Access to UAT Environment | 2015-12-31 → 2015-11-12 (-49d) | 2015-12-31 → 2015-11-12 (-49d) |  |  |  |  |
| 314 | 9.2 Product Testing | 2015-12-31 → 2015-11-12 (-49d) | 2015-12-31 → 2015-11-12 (-49d) |  |  |  |  |
| 315 | **10 Deployment** | 2015-12-31 → 2015-12-01 (-30d) | 2015-12-31 → 2016-01-01 (+1d) | 1d → 24d |  |  |  |

## Version 6 (saved 2015-02-09, file MCAS Plan V7.mpp)

Note of the change: Add MCAS

Last finish 2016-01-01 → 2015-12-31 (-1d). Complete tasks 84 → 130.

Added:

| ID | Task | Duration | Start | Finish |
| --- | --- | --- | --- | --- |
| 1 | **MCAS Project** | 472d | 2014-01-01 A | 2015-10-22 |

Removed: 77 2.5.4 User Manual; 78 2.5.5 Test Approach/Test Cases; 79 2.5.6 QA Testing; 80 2.5.7 UAT; 300 5.11 Functionality Signed off by client

Changed:

| ID | Task | Start | Finish | Duration | Complete | Total float | Other |
| --- | --- | --- | --- | --- | --- | --- | --- |
| 2 | **1 Project Initiation** | 2014-01-01 A | 2015-12-31 → 2015-01-01 (-364d) | 522d → 262d | 0% → 75% |  |  |
| 3 | 1.1 Project Scope Definition | 2015-01-01 → 2014-01-01 A (-365d) | 2015-02-13 → 2015-01-01 (-43d) | 32d → 262d | 0% → 75% |  |  |
| 4 | 1.2 Project Plan Development | 2015-01-01 → 2014-01-01 A (-365d) | 2015-02-13 → 2015-01-01 (-43d) | 32d → 262d | 0% → 75% |  |  |
| 5 | 1.3 Project Scope Completed | 2015-01-01 → 2014-01-01 A (-365d) | 2015-12-31 → 2015-01-01 (-364d) | 261d → 262d | 0% → 75% |  |  |
| 6 | **2 Requirement Gathering** | 2014-10-02 A → 2015-01-01 A (+91d) | 2015-12-31 → 2015-02-27 (-307d) | 326d? → 42d | 0% → 83% |  |  |
| 7 | **2.1 System Admin Requirements** | 2014-10-02 → 2015-01-01 A (+91d) | 2015-12-31 → 2015-02-13 (-321d) | 326d? → 32d | 0% → 91% | 0d → none |  |
| 8 | **2.1.1 Upload Main Menu** | 2015-01-29 → 2015-01-01 A (-28d) | 2015-12-31 → 2015-02-09 (-325d) | 241d → 28d | 0% → 75% |  |  |
| 9 | 2.1.1.1 Vehicle Listing Upload | 2015-12-31 → 2015-01-01 A (-364d) | 2015-12-31 → 2015-02-09 (-325d) | 1d? → 28d | 0% → 50% |  |  |
| 10 | 2.1.1.2 Bus Captain Listing | 2015-01-29 → 2015-01-01 A (-28d) | 2015-12-31 → 2015-02-09 A (-325d) | 241d → 28d | 0% → 100% |  |  |
| 11 | **2.1.2 User Admin** | 2015-01-29 → 2015-01-01 A (-28d) | 2015-01-29 → 2015-01-30 (+1d) | 1d? → 22d | 0% → 96% | 0d → none |  |
| 12 | 2.1.2.1 Entity Details | 2015-01-29 → 2015-01-01 A (-28d) | 2015-01-29 → 2015-01-30 A (+1d) | 1d → 22d | 0% → 100% |  |  |
| 13 | 2.1.2.2. User Groups | 2015-01-29 → 2015-01-01 A (-28d) | 2015-01-29 → 2015-01-30 A (+1d) | 1d? → 22d | 0% → 100% |  | resources none → Singapore |
| 14 | 2.1.2.3 User | 2015-01-29 → 2015-01-01 A (-28d) | 2015-01-29 → 2015-01-30 A (+1d) | 1d? → 22d | 0% → 100% |  | resources none → Singapore |
| 15 | 2.1.2.4 Department Master | 2015-01-29 → 2015-01-01 A (-28d) | 2015-01-29 → 2015-01-30 A (+1d) | 1d? → 22d | 0% → 100% |  | resources none → Singapore |
| 16 | 2.1.2.5 Password Setup | 2015-01-29 → 2015-01-01 A (-28d) | 2015-01-29 → 2015-01-30 A (+1d) | 1d? → 22d | 0% → 100% |  | resources none → Singapore |
| 17 | 2.1.2.6 Release Locked Users | 2015-01-29 → 2015-01-01 A (-28d) | 2015-01-29 → 2015-01-30 A (+1d) | 1d? → 22d | 0% → 100% |  | resources none → Singapore |
| 18 | 2.1.2.7 Country for User Access | 2015-01-29 → 2015-01-01 A (-28d) | 2015-01-29 → 2015-01-30 (+1d) | 1d? → 22d | 0% → 75% |  | resources none → Singapore |
| 19 | **2.1.3 Service Provider** | 2014-10-02 → 2015-01-01 A (+91d) | 2014-10-02 → 2015-01-30 A (+120d) | 1d? → 22d | 0% → 100% | 0d → none | resources none → Singapore |
| 20 | 2.1.3.1 Insurer Master | 2014-10-02 → 2015-01-01 A (+91d) | 2014-10-02 → 2015-01-30 A (+120d) | 1d? → 22d | 0% → 100% |  | resources none → Singapore |
| 21 | 2.1.3.2 Surveyor Master | 2014-10-02 → 2015-01-01 A (+91d) | 2014-10-02 → 2015-01-30 A (+120d) | 1d? → 22d | 0% → 100% |  | resources none → Singapore |
| 22 | 2.1.3.3 Lawyer Master | 2014-10-02 → 2015-01-01 A (+91d) | 2014-10-02 → 2015-01-30 A (+120d) | 1d? → 22d | 0% → 100% |  | resources none → Singapore |
| 23 | 2.1.3.4 Workshop/Dept Master | 2014-10-02 → 2015-01-01 A (+91d) | 2014-10-02 → 2015-01-30 A (+120d) | 1d? → 22d | 0% → 100% |  | resources none → Singapore |
| 24 | 2.1.3.5 Hospital Master | 2014-10-02 → 2015-01-01 A (+91d) | 2014-10-02 → 2015-01-30 A (+120d) | 1d? → 22d | 0% → 100% |  | resources none → Singapore |
| 25 | 2.1.3.6 Adjuster Master | 2014-10-02 → 2015-01-01 A (+91d) | 2014-10-02 → 2015-01-30 A (+120d) | 1d? → 22d | 0% → 100% |  | resources none → Singapore |
| 26 | 2.1.4 Nature Of Loss | 2014-10-02 → 2015-01-01 A (+91d) | 2014-10-02 → 2015-01-30 A (+120d) | 1d? → 22d | 0% → 100% |  | resources none → Singapore |
| 27 | 2.1.5 Type of Loss | 2014-10-02 → 2015-01-01 A (+91d) | 2014-10-02 → 2015-01-30 A (+120d) | 1d? → 22d | 0% → 100% |  | resources none → Singapore |
| 28 | 2.1.6 Main Class Business | 2014-10-02 → 2015-01-01 A (+91d) | 2014-10-02 → 2015-01-30 A (+120d) | 1d? → 22d | 0% → 100% |  | resources none → Singapore |
| 29 | 2.1.7 Sub Class | 2014-10-02 → 2015-01-01 A (+91d) | 2014-10-02 → 2015-01-30 A (+120d) | 1d? → 22d | 0% → 100% |  | resources none → Singapore |
| 30 | 2.1.8 Claims Expense Master | 2014-10-02 → 2015-01-01 A (+91d) | 2014-10-02 → 2015-01-30 A (+120d) | 1d? → 22d | 0% → 100% |  | resources none → Singapore |
| 31 | 2.1.9 Claims Close Reason Master | 2014-10-02 → 2015-01-01 A (+91d) | 2014-10-02 → 2015-01-30 A (+120d) | 1d? → 22d | 0% → 100% |  | resources none → Singapore |
| 32 | 2.1.10 Currency Master | 2014-10-02 → 2015-01-01 A (+91d) | 2014-10-02 → 2015-01-30 A (+120d) | 1d? → 22d | 0% → 100% |  | resources none → Singapore |
| 33 | 2.1.11 Exchange Rate Master | 2014-10-02 → 2015-01-01 A (+91d) | 2014-10-02 → 2015-01-30 A (+120d) | 1d? → 22d | 0% → 100% |  | resources none → Singapore |
| 34 | 2.1.12 Vehicle Class | 2014-10-02 → 2015-01-01 A (+91d) | 2014-10-02 → 2015-01-30 (+120d) | 1d? → 22d | 0% → 75% |  | resources none → Singapore |
| 35 | 2.1.13 Vehicle Make | 2014-10-02 → 2015-01-01 A (+91d) | 2014-10-02 → 2015-01-30 (+120d) | 1d? → 22d? | 0% → 75% |  | resources none → Singapore |
| 36 | 2.1.14 Vehicle Model | 2014-10-02 → 2015-01-01 A (+91d) | 2014-10-02 → 2015-01-30 (+120d) | 1d? → 22d? | 0% → 75% |  | resources none → Singapore |
| 37 | 2.1.15 Insurance Policy | 2014-10-02 → 2015-01-01 A (+91d) | 2014-10-02 → 2015-01-30 A (+120d) | 1d? → 22d | 0% → 100% |  | resources none → Singapore |
| 38 | 2.1.16 GST Setting | 2014-10-02 → 2015-01-01 A (+91d) | 2014-10-02 → 2015-01-30 A (+120d) | 1d? → 22d | 0% → 100% |  | resources none → Singapore |
| 39 | 2.1.17 Organization | 2014-10-02 → 2015-01-01 A (+91d) | 2014-10-02 → 2015-01-30 A (+120d) | 1d? → 22d | 0% → 100% |  | resources none → Singapore |
| 40 | 2.1.18 Claim Officer Duty | 2014-10-02 → 2015-01-01 A (+91d) | 2014-10-02 → 2015-01-30 A (+120d) | 1d? → 22d | 0% → 100% |  | resources none → Singapore |
| 41 | 2.1.19 LOU Rate | 2014-10-02 → 2015-01-01 A (+91d) | 2014-10-02 → 2015-01-30 A (+120d) | 1d? → 22d | 0% → 100% |  | resources none → Singapore |
| 42 | 2.1.20 Interchange | 2014-10-02 → 2015-01-01 A (+91d) | 2014-10-02 → 2015-01-30 (+120d) | 1d? → 22d | 0% → 75% |  | resources none → Singapore |
| 43 | 2.1.21 Deductible | 2014-10-02 → 2015-01-01 A (+91d) | 2014-10-02 → 2015-02-13 (+134d) | 1d? → 32d | 0% → 25% |  | resources none → Singapore |
| 44 | **2.2 Upload Requirements** | 2015-01-29 A | 2015-12-31 → 2015-02-20 (-314d) | 241d → 17d | 0% → 50% |  |  |
| 45 | 2.2.1 TAC Upload | 2015-01-29 A | 2015-12-31 → 2015-02-20 (-314d) | 241d → 17d | 0% → 50% |  |  |
| 46 | 2.2.2 Claim File Upload | 2015-01-29 A | 2015-12-31 → 2015-02-20 (-314d) | 241d → 17d | 0% → 50% |  |  |
| 47 | 2.2.3 SAP File Upload | 2015-01-29 A | 2015-01-29 → 2015-02-20 (+22d) | 1d? → 17d? | 0% → 50% |  | resources none → Singapore |
| 48 | **2.3 Claim Requirements** | 2014-10-02 → 2015-01-01 A (+91d) | 2015-12-31 → 2015-01-30 (-335d) | 326d → 22d | 0% → 78% | 0d → none |  |
| 49 | **2.3.1 Buses** | 2014-10-02 → 2015-01-01 A (+91d) | 2014-11-20 → 2015-01-30 (+71d) | 36d → 22d | 0% → 98% |  |  |
| 50 | 2.3.1.1 Accident | 2014-10-02 → 2015-01-01 A (+91d) | 2014-11-13 → 2015-01-30 A (+78d) | 31d → 22d | 0% → 100% |  |  |
| 51 | 2.3.1.2 Claim | 2014-10-02 → 2015-01-01 A (+91d) | 2014-11-13 → 2015-01-30 A (+78d) | 31d → 22d | 0% → 100% |  |  |
| 52 | 2.3.1.3 Service Provider | 2014-10-02 → 2015-01-01 A (+91d) | 2014-11-13 → 2015-01-30 A (+78d) | 31d → 22d | 0% → 100% |  |  |
| 53 | 2.3.1.4 Notes | 2014-10-02 → 2015-01-01 A (+91d) | 2014-11-13 → 2015-01-30 A (+78d) | 31d → 22d | 0% → 100% |  |  |
| 54 | 2.3.1.5 Tasks | 2014-10-02 → 2015-01-01 A (+91d) | 2014-11-13 → 2015-01-30 A (+78d) | 31d → 22d | 0% → 100% |  |  |
| 55 | 2.3.1.6 Attachment | 2014-10-02 → 2015-01-01 A (+91d) | 2014-11-13 → 2015-01-30 A (+78d) | 31d → 22d | 0% → 100% |  |  |
| 56 | 2.3.1.7 Dairy | 2014-10-02 → 2015-01-01 A (+91d) | 2014-11-13 → 2015-01-30 A (+78d) | 31d → 22d | 0% → 100% |  |  |
| 57 | 2.3.1.8 Reassigned Dairy | 2014-10-02 → 2015-01-01 A (+91d) | 2014-11-13 → 2015-01-30 A (+78d) | 31d → 22d | 0% → 100% |  |  |
| 58 | 2.3.1.9 Reserve | 2014-10-02 → 2015-01-01 A (+91d) | 2014-11-13 → 2015-01-30 A (+78d) | 31d → 22d | 0% → 100% |  |  |
| 59 | 2.3.1.10 Reserve History | 2014-10-02 → 2015-01-01 A (+91d) | 2014-11-13 → 2015-01-30 A (+78d) | 31d → 22d | 0% → 100% |  |  |
| 60 | 2.3.1.11 Mandate | 2014-10-02 → 2015-01-01 A (+91d) | 2014-11-13 → 2015-01-30 A (+78d) | 31d → 22d | 0% → 100% |  |  |
| 61 | 2.3.1.12 Mandate History | 2014-10-02 → 2015-01-01 A (+91d) | 2014-11-13 → 2015-01-30 A (+78d) | 31d → 22d | 0% → 100% |  |  |
| 62 | 2.3.1.13 Payment | 2014-10-02 → 2015-01-01 A (+91d) | 2014-11-13 → 2015-01-30 A (+78d) | 31d → 22d | 0% → 100% |  |  |
| 63 | 2.3.1.14 Payment History | 2014-10-02 → 2015-01-01 A (+91d) | 2014-11-13 → 2015-01-30 A (+78d) | 31d → 22d | 0% → 100% |  |  |
| 64 | 2.3.1.15 Recovery | 2014-10-02 → 2015-01-01 A (+91d) | 2014-11-13 → 2015-02-13 (+92d) | 31d → 32d | 0% → 75% |  |  |
| 65 | 2.3.2 Trains | 2015-01-29 → 2015-02-16 (+18d) | 2015-01-29 → 2015-03-17 (+47d) | 1d → 22d |  |  |  |
| 66 | 2.3.3 Taxis | 2015-01-29 → 2015-03-17 (+47d) | 2015-12-31 → 2015-04-15 (-260d) | 241d → 22d |  |  |  |
| 67 | 2.3.4 Rental Cars | 2015-01-29 → 2015-04-15 (+76d) | 2015-12-31 → 2015-05-14 (-231d) | 241d → 22d |  |  |  |
| 68 | 2.3.5 Private Cars | 2015-01-29 → 2015-05-14 (+105d) | 2015-12-31 → 2015-06-12 (-202d) | 241d → 22d |  |  |  |
| 69 | **2.4 Dashboard Requirements** | 2015-01-29 → 2015-01-01 A (-28d) | 2015-12-31 → 2015-02-06 (-328d) | 241d → 27d | 0% → 100% |  |  |
| 70 | **2.4.1 Diary Listing Requirements** | 2015-01-29 → 2015-01-01 A (-28d) | 2015-12-31 → 2015-02-06 (-328d) | 241d? → 27d | 0% → 100% |  |  |
| 71 | 2.4.1.1 Diary Items | 2015-01-29 A | 2015-12-31 A |  | 0% → 100% |  |  |

| ID | Task | Start | Finish | Duration | Complete | Total float | Predecessors | Other |
| --- | --- | --- | --- | --- | --- | --- | --- | --- |
| 72 | 2.4.1.2 Assigned Tasks | 2015-01-29 A | 2015-12-31 A |  | 0% → 100% |  |  |  |
| 73 | 2.4.1.3 Escalation Tasks | 2015-01-29 A | 2015-12-31 A |  | 0% → 100% |  |  |  |
| 74 | **2.5 Diary Listing** | 2015-01-30 → 2015-01-01 A (-29d) | 2015-12-31 → 2015-02-06 A (-328d) | 240d → 27d | 0% → 100% |  |  | resources India → Singapore |
| 75 | 2.5.1 Diary Items | 2015-01-30 → 2015-01-01 A (-29d) | 2015-12-31 → 2015-02-06 A (-328d) | 240d → 27d | 0% → 100% |  |  | resources India → Singapore |
| 76 | 2.5.2 Assigned Tasks | 2015-01-30 → 2015-01-01 A (-29d) | 2015-12-31 → 2015-02-06 A (-328d) | 240d → 27d | 0% → 100% |  |  | resources India → Singapore |
| 77 | 2.5.3 Escalation Tasks | 2015-01-30 → 2015-01-01 A (-29d) | 2015-12-31 → 2015-02-06 A (-328d) | 240d → 27d | 0% → 100% |  |  | resources India → Singapore |
| 78 | **2.6 Claim Enquiry Requirements** | 2015-01-29 A | 2015-12-31 → 2015-03-06 (-300d) | 241d → 27d | 0% → 25% |  |  |  |
| 79 | 2.6.1 Claims | 2015-01-29 A | 2015-12-31 → 2015-03-06 (-300d) | 241d → 27d | 0% → 25% |  |  |  |
| 80 | 2.6.2 Claim Documents Printing | 2015-01-29 A | 2015-12-31 → 2015-03-06 (-300d) | 241d → 27d | 0% → 25% |  |  |  |
| 81 | 2.6.3 Job Schedule Enquiry | 2015-01-29 A | 2015-12-31 → 2015-03-06 (-300d) | 241d → 27d | 0% → 25% |  |  |  |
| 82 | **2.7 Document Generation Module** | 2015-01-29 A | 2015-12-31 → 2015-03-06 (-300d) | 241d → 27d | 0% → 25% |  |  |  |
| 83 | 2.7.1 Document Generation Criteria | 2015-01-29 A | 2015-12-31 → 2015-03-06 (-300d) | 241d → 27d | 0% → 25% |  |  |  |
| 84 | **2.8 Document Print** | 2015-01-29 A | 2015-12-31 → 2015-03-06 (-300d) | 241d → 27d | 0% → 25% |  |  |  |
| 85 | 2.7.1 Claim Payment Document Printing | 2015-01-29 A | 2015-12-31 → 2015-03-06 (-300d) | 241d → 27d | 0% → 25% |  |  |  |
| 86 | 2.7.2 Claim Registration Document Printing | 2015-01-29 A | 2015-12-31 → 2015-03-06 (-300d) | 241d → 27d | 0% → 25% |  |  |  |
| 87 | 2.9 Unreported Claim | 2015-01-29 A | 2015-12-31 → 2015-03-06 (-300d) | 241d → 27d | 0% → 25% |  |  |  |
| 88 | **2.10 Security Management System** |  | 2015-12-31 → 2015-03-06 (-300d) | 241d → 27d |  |  |  |  |
| 91 | 2.11 Requirements signed off by client | 2015-12-31 → 2015-01-01 (-364d) | 2015-12-31 → 2015-03-13 (-293d) | 1d? → 52d |  |  |  |  |
| 94 | **4 Design UI and Functionality** |  |  |  |  | 130d → 129d | 92 → none |  |
| 297 | **6 QA Test Scripts** |  |  |  |  |  | none → 178 |  |
| 298 | 6.1 Testing Approach Development/Confirmation |  | 2015-07-01 → 2015-07-14 (+13d) | 1d → 10d |  |  |  |  |
| 299 | 6.2 Test Condition Development |  | 2015-07-01 → 2015-07-14 (+13d) | 1d → 10d |  |  |  |  |
| 300 | 6.3 Test Script Development |  | 2015-07-01 → 2015-07-14 (+13d) | 1d → 10d |  |  |  |  |
| 301 | 6.4 Expected Results Development |  | 2015-07-01 → 2015-07-14 (+13d) | 1d → 10d |  |  |  |  |
| 302 | **7 QA Testing** | 2015-08-03 → 2015-07-15 (-19d) | 2015-09-14 → 2015-08-25 (-20d) | 31d → 30d |  |  |  |  |
| 303 | 7.1 QA Testing | 2015-08-03 → 2015-07-15 (-19d) | 2015-08-03 → 2015-07-28 (-6d) | 1d → 10d |  |  |  |  |
| 304 | 7.2 Review results | 2015-08-03 → 2015-07-15 (-19d) | 2015-08-03 → 2015-07-28 (-6d) | 1d → 10d |  |  |  |  |
| 305 | **8 End-to-end UAT** | 2015-10-01 → 2015-07-29 (-64d) | 2015-11-11 → 2015-08-11 (-92d) | 30d → 10d |  |  |  |  |
| 306 | 8.1 Access to UAT Environment | 2015-10-01 → 2015-07-29 (-64d) | 2015-10-01 → 2015-08-11 (-51d) | 1d → 10d |  |  |  |  |
| 307 | 8.2 Product Testing | 2015-10-01 → 2015-07-29 (-64d) | 2015-10-01 → 2015-08-11 (-51d) | 1d → 10d |  |  |  |  |
| 308 | **9 Client UAT** | 2015-11-12 → 2015-08-12 (-92d) | 2015-12-23 → 2015-09-01 (-113d) | 30d → 15d |  |  |  |  |
| 309 | 9.1 Access to UAT Environment | 2015-11-12 → 2015-08-12 (-92d) | 2015-11-12 → 2015-09-01 (-72d) | 1d → 15d |  |  |  |  |
| 310 | 9.2 Product Testing | 2015-11-12 → 2015-08-12 (-92d) | 2015-11-12 → 2015-09-01 (-72d) | 1d → 15d |  |  |  |  |
| 311 | **10 Deployment** | 2015-12-01 → 2015-09-02 (-90d) | 2016-01-01 → 2015-10-22 (-71d) | 24d → 37d |  |  |  |  |
| 312 | 10.1 Deployment Approach | 2015-12-31 → 2015-09-02 (-120d) | 2015-12-31 → 2015-09-10 (-112d) | 1d → 7d |  |  |  |  |
| 313 | 10.2 Platform Readiness | 2015-12-31 → 2015-09-10 (-112d) | 2015-12-31 → 2015-09-18 (-104d) | 1d → 7d |  |  |  |  |
| 314 | 10.3 Software Installation | 2015-12-31 → 2015-09-18 (-104d) | 2015-12-31 → 2015-09-28 (-94d) | 1d → 7d |  |  |  |  |
| 315 | 10.4 UAT Sign-off | 2015-12-31 → 2015-09-28 (-94d) | 2015-12-31 → 2015-10-06 (-86d) | 1d → 7d |  |  |  |  |
| 316 | 10.5 Go Live Preparation | 2015-12-31 → 2015-10-06 (-86d) | 2015-12-31 → 2015-10-14 (-78d) | 1d → 7d |  |  |  |  |
| 317 | 10.6 Support Kick Off | 2015-12-31 → 2015-10-14 (-78d) | 2015-12-31 → 2015-10-22 (-70d) | 1d → 7d |  |  |  |  |

## Version 7 (saved 2015-02-10, file MCAS Plan V8 evelyn mail.mpp)

Note of the change: Add MCAS

Last finish 2015-12-31 → 2015-10-22 (-70d). Complete tasks 130 → 117.

Changed:

| ID | Task | Start | Finish | Duration | Complete |
| --- | --- | --- | --- | --- | --- |
| 1 | **MCAS Project** |  |  |  | 65% → 58% |
| 6 | **2 Requirement Gathering** |  |  |  | 83% → 65% |
| 7 | **2.1 System Admin Requirements** |  |  |  | 91% → 71% |
| 8 | **2.1.1 Upload Main Menu** |  | 2015-02-09 → 2015-02-13 (+4d) | 28d → 32d | 75% → 44% |
| 9 | 2.1.1.1 Vehicle Listing Upload |  | 2015-02-09 → 2015-02-13 (+4d) | 28d → 32d | 50% → 44% |
| 10 | 2.1.1.2 Bus Captain Listing |  | 2015-02-09 A → 2015-02-13 (+4d) | 28d → 32d | 100% → 44% |
| 11 | **2.1.2 User Admin** |  | 2015-01-30 → 2015-02-13 (+14d) | 22d → 32d | 96% → 44% |
| 12 | 2.1.2.1 Entity Details |  | 2015-01-30 A → 2015-02-13 (+14d) | 22d → 32d | 100% → 34% |
| 13 | 2.1.2.2. User Groups |  | 2015-01-30 A → 2015-02-13 (+14d) | 22d → 32d | 100% → 69% |
| 14 | 2.1.2.3 User |  | 2015-01-30 A → 2015-02-13 (+14d) | 22d → 32d | 100% → 69% |
| 15 | 2.1.2.4 Department Master |  | 2015-01-30 A → 2015-02-13 (+14d) | 22d → 32d | 100% → 34% |
| 16 | 2.1.2.5 Password Setup |  | 2015-01-30 A → 2015-02-13 (+14d) | 22d → 32d | 100% → 34% |
| 17 | 2.1.2.6 Release Locked Users |  | 2015-01-30 A → 2015-02-13 (+14d) | 22d → 32d | 100% → 34% |
| 18 | 2.1.2.7 Country for User Access |  | 2015-01-30 → 2015-02-13 (+14d) | 22d → 32d | 75% → 34% |
| 34 | 2.1.12 Vehicle Class |  | 2015-01-30 → 2015-02-13 (+14d) | 22d → 32d | 75% → 52% |
| 35 | 2.1.13 Vehicle Make |  | 2015-01-30 → 2015-02-13 (+14d) | 22d? → 32d | 75% → 52% |
| 36 | 2.1.14 Vehicle Model |  | 2015-01-30 → 2015-02-13 (+14d) | 22d? → 32d | 75% → 52% |
| 42 | 2.1.20 Interchange |  | 2015-01-30 → 2015-02-13 (+14d) | 22d → 32d | 75% → 52% |
| 69 | **2.4 Dashboard Requirements** |  | 2015-02-06 → 2015-02-13 (+7d) | 27d → 32d | 100% → 84% |
| 70 | **2.4.1 Diary Listing Requirements** |  | 2015-02-06 → 2015-02-13 (+7d) | 27d → 32d | 100% → 84% |
| 71 | 2.4.1.1 Diary Items | 2015-01-29 A → 2015-01-01 A (-28d) | 2015-12-31 A → 2015-02-13 (-321d) | 241d → 32d | 100% → 84% |
| 72 | 2.4.1.2 Assigned Tasks | 2015-01-29 A → 2015-01-01 A (-28d) | 2015-12-31 A → 2015-02-13 (-321d) | 241d → 32d | 100% → 84% |
| 73 | 2.4.1.3 Escalation Tasks | 2015-01-29 A → 2015-01-01 A (-28d) | 2015-12-31 A → 2015-02-13 (-321d) | 241d → 32d | 100% → 84% |
| 74 | **2.5 Diary Listing** |  | 2015-02-06 A → 2015-02-13 (+7d) | 27d → 32d | 100% → 84% |
| 75 | 2.5.1 Diary Items |  | 2015-02-06 A → 2015-02-13 (+7d) | 27d → 32d | 100% → 84% |
| 76 | 2.5.2 Assigned Tasks |  | 2015-02-06 A → 2015-02-13 (+7d) | 27d → 32d | 100% → 84% |
| 77 | 2.5.3 Escalation Tasks |  | 2015-02-06 A → 2015-02-13 (+7d) | 27d → 32d | 100% → 84% |
| 89 | 2.10.1 Permission Screen UI | 2015-12-31 → 2015-01-29 (-336d) | 2015-12-31 → 2015-03-06 (-300d) | 1d? → 27d |  |
| 90 | 2.10.2 Permission screen functionality | 2015-12-31 → 2015-01-29 (-336d) | 2015-12-31 → 2015-03-06 (-300d) | 1d? → 27d |  |

## Version 8 (saved 2015-02-13, file MCAS Plan V9.mpp)

Note of the change: Add MCAS

Last finish stays 2015-10-22. Complete tasks 117 → 116.

Added:

| ID | Task | Duration | Start | Finish | Predecessors |
| --- | --- | --- | --- | --- | --- |
| 256 | 5.4.2 User Manual | 10d | 2015-02-26 | 2015-03-11 | 255 |
| 257 | 5.4.3 Test Approach/Test Cases | 5d | 2015-02-26 | 2015-03-04 | 255 |
| 258 | 5.4.4 QA Testing | 2d | 2015-02-26 | 2015-02-27 | 255 |
| 259 | 5.4.5 UAT | 5d | 2015-03-12 | 2015-03-18 | 256 |

Changed:

| ID | Task | Start | Finish | Duration | Complete | Predecessors |
| --- | --- | --- | --- | --- | --- | --- |
| 1 | **MCAS Project** |  |  |  | 58% → 59% |  |
| 169 | 4.7.1 Document Generation Criteria | 2015-01-29 → 2015-03-25 (+55d) | 2015-04-22 → 2015-06-16 (+55d) |  |  |  |
| 178 | **5 Iterative Development and Testing** |  | 2015-07-28 → 2015-07-02 (-26d) | 309d? → 291d | 39% → 42% |  |
| 179 | **5.1 System Admin** |  |  |  | 88% → 86% |  |
| 216 | 5.1.22 User Manual |  | 2015-02-27 → 2015-03-13 (+14d) | 20d → 30d | 10% → 7% |  |
| 228 | **5.3 Claim** |  | 2015-07-28 → 2015-07-02 (-26d) | 183d → 165d | 45% → 40% |  |
| 229 | **5.3.1 Buses** |  |  |  | 85% → 68% |  |
| 240 | 5.3.1.11 Mandate |  | 2015-01-15 → 2015-02-12 (+28d) | 10d → 30d | 85% → 28% |  |
| 241 | 5.3.1.12 Mandate History | 2015-01-16 A → 2015-01-16 |  |  | 30% → 0% |  |
| 242 | 5.3.1.13 Payment |  | 2015-01-30 → 2015-02-27 (+28d) | 10d? → 30d | 40% → 13% |  |
| 243 | 5.3.1.14 Payment History | 2015-02-16 → 2015-03-02 (+14d) | 2015-02-20 → 2015-03-06 (+14d) |  |  | 151 → 242 |
| 244 | 5.3.1.15 Recovery |  | 2015-03-09 → 2015-03-23 (+14d) | 20d → 30d | 40% → 27% |  |
| 250 | 5.3.6 User Manual |  | 2015-05-22 → 2015-06-19 (+28d) | 10d → 30d |  |  |
| 253 | 5.3.9 UAT | 2015-07-01 → 2015-06-19 (-12d) | 2015-07-28 → 2015-07-02 (-26d) | 20d → 10d |  | none → 250 |
| 254 | **5.4 Dashboard** |  | 2015-02-25 → 2015-03-31 (+34d) | 10d → 34d |  |  |
| 260 | **5.5 Diary Listing** | 2014-07-01 → 2015-02-24 (+238d) | 2015-06-01 → 2015-04-01 (-61d) | 240d → 27d |  |  |
| 267 | 5.5.7 UAT | 2014-07-01 → 2015-03-25 (+267d) | 2015-05-29 → 2015-03-31 (-59d) | 239d → 5d |  | none → 264 |
| 276 | **5.7 Document Generation Module** | 2014-07-01 → 2015-04-23 (+296d) | 2014-08-11 → 2015-05-29 (+291d) | 30d → 27d |  |  |
| 281 | 5.7.5 UAT |  | 2015-05-25 → 2015-05-29 (+4d) | 0d → 5d |  |  |
| 282 | **5.8 Document Print** | 2014-07-01 → 2015-05-06 (+309d) | 2015-06-01 → 2015-06-09 (+8d) | 240d? → 25d |  |  |
| 283 | 5.8.1 Claim Payment Document Printing | 2015-02-19 → 2015-05-06 (+76d) | 2015-03-04 → 2015-05-19 (+76d) |  |  | 173 → 171 |
| 284 | 5.8.2 Claim Registration Document Printing | 2014-12-22 → 2015-05-06 (+135d) | 2015-01-02 → 2015-05-19 (+137d) |  |  | 174 → 172 |
| 285 | 5.8.3 User Manual | 2015-01-05 → 2015-05-20 (+135d) | 2015-01-09 → 2015-05-26 (+137d) |  |  |  |
| 286 | 5.8.4 Test Approach/Test Cases | 2015-01-05 → 2015-05-20 (+135d) | 2015-01-09 → 2015-05-26 (+137d) |  |  |  |
| 287 | 5.8.5 QA Testing | 2015-01-05 → 2015-05-20 (+135d) | 2015-01-09 → 2015-05-26 (+137d) |  |  |  |
| 288 | 5.8.6 UAT | 2015-02-03 → 2015-05-27 (+113d) | 2015-02-16 → 2015-06-09 (+113d) |  |  | 287 → 285 |
| 289 | **5.9 Unreported Claim Menu** |  | 2015-01-30 → 2015-04-08 (+68d) | 0d? → 49d |  |  |
| 291 | 5.9.2 User Manual |  | 2015-03-11 → 2015-03-18 (+7d) | 5d → 10d |  |  |
| 292 | 5.9.3 Test Approach/Test Cases | 2015-03-12 → 2015-03-19 (+7d) | 2015-03-18 → 2015-03-25 (+7d) |  |  | 291 → 290 |
| 294 | 5.9.5 UAT |  |  |  |  | 293 → 291 |
| 295 | **5.10 Security Management System** | 2014-07-01 → 2014-12-01 (+153d) | 2014-07-16 → 2015-02-23 (+222d) | 12d → 61d | 26% → 0% |  |
| 297 | 5.7.2 User Manual | 2015-02-09 → 2014-12-15 (-56d) | 2015-02-13 → 2015-01-09 (-35d) | 5d → 20d |  |  |
| 298 | 5.7.3 Test Approach/Test Cases | 2015-02-02 A → 2015-02-02 | 2015-02-06 A → 2015-02-06 |  | 100% → 0% | none → 296 |
| 299 | 5.7.4 QA Testing | 2015-02-02 A → 2014-12-15 (-49d) | 2015-02-09 → 2014-12-22 (-49d) |  | 80% → 0% | 298 → 296 |
| 300 | 5.7.5 UAT | 2015-02-10 → 2015-02-09 (-1d) |  | 10d → 11d |  | 298 → 296 |

## Version 9 (saved 2015-02-13, file MCAS Plan V10.mpp)

Note of the change: Add MCAS

Last finish 2015-10-22 → 2016-01-05 (+75d).

Removed: 70 2.4.1 Diary Listing Requirements; 71 2.4.1.1 Diary Items; 72 2.4.1.2 Assigned Tasks; 73 2.4.1.3 Escalation Tasks

Changed:

| ID | Task | Start | Finish | Duration | Complete | Predecessors | Other |
| --- | --- | --- | --- | --- | --- | --- | --- |
| 1 | **MCAS Project** |  | 2015-10-22 → 2016-01-05 (+75d) | 472d → 525d |  |  |  |
| 6 | **2 Requirement Gathering** |  |  |  | 65% → 63% |  |  |
| 69 | 2.4 Dashboard Requirements |  | 2015-02-13 → 2015-02-20 (+7d) | 32d → 37d | 84% → 73% |  |  |
| 70 | **2.5 Diary Listing** |  | 2015-02-13 → 2015-02-20 (+7d) | 32d → 37d | 84% → 73% |  |  |
| 71 | 2.5.1 Diary Items |  | 2015-02-13 → 2015-02-20 (+7d) | 32d → 37d | 84% → 73% |  |  |
| 72 | 2.5.2 Assigned Tasks |  | 2015-02-13 → 2015-02-20 (+7d) | 32d → 37d | 84% → 73% |  |  |
| 73 | 2.5.3 Escalation Tasks |  | 2015-02-13 → 2015-02-20 (+7d) | 32d → 37d | 84% → 73% |  |  |
| 174 | **5 Iterative Development and Testing** |  | 2015-07-02 → 2015-07-22 (+20d) | 291d → 305d | 42% → 41% |  |  |
| 222 | 5.2.6 QA Testing |  |  |  |  |  | resources India → Singapore |
| 223 | 5.2.7 UAT |  |  |  |  |  | resources India → CDGI |
| 224 | **5.3 Claim** |  | 2015-07-02 → 2015-07-22 (+20d) | 165d → 179d |  |  |  |
| 248 | 5.3.8 QA Testing |  |  |  |  |  | resources India → Singapore |
| 249 | 5.3.9 UAT | 2015-06-19 → 2015-07-02 (+13d) | 2015-07-02 → 2015-07-22 (+20d) | 10d → 15d |  | 246 → 248 | resources India → CDGI |
| 252 | 5.4.2 User Manual |  |  |  |  |  | resources none → India |
| 253 | 5.4.3 Test Approach/Test Cases |  |  |  |  |  | resources none → India |
| 254 | 5.4.4 QA Testing |  |  |  |  |  | resources none → Singapore |
| 255 | 5.4.5 UAT |  |  |  |  |  | resources none → CDGI |
| 262 | 5.5.6 QA Testing |  |  |  |  |  | resources India → Singapore |
| 263 | 5.5.7 UAT |  |  |  |  |  | resources India → CDGI |
| 270 | 5.6.6 QA Testing |  |  |  |  |  | resources India → Singapore |
| 271 | 5.6.7 UAT |  |  |  |  |  | resources India → CDGI |
| 273 | 5.7.1 Document Generation Criteria |  |  |  |  |  | resources none → India |
| 276 | 5.7.4 QA Testing |  |  |  |  |  | resources India → Singapore |
| 277 | 5.7.5 UAT |  |  |  |  |  | resources India → CDGI |
| 283 | 5.8.5 QA Testing |  |  |  |  |  | resources India → Singapore |
| 284 | 5.8.6 UAT |  |  |  |  |  | resources India → CDGI |
| 289 | 5.9.4 QA Testing |  |  |  |  |  | resources India → Singapore |
| 290 | 5.9.5 UAT |  |  |  |  |  | resources India → CDGI |
| 295 | 5.7.4 QA Testing |  |  | 5d → 6d |  |  | resources India → Singapore |
| 296 | 5.7.5 UAT |  |  |  |  |  | resources India → CDGI |
| 297 | **6 QA Test Scripts** | 2015-07-01 → 2015-07-23 (+22d) | 2015-08-11 → 2015-08-19 (+8d) | 30d → 20d |  |  |  |
| 298 | 6.1 Testing Approach Development/Confirmation | 2015-07-01 → 2015-07-23 (+22d) | 2015-07-14 → 2015-07-29 (+15d) | 10d → 5d |  |  |  |
| 299 | 6.2 Test Condition Development | 2015-07-01 → 2015-08-06 (+36d) | 2015-07-14 → 2015-08-12 (+29d) | 10d → 5d |  | none → 298 |  |
| 300 | 6.3 Test Script Development | 2015-07-01 → 2015-08-20 (+50d) | 2015-07-14 → 2015-08-26 (+43d) | 10d → 5d |  | none → 299 |  |
| 301 | 6.4 Expected Results Development | 2015-07-01 → 2015-09-03 (+64d) | 2015-07-14 → 2015-09-09 (+57d) | 10d → 5d |  | none → 300 |  |
| 302 | **7 QA Testing** | 2015-07-15 → 2015-09-09 (+56d) | 2015-08-25 → 2015-10-06 (+42d) | 30d → 20d |  | none → 301 |  |
| 303 | 7.1 QA Testing | 2015-07-15 → 2015-09-09 (+56d) | 2015-07-28 → 2015-09-22 (+56d) |  |  | none → 301 |  |
| 304 | 7.2 Review results | 2015-07-15 → 2015-09-23 (+70d) | 2015-07-28 → 2015-10-06 (+70d) |  |  | none → 303 |  |
| 305 | **8 End-to-end UAT** | 2015-07-29 → 2015-10-07 (+70d) | 2015-08-11 → 2015-11-03 (+84d) | 10d → 20d |  | none → 304 |  |
| 306 | 8.1 Access to UAT Environment | 2015-07-29 → 2015-10-07 (+70d) | 2015-08-11 → 2015-10-20 (+70d) |  |  | none → 304 |  |
| 307 | 8.2 Product Testing | 2015-07-29 → 2015-10-21 (+84d) | 2015-08-11 → 2015-11-03 (+84d) |  |  | none → 306 |  |
| 308 | **9 Client UAT** | 2015-08-12 → 2015-10-07 (+56d) | 2015-09-01 → 2015-11-03 (+63d) | 15d → 20d |  |  |  |
| 309 | 9.1 Access to UAT Environment | 2015-08-12 → 2015-10-07 (+56d) | 2015-09-01 → 2015-10-20 (+49d) | 15d → 10d |  |  |  |
| 310 | 9.2 Product Testing | 2015-08-12 → 2015-10-21 (+70d) | 2015-09-01 → 2015-11-03 (+63d) | 15d → 10d |  |  |  |
| 311 | **10 Deployment** | 2015-09-02 → 2015-11-04 (+63d) | 2015-10-22 → 2015-12-09 (+48d) | 37d → 26d |  |  |  |
| 312 | 10.1 Deployment Approach | 2015-09-02 → 2015-11-04 (+63d) | 2015-09-10 → 2015-11-10 (+61d) | 7d → 5d |  |  |  |
| 313 | 10.2 Platform Readiness | 2015-09-10 → 2015-11-11 (+62d) | 2015-09-18 → 2015-11-17 (+60d) | 7d → 5d |  | none → 312 |  |
| 314 | 10.3 Software Installation | 2015-09-18 → 2015-11-18 (+61d) | 2015-09-28 → 2015-11-24 (+57d) | 7d → 5d |  | none → 313 |  |
| 315 | 10.4 UAT Sign-off | 2015-09-28 → 2015-11-25 (+58d) | 2015-10-06 → 2015-11-25 (+50d) | 7d → 1d |  | none → 314 |  |
| 316 | 10.5 Go Live Preparation | 2015-10-06 → 2015-11-26 (+51d) | 2015-10-14 → 2015-12-02 (+49d) | 7d → 5d |  | none → 315 |  |
| 317 | 10.6 Support Kick Off | 2015-10-14 → 2015-12-03 (+50d) | 2015-10-22 → 2015-12-09 (+48d) | 7d → 5d |  | none → 316 |  |

## Version 10 (saved 2015-02-13, file MCAS Plan V11.mpp)

Note of the change: Add MCAS

Last finish stays 2016-01-05. Complete tasks 116 → 118.

Changed:

| ID | Task | Start | Finish | Duration | Complete | Predecessors |
| --- | --- | --- | --- | --- | --- | --- |
| 174 | **5 Iterative Development and Testing** |  |  |  | 41% → 43% |  |
| 264 | **5.6 Claim Enquiry** |  |  |  | 0% → 18% |  |
| 265 | 5.6.1 Claims | 2015-03-12 A |  |  | 0% → 40% |  |
| 267 | 5.6.3 Job Schedule Enquiry | 2015-05-15 A |  |  | 0% → 40% |  |
| 291 | **5.10 Security Management System** | 2014-12-01 A | 2015-02-23 → 2015-03-30 (+35d) | 61d → 86d | 0% → 18% |  |
| 293 | 5.7.2 User Manual | 2014-12-15 → 2015-02-02 (+49d) | 2015-01-09 → 2015-03-13 (+63d) | 20d → 30d |  | 292 → none |
| 294 | 5.7.3 Test Approach/Test Cases | 2015-02-02 A | 2015-02-06 A |  | 0% → 100% |  |
| 295 | 5.7.4 QA Testing | 2014-12-15 A | 2014-12-22 A |  | 0% → 100% |  |
| 296 | 5.7.5 UAT | 2015-02-09 → 2015-03-16 (+35d) | 2015-02-23 → 2015-03-30 (+35d) |  |  | 292 → 293 |

## Version 11 (saved 2015-02-16, file MCAS Plan V12.mpp)

Note of the change: Add MCAS

Last finish 2016-01-05 → 2015-12-09 (-27d).

Changed:

| ID | Task | Start | Finish | Duration | Complete | Total float |
| --- | --- | --- | --- | --- | --- | --- |
| 1 | **MCAS Project** |  | 2016-01-05 → 2015-12-09 (-27d) | 525d → 506d | 59% → 60% |  |
| 6 | **2 Requirement Gathering** |  | 2015-02-27 → 2015-06-19 (+112d) | 42d → 122d | 63% → 65% |  |
| 87 | 2.11 Requirements signed off by client | 2015-01-01 → 2015-06-15 (+165d) | 2015-03-13 → 2015-06-19 (+98d) | 52d → 5d |  |  |
| 90 | **4 Design UI and Functionality** |  | 2015-07-03 → 2015-06-23 (-10d) | 307d? → 299d | 69% → 68% | 132d → none |
| 92 | **4.1.1 Upload Main Menu** | 2014-06-01 A |  |  |  |  |
| 173 | 4.11 UI and Design signed off by client | 2014-05-01 → 2014-06-17 (+47d) | 2014-05-01 → 2014-06-23 (+53d) | 1d? → 5d |  |  |

## Version 12 (saved 2015-02-17, file MCAS Plan V13.mpp)

Note of the change: Add MCAS

Last finish stays 2015-12-09.

Added:

| ID | Task | Duration | Start | Finish | Resources |
| --- | --- | --- | --- | --- | --- |
| 65 | 2.3.1.16 Alert Indicator | 34d | 2015-01-01 A | 2015-02-17 A | Singapore |
| 79 | 2.11 LOG Request | 10d | 2015-02-17 A | 2015-03-02 | Singapore |
| 143 | 4.3.1.17 Alert Indicator | 1d? | 2014-10-02 | 2014-10-02 |  |
| 157 | 4.11 LOG Request | 10d | 2015-02-23 | 2015-03-06 |  |
| 227 | 5.3.1.17 Alert Indicator | 5d? | 2014-11-14 | 2014-11-20 | India |
| 265 | 5.11 LOG Request | 20d | 2014-03-17 | 2014-04-11 | India |

Removed: 65 2.3.2 Trains; 66 2.3.3 Taxis; 67 2.3.4 Rental Cars; 68 2.3.5 Private Cars; 69 2.4 Dashboard Requirements; 70 2.5 Diary Listing; 71 2.5.1 Diary Items; 72 2.5.2 Assigned Tasks; 73 2.5.3 Escalation Tasks; 150 4.3.2 Trains; 151 4.3.3 Taxis; 152 4.3.4 Rental Cars; 153 4.3.5 Private Cars; 154 4.4 Dashboard; 155 4.4.1 Sections of Dashboard as per User Group; 156 4.5 Diary Listing; 157 4.5.1 Diary Items; 158 4.5.2 Assigned Tasks; 159 4.5.3 Escalation Tasks; 242 5.3.2 Trains; 243 5.3.3 Taxis; 244 5.3.4 Rental Cars; 245 5.3.5 Private Cars; 250 5.4 Dashboard; 251 5.4.1 Sections of Dashboard per User Group; 252 5.4.2 User Manual; 253 5.4.3 Test Approach/Test Cases; 254 5.4.4 QA Testing; 255 5.4.5 UAT; 256 5.5 Diary Listing; 257 5.5.1 Diary Items; 258 5.5.2 Assigned Tasks; 259 5.5.3 Escalation Tasks; 260 5.5.4 User Manual; 261 5.5.5 Test Approach/Test Cases; 262 5.5.6 QA Testing; 263 5.5.7 UAT

Changed:

| ID | Task | Start | Finish | Duration | Complete | Total float | Other |
| --- | --- | --- | --- | --- | --- | --- | --- |
| 1 | **MCAS Project Phase 1** |  |  |  | 60% → 66% |  | was named MCAS Project |
| 6 | **2 Requirement Gathering** |  | 2015-06-19 → 2015-03-09 (-102d) | 122d → 48d | 65% → 68% |  |  |
| 48 | **2.3 Claim Requirements** |  |  |  | 78% → 98% |  |  |
| 80 | 2.12 Requirements signed off by client | 2015-06-15 → 2015-03-03 (-104d) | 2015-06-19 → 2015-03-09 (-102d) |  |  |  | was named 2.11 Requirements signed off by client |
| 81 | **3 Requirements Finalized in TFS** |  | 2015-09-01 → 2015-03-10 (-175d) | 392d → 267d | 50% → 73% | 0d → none |  |
| 82 | 3.1 Document Upload in TFS |  | 2015-09-01 → 2015-03-10 (-175d) | 392d → 267d | 50% → 73% |  |  |
| 83 | **4 Design UI and Functionality** |  |  |  | 68% → 75% |  |  |
| 86 | 4.1.1.1 Vehicle Listing Upload | 2014-05-05 → 2015-05-05 (+365d) | 2014-07-02 → 2015-06-01 (+334d) |  |  | 375d → 137d | constraint finish no earlier than 2014-07-02 → start no earlier than 2015-05-05; resources Singapore → India |
| 87 | 4.1.1.2 Bus Captain Listing |  |  |  |  |  | resources Singapore → India |
| 125 | **4.3 Claim** |  | 2015-05-07 → 2015-02-12 (-84d) | 156d → 96d | 89% → 99% |  |  |
| 148 | **4.7 Document Generation Module** | 2015-03-25 → 2015-03-02 (-23d) | 2015-06-16 → 2015-04-10 (-67d) | 60d → 30d |  |  |  |
| 149 | 4.7.1 Document Generation Criteria | 2015-03-25 → 2015-03-02 (-23d) | 2015-06-16 → 2015-04-10 (-67d) | 60d → 30d |  |  |  |
| 158 | 4.12 UI and Design signed off by client |  |  |  |  |  | was named 4.11 UI and Design signed off by client |
| 159 | **5 Iterative Development and Testing** | 2014-05-22 A → 2014-05-22 |  |  | 43% → 50% |  |  |
| 209 | **5.3 Claim** |  |  |  | 40% → 52% |  |  |
| 210 | **5.3.1 Buses** |  | 2015-05-11 → 2015-03-23 (-49d) | 127d → 92d | 68% → 67% |  |  |
| 266 | **6 QA Test Scripts** | 2015-07-23 → 2015-03-30 (-115d) | 2015-08-19 → 2015-04-24 (-117d) |  |  |  |  |
| 267 | 6.1 Testing Approach Development/Confirmation | 2015-07-23 → 2015-03-30 (-115d) | 2015-07-29 → 2015-04-03 (-117d) |  |  |  |  |
| 268 | 6.2 Test Condition Development | 2015-08-06 → 2015-04-06 (-122d) | 2015-08-12 → 2015-04-10 (-124d) |  |  |  |  |
| 269 | 6.3 Test Script Development | 2015-08-20 → 2015-04-13 (-129d) | 2015-08-26 → 2015-04-17 (-131d) |  |  |  |  |
| 270 | 6.4 Expected Results Development | 2015-09-03 → 2015-04-20 (-136d) | 2015-09-09 → 2015-04-24 (-138d) |  |  |  |  |
| 271 | **7 QA Testing** | 2015-09-09 → 2015-04-27 (-135d) | 2015-10-06 → 2015-05-22 (-137d) |  |  |  |  |
| 272 | 7.1 QA Testing | 2015-09-09 → 2015-04-27 (-135d) | 2015-09-22 → 2015-05-08 (-137d) |  |  |  |  |
| 273 | 7.2 Review results | 2015-09-23 → 2015-05-11 (-135d) | 2015-10-06 → 2015-05-22 (-137d) |  |  |  |  |
| 274 | **8 End-to-end UAT** | 2015-10-07 → 2015-05-25 (-135d) | 2015-11-03 → 2015-06-19 (-137d) |  |  |  |  |
| 275 | 8.1 Access to UAT Environment | 2015-10-07 → 2015-05-25 (-135d) | 2015-10-20 → 2015-06-05 (-137d) |  |  |  |  |
| 276 | 8.2 Product Testing | 2015-10-21 → 2015-06-08 (-135d) | 2015-11-03 → 2015-06-19 (-137d) |  |  |  |  |
| 277 | **9 Client UAT** | 2015-10-07 → 2015-05-25 (-135d) | 2015-11-03 → 2015-06-19 (-137d) |  |  |  |  |
| 278 | 9.1 Access to UAT Environment | 2015-10-07 → 2015-05-25 (-135d) | 2015-10-20 → 2015-06-05 (-137d) |  |  |  |  |
| 279 | 9.2 Product Testing | 2015-10-21 → 2015-06-08 (-135d) | 2015-11-03 → 2015-06-19 (-137d) |  |  |  |  |
| 280 | **10 Deployment** | 2015-11-04 → 2015-06-22 (-135d) | 2015-12-09 → 2015-07-27 (-135d) |  |  |  |  |
| 281 | 10.1 Deployment Approach | 2015-11-04 → 2015-06-22 (-135d) | 2015-11-10 → 2015-06-26 (-137d) |  |  |  |  |
| 282 | 10.2 Platform Readiness | 2015-11-11 → 2015-06-29 (-135d) | 2015-11-17 → 2015-07-03 (-137d) |  |  |  |  |
| 283 | 10.3 Software Installation | 2015-11-18 → 2015-07-06 (-135d) | 2015-11-24 → 2015-07-10 (-137d) |  |  |  |  |
| 284 | 10.4 UAT Sign-off | 2015-11-25 → 2015-07-13 (-135d) | 2015-11-25 → 2015-07-13 (-135d) |  |  |  |  |
| 285 | 10.5 Go Live Preparation | 2015-11-26 → 2015-07-14 (-135d) | 2015-12-02 → 2015-07-20 (-135d) |  |  |  |  |
| 286 | 10.6 Support Kick Off | 2015-12-03 → 2015-07-21 (-135d) | 2015-12-09 → 2015-07-27 (-135d) |  |  |  |  |

## Version 13 (saved 2015-03-27, file MCAS Plan V13 old.mpp)

Note of the change: Add MCAS

Last finish stays 2015-12-09. Complete tasks 118 → 80.

Added:

| ID | Task | Duration | Start | Finish | Predecessors | Resources |
| --- | --- | --- | --- | --- | --- | --- |
| 65 | 2.3.2 Trains | 22d | 2015-02-16 | 2015-03-17 |  | Singapore |
| 66 | 2.3.3 Taxis | 22d | 2015-03-17 | 2015-04-15 |  | Singapore |
| 67 | 2.3.4 Rental Cars | 22d | 2015-04-15 | 2015-05-14 |  | Singapore |
| 68 | 2.3.5 Private Cars | 22d | 2015-05-14 | 2015-06-12 |  | Singapore |
| 69 | 2.4 Dashboard Requirements | 37d | 2015-01-01 A | 2015-02-20 |  | Singapore |
| 70 | **2.5 Diary Listing** | 37d | 2015-01-01 A | 2015-02-20 |  | Singapore |
| 71 | 2.5.1 Diary Items | 37d | 2015-01-01 A | 2015-02-20 |  | Singapore |
| 72 | 2.5.2 Assigned Tasks | 37d | 2015-01-01 A | 2015-02-20 |  | Singapore |
| 73 | 2.5.3 Escalation Tasks | 37d | 2015-01-01 A | 2015-02-20 |  | Singapore |
| 150 | 4.3.2 Trains | 31d | 2014-10-02 A | 2014-11-13 A |  | India |
| 151 | 4.3.3 Taxis | 20d | 2015-03-10 | 2015-04-06 |  | India |
| 152 | 4.3.4 Rental Cars | 20d | 2015-04-10 | 2015-05-07 |  | India |
| 153 | 4.3.5 Private Cars | 20d | 2015-04-10 | 2015-05-07 |  | India |
| 154 | **4.4 Dashboard** | 15d | 2015-02-10 A | 2015-03-02 |  | India |
| 155 | 4.4.1 Sections of Dashboard as per User Group | 15d | 2015-02-10 A | 2015-03-02 |  | India |
| 156 | **4.5 Diary Listing** | 10d | 2015-02-10 A | 2015-02-23 |  | India |
| 157 | 4.5.1 Diary Items | 10d | 2015-02-10 A | 2015-02-23 |  | India |
| 158 | 4.5.2 Assigned Tasks | 10d | 2015-02-10 A | 2015-02-23 |  | India |
| 159 | 4.5.3 Escalation Tasks | 10d | 2015-02-10 A | 2015-02-23 |  | India |
| 242 | 5.3.2 Trains | 127d | 2014-11-14 A | 2015-05-11 | 150 | India |
| 243 | 5.3.3 Taxis | 30d | 2015-04-07 | 2015-05-18 | 151 | India |
| 244 | 5.3.4 Rental Cars | 30d | 2015-05-08 | 2015-06-18 | 152 | India |
| 245 | 5.3.5 Private Cars | 30d | 2015-05-08 | 2015-06-18 | 153 | India |
| 250 | **5.4 Dashboard** | 34d | 2015-02-12 | 2015-03-31 |  | India |
| 251 | 5.4.1 Sections of Dashboard per User Group | 10d | 2015-02-12 | 2015-02-25 |  | India |
| 252 | 5.4.2 User Manual | 10d | 2015-02-26 | 2015-03-11 | 251 | India |
| 253 | 5.4.3 Test Approach/Test Cases | 5d | 2015-02-26 | 2015-03-04 | 251 | India |
| 254 | 5.4.4 QA Testing | 2d | 2015-02-26 | 2015-02-27 | 251 | Singapore |
| 255 | 5.4.5 UAT | 5d | 2015-03-12 | 2015-03-18 | 252 | CDGI |
| 256 | **5.5 Diary Listing** | 27d | 2015-02-24 | 2015-04-01 |  | India |
| 257 | 5.5.1 Diary Items | 10d | 2015-02-24 | 2015-03-09 | 157 | India |
| 258 | 5.5.2 Assigned Tasks | 10d | 2015-02-24 | 2015-03-09 | 158 | India |
| 259 | 5.5.3 Escalation Tasks | 17d | 2015-02-24 | 2015-03-18 | 159 | India |
| 260 | 5.5.4 User Manual | 5d | 2015-03-19 | 2015-03-25 | 259 | India |
| 261 | 5.5.5 Test Approach/Test Cases | 5d | 2015-03-26 | 2015-04-01 | 260 | India |
| 262 | 5.5.6 QA Testing | 5d | 2015-03-26 | 2015-04-01 | 260 | Singapore |
| 263 | 5.5.7 UAT | 5d | 2015-03-25 | 2015-03-31 | 260 | CDGI |

Removed: 65 2.3.1.16 Alert Indicator; 79 2.11 LOG Request; 143 4.3.1.17 Alert Indicator; 157 4.11 LOG Request; 227 5.3.1.17 Alert Indicator; 265 5.11 LOG Request

Changed:

| ID | Task | Start | Finish | Duration | Complete | Other |
| --- | --- | --- | --- | --- | --- | --- |
| 1 | **MCAS Project** |  |  |  | 66% → 47% | was named MCAS Project Phase 1 |
| 2 | **1 Project Initiation** |  | 2015-01-01 A |  | 75% → 100% |  |
| 3 | 1.1 Project Scope Definition |  | 2015-01-01 A |  | 75% → 100% |  |
| 4 | 1.2 Project Plan Development |  | 2015-01-01 A |  | 75% → 100% |  |
| 5 | 1.3 Project Scope Completed |  | 2015-01-01 A |  | 75% → 100% |  |
| 6 | **2 Requirement Gathering** |  | 2015-03-09 → 2015-06-19 (+102d) | 48d → 122d | 68% → 20% |  |
| 7 | **2.1 System Admin Requirements** |  |  |  | 71% → 26% |  |
| 8 | **2.1.1 Upload Main Menu** |  |  |  | 44% → 21% |  |
| 9 | 2.1.1.1 Vehicle Listing Upload |  |  |  | 44% → 21% |  |
| 10 | 2.1.1.2 Bus Captain Listing |  |  |  | 44% → 21% |  |
| 11 | **2.1.2 User Admin** |  |  |  | 44% → 21% |  |
| 12 | 2.1.2.1 Entity Details |  |  |  | 34% → 21% |  |
| 13 | 2.1.2.2. User Groups |  |  |  | 69% → 21% |  |
| 14 | 2.1.2.3 User |  |  |  | 69% → 21% |  |
| 15 | 2.1.2.4 Department Master |  |  |  | 34% → 21% |  |
| 16 | 2.1.2.5 Password Setup |  |  |  | 34% → 21% |  |
| 17 | 2.1.2.6 Release Locked Users |  |  |  | 34% → 21% |  |
| 18 | 2.1.2.7 Country for User Access |  |  |  | 34% → 21% |  |
| 19 | **2.1.3 Service Provider** |  | 2015-01-30 A → 2015-01-30 |  | 100% → 31% |  |
| 20 | 2.1.3.1 Insurer Master |  | 2015-01-30 A → 2015-01-30 |  | 100% → 31% |  |
| 21 | 2.1.3.2 Surveyor Master |  | 2015-01-30 A → 2015-01-30 |  | 100% → 31% |  |
| 22 | 2.1.3.3 Lawyer Master |  | 2015-01-30 A → 2015-01-30 |  | 100% → 31% |  |
| 23 | 2.1.3.4 Workshop/Dept Master |  | 2015-01-30 A → 2015-01-30 |  | 100% → 31% |  |
| 24 | 2.1.3.5 Hospital Master |  | 2015-01-30 A → 2015-01-30 |  | 100% → 31% |  |
| 25 | 2.1.3.6 Adjuster Master |  | 2015-01-30 A → 2015-01-30 |  | 100% → 31% |  |
| 26 | 2.1.4 Nature Of Loss |  | 2015-01-30 A → 2015-01-30 |  | 100% → 31% |  |
| 27 | 2.1.5 Type of Loss |  | 2015-01-30 A → 2015-01-30 |  | 100% → 31% |  |
| 28 | 2.1.6 Main Class Business |  | 2015-01-30 A → 2015-01-30 |  | 100% → 31% |  |
| 29 | 2.1.7 Sub Class |  | 2015-01-30 A → 2015-01-30 |  | 100% → 31% |  |
| 30 | 2.1.8 Claims Expense Master |  | 2015-01-30 A → 2015-01-30 |  | 100% → 31% |  |
| 31 | 2.1.9 Claims Close Reason Master |  | 2015-01-30 A → 2015-01-30 |  | 100% → 31% |  |
| 32 | 2.1.10 Currency Master |  | 2015-01-30 A → 2015-01-30 |  | 100% → 31% |  |
| 33 | 2.1.11 Exchange Rate Master |  | 2015-01-30 A → 2015-01-30 |  | 100% → 31% |  |
| 34 | 2.1.12 Vehicle Class |  |  |  | 52% → 21% |  |
| 35 | 2.1.13 Vehicle Make |  |  |  | 52% → 21% |  |
| 36 | 2.1.14 Vehicle Model |  |  |  | 52% → 21% |  |
| 37 | 2.1.15 Insurance Policy |  | 2015-01-30 A → 2015-01-30 |  | 100% → 31% |  |
| 38 | 2.1.16 GST Setting |  | 2015-01-30 A → 2015-01-30 |  | 100% → 31% |  |
| 39 | 2.1.17 Organization |  | 2015-01-30 A → 2015-01-30 |  | 100% → 31% |  |
| 40 | 2.1.18 Claim Officer Duty |  | 2015-01-30 A → 2015-01-30 |  | 100% → 31% |  |
| 41 | 2.1.19 LOU Rate |  | 2015-01-30 A → 2015-01-30 |  | 100% → 31% |  |
| 42 | 2.1.20 Interchange |  |  |  | 52% → 21% |  |
| 43 | 2.1.21 Deductible |  |  |  | 25% → 21% |  |
| 44 | **2.2 Upload Requirements** |  |  |  | 50% → 0% |  |
| 45 | 2.2.1 TAC Upload |  |  |  | 50% → 0% |  |
| 46 | 2.2.2 Claim File Upload |  |  |  | 50% → 0% |  |
| 47 | 2.2.3 SAP File Upload | 2015-01-29 A → 2015-06-01 A (+123d) | 2015-02-20 → 2015-06-30 (+130d) | 17d? → 22d | 50% → 0% |  |
| 48 | **2.3 Claim Requirements** |  |  |  | 98% → 24% |  |
| 49 | **2.3.1 Buses** |  |  |  | 98% → 30% |  |
| 50 | 2.3.1.1 Accident |  | 2015-01-30 A → 2015-01-30 |  | 100% → 31% |  |
| 51 | 2.3.1.2 Claim |  | 2015-01-30 A → 2015-01-30 |  | 100% → 31% |  |
| 52 | 2.3.1.3 Service Provider |  | 2015-01-30 A → 2015-01-30 |  | 100% → 31% |  |
| 53 | 2.3.1.4 Notes |  | 2015-01-30 A → 2015-01-30 |  | 100% → 31% |  |
| 54 | 2.3.1.5 Tasks |  | 2015-01-30 A → 2015-01-30 |  | 100% → 31% |  |
| 55 | 2.3.1.6 Attachment |  | 2015-01-30 A → 2015-01-30 |  | 100% → 31% |  |
| 56 | 2.3.1.7 Dairy |  | 2015-01-30 A → 2015-01-30 |  | 100% → 31% |  |
| 57 | 2.3.1.8 Reassigned Dairy |  | 2015-01-30 A → 2015-01-30 |  | 100% → 31% |  |
| 58 | 2.3.1.9 Reserve |  | 2015-01-30 A → 2015-01-30 |  | 100% → 31% |  |
| 59 | 2.3.1.10 Reserve History |  | 2015-01-30 A → 2015-01-30 |  | 100% → 31% |  |
| 60 | 2.3.1.11 Mandate |  | 2015-01-30 A → 2015-01-30 |  | 100% → 31% |  |
| 61 | 2.3.1.12 Mandate History |  | 2015-01-30 A → 2015-01-30 |  | 100% → 31% |  |
| 62 | 2.3.1.13 Payment |  | 2015-01-30 A → 2015-01-30 |  | 100% → 31% |  |
| 63 | 2.3.1.14 Payment History |  | 2015-01-30 A → 2015-01-30 |  | 100% → 31% |  |
| 64 | 2.3.1.15 Recovery |  |  |  | 75% → 21% |  |
| 74 | **2.6 Claim Enquiry Requirements** |  |  |  | 25% → 0% |  |
| 75 | 2.6.1 Claims |  |  |  | 25% → 0% |  |
| 76 | 2.6.2 Claim Documents Printing |  |  |  | 25% → 0% |  |
| 77 | 2.6.3 Job Schedule Enquiry |  |  |  | 25% → 0% |  |
| 78 | **2.7 Document Generation Module** |  |  |  | 25% → 0% |  |
| 79 | 2.7.1 Document Generation Criteria |  |  |  | 25% → 0% |  |

| ID | Task | Start | Finish | Duration | Complete | Total float | Other |
| --- | --- | --- | --- | --- | --- | --- | --- |
| 80 | **2.8 Document Print** |  |  |  | 25% → 0% |  |  |
| 81 | 2.7.1 Claim Payment Document Printing |  |  |  | 25% → 0% |  |  |
| 82 | 2.7.2 Claim Registration Document Printing |  |  |  | 25% → 0% |  |  |
| 83 | 2.9 Unreported Claim |  |  |  | 25% → 0% |  |  |
| 87 | 2.11 Requirements signed off by client | 2015-03-03 → 2015-06-15 (+104d) | 2015-03-09 → 2015-06-19 (+102d) |  |  |  | was named 2.12 Requirements signed off by client |
| 88 | **3 Requirements Finalized in TFS** |  | 2015-03-10 → 2015-09-01 (+175d) | 267d → 392d | 73% → 57% | none → 0d |  |
| 89 | 3.1 Document Upload in TFS |  | 2015-03-10 → 2015-09-01 (+175d) | 267d → 392d | 73% → 57% |  |  |
| 90 | **4 Design UI and Functionality** |  |  |  | 75% → 64% |  |  |
| 91 | **4.1 System Admin Requirements** |  |  |  | 80% → 79% |  |  |
| 92 | **4.1.1 Upload Main Menu** | 2014-06-01 A → 2014-06-01 |  |  | 0% → 67% |  |  |
| 93 | 4.1.1.1 Vehicle Listing Upload | 2015-05-05 → 2014-05-05 A (-365d) | 2015-06-01 → 2014-07-02 A (-334d) |  | 0% → 100% | 137d → none | constraint start no earlier than 2015-05-05 → finish no earlier than 2014-07-02; resources India → Singapore |
| 94 | 4.1.1.2 Bus Captain Listing | 2015-02-10 A |  |  |  |  | resources India → Singapore |
| 95 | **4.1.2 User Admin** |  |  |  | 48% → 18% |  |  |
| 97 | 4.1.2.2. User Groups |  |  |  | 18% → 0% |  |  |
| 98 | 4.1.2.3 User |  |  |  | 23% → 0% |  |  |
| 99 | 4.1.2.4 Department Master |  |  |  | 45% → 0% |  |  |
| 100 | 4.1.2.5 Password Setup |  |  |  | 90% → 0% |  |  |
| 101 | 4.1.2.6 Release Locked Users |  |  |  | 90% → 0% |  |  |
| 102 | 4.1.2.7 Country for User Access |  |  |  | 45% → 0% |  |  |
| 123 | 4.1.17 Organization |  | 2015-01-09 A → 2015-01-09 |  | 100% → 99% |  |  |
| 128 | **4.2 Upload** |  |  |  | 27% → 0% |  |  |
| 129 | 4.2.1 TAC Upload |  |  |  | 40% → 0% |  |  |
| 130 | 4.2.2 Claim File Upload |  |  |  | 40% → 0% |  |  |
| 132 | **4.3 Claim** |  | 2015-02-12 → 2015-05-07 (+84d) | 96d → 156d | 99% → 84% |  |  |
| 133 | **4.3.1 Buses** |  |  |  | 99% → 93% |  |  |
| 146 | 4.3.1.13 Payment |  | 2015-01-16 A → 2015-01-16 |  | 100% → 83% |  |  |
| 147 | 4.3.1.14 Payment History |  | 2015-01-16 A → 2015-01-16 |  | 100% → 83% |  |  |
| 148 | 4.3.1.15 Recovery |  |  |  | 85% → 22% |  |  |
| 160 | **4.6 Claim Enquiry** |  |  |  | 39% → 0% |  |  |
| 161 | 4.6.1 Claims |  |  |  | 40% → 0% |  |  |
| 162 | 4.6.2 Claim Documents Printing |  |  |  | 25% → 0% |  |  |
| 163 | 4.6.3 Job Schedule Enquiry |  |  |  | 80% → 0% |  |  |
| 169 | 4.9 Unreported Claim | 2015-02-05 A |  |  |  |  |  |
| 170 | **4.10 Security Management System** |  | 2014-12-19 A |  | 85% → 100% |  |  |
| 171 | 4.10.1 Permission Screen UI |  | 2014-11-28 A |  | 85% → 100% |  |  |
| 172 | 4.10.2 Permission screen functionality |  | 2014-11-28 A |  | 85% → 100% |  |  |
| 173 | 4.11 UI and Design signed off by client | 2014-06-17 A | 2014-06-23 A |  | 0% → 100% |  | was named 4.12 UI and Design signed off by client |
| 174 | **5 Iterative Development and Testing** | 2014-05-22 A |  |  | 50% → 33% |  |  |
| 175 | **5.1 System Admin** |  |  |  | 86% → 62% |  |  |
| 176 | **5.1.1 Upload Main Menu** |  |  |  | 75% → 50% |  |  |
| 178 | 5.1.1.2 Bus Captain Listing |  |  |  | 50% → 0% |  |  |
| 179 | **5.1.2 User Admin** |  | 2015-03-13 A → 2015-03-13 |  | 100% → 14% | none → 0d |  |
| 181 | 5.1.2.2. User Groups |  | 2015-03-13 A → 2015-03-13 |  | 100% → 0% |  |  |
| 182 | 5.1.2.3 User |  | 2015-03-12 A → 2015-03-12 |  | 100% → 0% |  |  |
| 183 | 5.1.2.4 Department Master |  | 2015-02-26 A → 2015-02-26 |  | 100% → 0% |  |  |
| 184 | 5.1.2.5 Password Setup |  | 2015-02-19 A → 2015-02-19 |  | 100% → 0% |  |  |
| 185 | 5.1.2.6 Release Locked Users |  | 2015-02-19 A → 2015-02-19 |  | 100% → 0% |  |  |
| 186 | 5.1.2.7 Country for User Access |  | 2015-02-26 A → 2015-02-26 |  | 100% → 0% |  |  |
| 187 | **5.1.3 Service Provider** |  | 2014-12-09 A |  | 99% → 100% |  |  |
| 207 | 5.1.17 Organization |  | 2015-01-23 A → 2015-01-23 |  | 100% → 0% |  |  |
| 211 | 5.1.21 Deductible |  | 2015-01-09 A → 2015-01-09 |  | 100% → 98% |  |  |
| 212 | 5.1.22 User Manual |  |  |  | 7% → 0% |  |  |
| 213 | 5.1.23 Test Approach/Test Cases |  | 2015-02-06 A → 2015-02-06 |  | 100% → 0% |  |  |
| 214 | 5.1.24 QA Testing |  |  |  | 80% → 0% |  |  |
| 217 | 5.2.1 TAC Upload | 2015-02-26 A |  |  |  |  |  |
| 218 | 5.2.2 Claim File Upload | 2015-02-26 A |  |  |  |  |  |
| 220 | 5.2.4 User Manual | 2015-04-02 A |  |  |  |  |  |
| 221 | 5.2.5 Test Approach/Test Cases | 2015-04-01 A |  |  |  |  |  |
| 224 | **5.3 Claim** |  |  |  | 52% → 35% |  |  |
| 225 | **5.3.1 Buses** |  |  |  | 67% → 59% |  |  |
| 234 | 5.3.1.9 Reserve |  |  |  | 85% → 58% |  |  |
| 235 | 5.3.1.10 Reserve History |  |  |  | 85% → 0% |  |  |
| 236 | 5.3.1.11 Mandate |  |  |  | 28% → 19% |  |  |
| 237 | 5.3.1.12 Mandate History | 2015-01-16 A |  |  |  |  |  |
| 238 | 5.3.1.13 Payment |  |  |  | 13% → 0% |  |  |
| 240 | 5.3.1.15 Recovery |  |  |  | 27% → 0% |  |  |
| 246 | 5.3.6 User Manual | 2015-05-11 A |  |  |  |  |  |
| 247 | 5.3.7 Test Approach/Test Cases | 2015-05-22 A |  |  |  |  |  |
| 248 | 5.3.8 QA Testing | 2015-05-28 A |  |  |  |  |  |
| 264 | **5.6 Claim Enquiry** |  |  |  | 18% → 0% |  |  |

| ID | Task | Start | Finish | Complete |
| --- | --- | --- | --- | --- |
| 265 | 5.6.1 Claims |  |  | 40% → 0% |
| 267 | 5.6.3 Job Schedule Enquiry |  |  | 40% → 0% |
| 286 | 5.9.1 UI and functionality implementation | 2015-02-19 A |  |  |
| 291 | **5.10 Security Management System** |  |  | 18% → 26% |
| 292 | 5.7.1 Permission Screen UI and Functionality | 2014-12-01 A | 2014-12-12 A | 0% → 100% |
| 294 | 5.7.3 Test Approach/Test Cases |  | 2015-02-06 A → 2015-02-06 | 100% → 0% |
| 297 | **6 QA Test Scripts** | 2015-03-30 → 2015-07-23 (+115d) | 2015-04-24 → 2015-08-19 (+117d) |  |
| 298 | 6.1 Testing Approach Development/Confirmation | 2015-03-30 → 2015-07-23 (+115d) | 2015-04-03 → 2015-07-29 (+117d) |  |
| 299 | 6.2 Test Condition Development | 2015-04-06 → 2015-08-06 (+122d) | 2015-04-10 → 2015-08-12 (+124d) |  |
| 300 | 6.3 Test Script Development | 2015-04-13 → 2015-08-20 (+129d) | 2015-04-17 → 2015-08-26 (+131d) |  |
| 301 | 6.4 Expected Results Development | 2015-04-20 → 2015-09-03 (+136d) | 2015-04-24 → 2015-09-09 (+138d) |  |
| 302 | **7 QA Testing** | 2015-04-27 → 2015-09-09 (+135d) | 2015-05-22 → 2015-10-06 (+137d) |  |
| 303 | 7.1 QA Testing | 2015-04-27 → 2015-09-09 (+135d) | 2015-05-08 → 2015-09-22 (+137d) |  |
| 304 | 7.2 Review results | 2015-05-11 → 2015-09-23 (+135d) | 2015-05-22 → 2015-10-06 (+137d) |  |
| 305 | **8 End-to-end UAT** | 2015-05-25 → 2015-10-07 (+135d) | 2015-06-19 → 2015-11-03 (+137d) |  |
| 306 | 8.1 Access to UAT Environment | 2015-05-25 → 2015-10-07 (+135d) | 2015-06-05 → 2015-10-20 (+137d) |  |
| 307 | 8.2 Product Testing | 2015-06-08 → 2015-10-21 (+135d) | 2015-06-19 → 2015-11-03 (+137d) |  |
| 308 | **9 Client UAT** | 2015-05-25 → 2015-10-07 (+135d) | 2015-06-19 → 2015-11-03 (+137d) |  |
| 309 | 9.1 Access to UAT Environment | 2015-05-25 → 2015-10-07 (+135d) | 2015-06-05 → 2015-10-20 (+137d) |  |
| 310 | 9.2 Product Testing | 2015-06-08 → 2015-10-21 (+135d) | 2015-06-19 → 2015-11-03 (+137d) |  |
| 311 | **10 Deployment** | 2015-06-22 → 2015-11-04 (+135d) | 2015-07-27 → 2015-12-09 (+135d) |  |
| 312 | 10.1 Deployment Approach | 2015-06-22 → 2015-11-04 (+135d) | 2015-06-26 → 2015-11-10 (+137d) |  |
| 313 | 10.2 Platform Readiness | 2015-06-29 → 2015-11-11 (+135d) | 2015-07-03 → 2015-11-17 (+137d) |  |
| 314 | 10.3 Software Installation | 2015-07-06 → 2015-11-18 (+135d) | 2015-07-10 → 2015-11-24 (+137d) |  |
| 315 | 10.4 UAT Sign-off | 2015-07-13 → 2015-11-25 (+135d) | 2015-07-13 → 2015-11-25 (+135d) |  |
| 316 | 10.5 Go Live Preparation | 2015-07-14 → 2015-11-26 (+135d) | 2015-07-20 → 2015-12-02 (+135d) |  |
| 317 | 10.6 Support Kick Off | 2015-07-21 → 2015-12-03 (+135d) | 2015-07-27 → 2015-12-09 (+135d) |  |

## Version 14 (saved 2015-03-31, file MCAS Plan V14.mpp)

Note of the change: Add MCAS

Last finish stays 2015-12-09. Complete tasks 80 → 121.

Changed:

| ID | Task | Start | Finish | Complete | Total float |
| --- | --- | --- | --- | --- | --- |
| 1 | **MCAS Project** |  |  | 47% → 56% |  |
| 90 | **4 Design UI and Functionality** |  |  | 64% → 82% |  |
| 91 | **4.1 System Admin Requirements** |  |  | 79% → 97% |  |
| 95 | **4.1.2 User Admin** |  |  | 18% → 99% |  |
| 97 | 4.1.2.2. User Groups |  | 2015-02-27 A | 0% → 100% |  |
| 98 | 4.1.2.3 User |  | 2015-02-26 A | 0% → 100% |  |
| 99 | 4.1.2.4 Department Master |  | 2015-02-12 A | 0% → 100% |  |
| 100 | 4.1.2.5 Password Setup |  | 2015-02-05 A | 0% → 100% |  |
| 101 | 4.1.2.6 Release Locked Users |  | 2015-02-05 A | 0% → 100% |  |
| 102 | 4.1.2.7 Country for User Access |  | 2015-02-12 A | 0% → 100% |  |
| 123 | 4.1.17 Organization |  | 2015-01-09 A | 99% → 100% |  |
| 128 | **4.2 Upload** |  |  | 0% → 67% |  |
| 129 | 4.2.1 TAC Upload |  | 2015-02-25 A | 0% → 100% |  |
| 130 | 4.2.2 Claim File Upload |  | 2015-02-25 A | 0% → 100% |  |
| 131 | 4.2.3 SAP File Upload | 2015-01-29 A |  |  |  |
| 154 | **4.4 Dashboard** |  |  | 0% → 80% |  |
| 155 | 4.4.1 Sections of Dashboard as per User Group |  |  | 0% → 80% |  |
| 156 | **4.5 Diary Listing** |  | 2015-02-23 A | 0% → 100% | 0d → none |
| 157 | 4.5.1 Diary Items |  | 2015-02-23 A | 0% → 100% |  |
| 158 | 4.5.2 Assigned Tasks |  | 2015-02-23 A | 0% → 100% |  |
| 159 | 4.5.3 Escalation Tasks |  | 2015-02-23 A | 0% → 100% |  |
| 160 | **4.6 Claim Enquiry** |  | 2015-05-06 A | 0% → 100% |  |
| 161 | 4.6.1 Claims |  | 2015-03-11 A | 0% → 100% |  |
| 162 | 4.6.2 Claim Documents Printing |  | 2015-04-30 A | 0% → 100% |  |
| 163 | 4.6.3 Job Schedule Enquiry |  | 2015-02-11 A | 0% → 100% |  |
| 174 | **5 Iterative Development and Testing** |  |  | 33% → 57% |  |
| 175 | **5.1 System Admin** |  |  | 62% → 95% |  |
| 179 | **5.1.2 User Admin** |  |  | 14% → 99% |  |
| 181 | 5.1.2.2. User Groups |  | 2015-03-13 A | 0% → 100% |  |
| 182 | 5.1.2.3 User |  | 2015-03-12 A | 0% → 100% |  |
| 183 | 5.1.2.4 Department Master |  | 2015-02-26 A | 0% → 100% |  |
| 184 | 5.1.2.5 Password Setup |  | 2015-02-19 A | 0% → 100% |  |
| 185 | 5.1.2.6 Release Locked Users |  | 2015-02-19 A | 0% → 100% |  |
| 186 | 5.1.2.7 Country for User Access |  | 2015-02-26 A | 0% → 100% |  |
| 207 | 5.1.17 Organization |  | 2015-01-23 A | 0% → 100% |  |
| 212 | 5.1.22 User Manual |  | 2015-03-13 A | 0% → 100% |  |
| 213 | 5.1.23 Test Approach/Test Cases |  | 2015-02-06 A | 0% → 100% |  |
| 214 | 5.1.24 QA Testing |  | 2015-03-10 A | 0% → 100% |  |
| 215 | 5.1.25 UAT | 2015-03-10 A |  | 0% → 50% |  |
| 216 | **5.2 Upload** |  |  | 0% → 52% |  |
| 217 | 5.2.1 TAC Upload |  | 2015-04-01 A | 0% → 100% |  |
| 218 | 5.2.2 Claim File Upload |  |  | 0% → 85% |  |
| 220 | 5.2.4 User Manual |  |  | 0% → 50% |  |
| 221 | 5.2.5 Test Approach/Test Cases |  |  | 0% → 90% |  |
| 250 | **5.4 Dashboard** | 2015-02-12 A |  | 0% → 16% |  |
| 251 | 5.4.1 Sections of Dashboard per User Group | 2015-02-12 A |  | 0% → 50% |  |
| 256 | **5.5 Diary Listing** | 2015-02-24 A | 2015-04-01 A | 0% → 100% |  |
| 257 | 5.5.1 Diary Items | 2015-02-24 A | 2015-03-09 A | 0% → 100% |  |
| 258 | 5.5.2 Assigned Tasks | 2015-02-24 A | 2015-03-09 A | 0% → 100% |  |
| 259 | 5.5.3 Escalation Tasks | 2015-02-24 A | 2015-03-18 A | 0% → 100% |  |
| 260 | 5.5.4 User Manual | 2015-03-19 A | 2015-03-25 A | 0% → 100% |  |
| 261 | 5.5.5 Test Approach/Test Cases | 2015-03-26 A | 2015-04-01 A | 0% → 100% |  |
| 262 | 5.5.6 QA Testing | 2015-03-26 A | 2015-04-01 A | 0% → 100% |  |
| 263 | 5.5.7 UAT | 2015-03-25 A | 2015-03-31 A | 0% → 100% |  |
| 264 | **5.6 Claim Enquiry** |  |  | 0% → 64% |  |
| 265 | 5.6.1 Claims |  | 2015-04-01 A | 0% → 100% |  |
| 266 | 5.6.2 Claim Documents Printing | 2015-05-01 A | 2015-05-14 A | 0% → 100% |  |
| 267 | 5.6.3 Job Schedule Enquiry |  | 2015-05-28 A | 0% → 100% |  |
| 285 | **5.9 Unreported Claim Menu** | 2015-01-30 A | 2015-04-08 A | 0% → 100% |  |
| 286 | 5.9.1 UI and functionality implementation |  | 2015-03-04 A | 0% → 100% |  |
| 287 | 5.9.2 User Manual | 2015-03-05 A | 2015-03-18 A | 0% → 100% |  |
| 288 | 5.9.3 Test Approach/Test Cases | 2015-03-19 A | 2015-03-25 A | 0% → 100% |  |
| 289 | 5.9.4 QA Testing | 2015-03-19 A | 2015-03-25 A | 0% → 100% |  |
| 290 | 5.9.5 UAT | 2015-03-26 A | 2015-04-08 A | 0% → 100% |  |

## Version 15 (saved 2015-03-31, file MCAS Plan V15.mpp)

Note of the change: Add MCAS

Last finish stays 2015-12-09. Complete tasks 121 → 181.

Added:

| ID | Task | Duration | Start | Finish | Resources |
| --- | --- | --- | --- | --- | --- |
| 65 | 2.3.1.16 Transaction History | 1d? | 2015-01-01 A | 2015-01-01 A | Singapore |
| 66 | 2.3.1.17 Alert Indicator for Deductible | 1d? | 2015-01-01 A | 2015-01-01 A | Singapore |
| 90 | **2.12 New Requirement - New Master Tables** | 1d? | 2015-01-01 A | 2015-01-01 A | Singapore |
| 91 | 2.12.1 iTrack #2 | 1d? | 2015-01-01 A | 2015-01-01 A | Singapore |
| 92 | **2.13 New Requirement - LOG Request** | 1d? | 2015-01-01 A | 2015-01-01 A | Singapore |
| 93 | 2.13.1 iTrack #10 | 1d? | 2015-01-01 A | 2015-01-01 A | Singapore |
| 94 | **2.14 New Requirement - FAL Masters** | 1d? | 2015-01-01 A | 2015-01-01 A | Singapore |
| 95 | 2.14.1 iTrack #23 | 1d? | 2015-01-01 A | 2015-01-01 A | Singapore |
| 158 | 4.3.1.17 Alert Indicator for Deductible | 1d? | 2014-10-02 | 2014-10-02 | India |
| 183 | **4.12 New Requirement - New Master Tables** | 1d? | 2014-05-01 | 2014-05-01 | India |
| 184 | 2.12.1 iTrack #2 | 1d? | 2014-05-01 | 2014-05-01 | India |
| 185 | **4.13 New Requirement - LOG Request** | 1d? | 2014-05-01 | 2014-05-01 | India |
| 186 | 2.13.1 iTrack #10 | 1d? | 2014-05-01 | 2014-05-01 | India |
| 187 | **4.14 New Requirement - FAL Masters** | 1d? | 2014-05-01 | 2014-05-01 | India |
| 188 | 2.14.1 iTrack #23 | 1d? | 2014-05-01 | 2014-05-01 | India |
| 257 | 5.3.1.17 Alert Indicator for Deductible | 1d? | 2014-11-14 | 2014-11-14 | India |
| 313 | **5.11 New Requirement - New Master Tables** | 1d? | 2014-05-22 | 2014-05-22 |  |
| 314 | 5.11.1 iTrack #2 | 1d? | 2014-05-22 | 2014-05-22 |  |
| 315 | 5.11.2 User Manual | 1d? | 2014-05-22 | 2014-05-22 |  |
| 316 | 5.11.3 Test Approach/Test Cases | 1d? | 2014-05-22 | 2014-05-22 |  |
| 317 | 5.11.4 QA Testing | 1d? | 2014-05-22 | 2014-05-22 |  |
| 318 | 5.11.5 UAT | 1d? | 2014-05-22 | 2014-05-22 |  |
| 319 | **5.12 New Requirement - LOG Request** | 1d? | 2014-05-22 | 2014-05-22 |  |
| 320 | 5.12.1 iTrack #10 | 1d? | 2014-05-22 | 2014-05-22 |  |
| 321 | 5.12.2 User Manual | 1d? | 2014-05-22 | 2014-05-22 |  |
| 322 | 5.12.3 Test Approach/Test Cases | 1d? | 2014-05-22 | 2014-05-22 |  |
| 323 | 5.12.4 QA Testing | 1d? | 2014-05-22 | 2014-05-22 |  |
| 324 | 5.12.5 UAT | 1d? | 2014-05-22 | 2014-05-22 |  |
| 325 | **5.13 New Requirement - FAL Masters** | 1d? | 2014-05-22 | 2014-05-22 |  |
| 326 | 5.13.1 iTrack #23 | 1d? | 2014-05-22 | 2014-05-22 |  |
| 327 | 5.13.2 User Manual | 1d? | 2014-05-22 | 2014-05-22 |  |
| 328 | 5.13.3 Test Approach/Test Cases | 1d? | 2014-05-22 | 2014-05-22 |  |
| 329 | 5.13.4 QA Testing | 1d? | 2014-05-22 | 2014-05-22 |  |
| 330 | 5.13.5 UAT | 1d? | 2014-05-22 | 2014-05-22 |  |

Changed:

| ID | Task | Finish | Complete |
| --- | --- | --- | --- |
| 1 | **MCAS Project** |  | 56% → 75% |
| 6 | **2 Requirement Gathering** |  | 20% → 83% |
| 7 | **2.1 System Admin Requirements** |  | 26% → 94% |
| 11 | **2.1.2 User Admin** | 2015-02-13 A | 21% → 100% |
| 12 | 2.1.2.1 Entity Details | 2015-02-13 A | 21% → 100% |
| 13 | 2.1.2.2. User Groups | 2015-02-13 A | 21% → 100% |
| 14 | 2.1.2.3 User | 2015-02-13 A | 21% → 100% |
| 15 | 2.1.2.4 Department Master | 2015-02-13 A | 21% → 100% |
| 16 | 2.1.2.5 Password Setup | 2015-02-13 A | 21% → 100% |
| 17 | 2.1.2.6 Release Locked Users | 2015-02-13 A | 21% → 100% |
| 18 | 2.1.2.7 Country for User Access | 2015-02-13 A | 21% → 100% |
| 19 | **2.1.3 Service Provider** | 2015-01-30 A | 31% → 100% |
| 20 | 2.1.3.1 Insurer Master | 2015-01-30 A | 31% → 100% |
| 21 | 2.1.3.2 Surveyor Master | 2015-01-30 A | 31% → 100% |
| 22 | 2.1.3.3 Lawyer Master | 2015-01-30 A | 31% → 100% |
| 23 | 2.1.3.4 Workshop/Dept Master | 2015-01-30 A | 31% → 100% |
| 24 | 2.1.3.5 Hospital Master | 2015-01-30 A | 31% → 100% |
| 25 | 2.1.3.6 Adjuster Master | 2015-01-30 A | 31% → 100% |
| 26 | 2.1.4 Nature Of Loss | 2015-01-30 A | 31% → 100% |
| 27 | 2.1.5 Type of Loss | 2015-01-30 A | 31% → 100% |
| 28 | 2.1.6 Main Class Business | 2015-01-30 A | 31% → 100% |
| 29 | 2.1.7 Sub Class | 2015-01-30 A | 31% → 100% |
| 30 | 2.1.8 Claims Expense Master | 2015-01-30 A | 31% → 100% |
| 31 | 2.1.9 Claims Close Reason Master | 2015-01-30 A | 31% → 100% |
| 32 | 2.1.10 Currency Master | 2015-01-30 A | 31% → 100% |
| 33 | 2.1.11 Exchange Rate Master | 2015-01-30 A | 31% → 100% |
| 34 | 2.1.12 Vehicle Class | 2015-02-13 A | 21% → 100% |
| 35 | 2.1.13 Vehicle Make | 2015-02-13 A | 21% → 100% |
| 36 | 2.1.14 Vehicle Model | 2015-02-13 A | 21% → 100% |
| 37 | 2.1.15 Insurance Policy | 2015-01-30 A | 31% → 100% |
| 38 | 2.1.16 GST Setting | 2015-01-30 A | 31% → 100% |
| 39 | 2.1.17 Organization | 2015-01-30 A | 31% → 100% |
| 40 | 2.1.18 Claim Officer Duty | 2015-01-30 A | 31% → 100% |
| 41 | 2.1.19 LOU Rate | 2015-01-30 A | 31% → 100% |
| 42 | 2.1.20 Interchange | 2015-02-13 A | 21% → 100% |
| 43 | 2.1.21 Deductible | 2015-02-13 A | 21% → 100% |
| 44 | **2.2 Upload Requirements** |  | 0% → 61% |
| 45 | 2.2.1 TAC Upload | 2015-02-20 A | 0% → 100% |
| 46 | 2.2.2 Claim File Upload | 2015-02-20 A | 0% → 100% |
| 48 | **2.3 Claim Requirements** |  | 24% → 80% |
| 49 | **2.3.1 Buses** |  | 30% → 100% |
| 50 | 2.3.1.1 Accident | 2015-01-30 A | 31% → 100% |
| 51 | 2.3.1.2 Claim | 2015-01-30 A | 31% → 100% |
| 52 | 2.3.1.3 Service Provider | 2015-01-30 A | 31% → 100% |
| 53 | 2.3.1.4 Notes | 2015-01-30 A | 31% → 100% |
| 54 | 2.3.1.5 Tasks | 2015-01-30 A | 31% → 100% |
| 55 | 2.3.1.6 Attachment | 2015-01-30 A | 31% → 100% |
| 56 | 2.3.1.7 Dairy | 2015-01-30 A | 31% → 100% |
| 57 | 2.3.1.8 Reassigned Dairy | 2015-01-30 A | 31% → 100% |
| 58 | 2.3.1.9 Reserve | 2015-01-30 A | 31% → 100% |
| 59 | 2.3.1.10 Reserve History | 2015-01-30 A | 31% → 100% |
| 60 | 2.3.1.11 Mandate | 2015-01-30 A | 31% → 100% |
| 61 | 2.3.1.12 Mandate History | 2015-01-30 A | 31% → 100% |
| 62 | 2.3.1.13 Payment | 2015-01-30 A | 31% → 100% |
| 63 | 2.3.1.14 Payment History | 2015-01-30 A | 31% → 100% |
| 64 | 2.3.1.15 Recovery | 2015-02-13 A | 21% → 100% |
| 71 | 2.4 Dashboard Requirements |  | 18% → 80% |
| 72 | **2.5 Diary Listing** | 2015-02-20 A | 18% → 100% |
| 73 | 2.5.1 Diary Items | 2015-02-20 A | 18% → 100% |
| 74 | 2.5.2 Assigned Tasks | 2015-02-20 A | 18% → 100% |
| 75 | 2.5.3 Escalation Tasks | 2015-02-20 A | 18% → 100% |
| 76 | **2.6 Claim Enquiry Requirements** | 2015-03-06 A | 0% → 100% |
| 77 | 2.6.1 Claims | 2015-03-06 A | 0% → 100% |
| 78 | 2.6.2 Claim Documents Printing | 2015-03-06 A | 0% → 100% |
| 79 | 2.6.3 Job Schedule Enquiry | 2015-03-06 A | 0% → 100% |
| 85 | 2.9 Unreported Claim | 2015-03-06 A | 0% → 100% |
| 89 | **2.11 Requirements signed off by client** |  | 0% → 99% |
| 140 | **4.3 Claim** |  | 84% → 83% |
| 189 | **5 Iterative Development and Testing** |  | 57% → 56% |

## Version 16 (saved 2015-04-17, file MCAS Plan V19.mpp)

Note of the change: Add MCAS

Last finish stays 2015-12-09. Complete tasks 181 → 186.

Changed:

| ID | Task | Start | Finish | Duration | Complete | Total float | Other |
| --- | --- | --- | --- | --- | --- | --- | --- |
| 1 | **MCAS Project** |  |  |  | 75% → 73% |  |  |
| 98 | **4 Design UI and Functionality** |  |  |  | 82% → 83% |  |  |
| 178 | 4.9 Unreported Claim |  | 2015-02-18 A |  | 0% → 100% |  |  |
| 183 | **4.12 New Requirement - New Master Tables** | 2014-05-01 → 2015-03-03 A (+306d) | 2014-05-01 → 2015-03-10 A (+313d) | 1d? → 6d | 0% → 100% | 0d → none |  |
| 184 | 4.12.1 iTrack #2 | 2014-05-01 → 2015-03-03 A (+306d) | 2014-05-01 → 2015-03-10 A (+313d) | 1d? → 6d | 0% → 100% |  | was named 2.12.1 iTrack #2 |
| 185 | **4.13 New Requirement - LOG Request** | 2014-05-01 → 2015-10-03 A (+520d) | 2014-05-01 → 2015-10-10 A (+527d) | 1d? → 5d | 0% → 100% | 0d → none |  |
| 186 | 2.13.1 iTrack #10 | 2014-05-01 → 2015-10-03 A (+520d) | 2014-05-01 → 2015-10-10 A (+527d) | 1d? → 7d | 0% → 100% |  |  |
| 187 | **4.14 New Requirement - FAL Masters** | 2014-05-01 → 2015-10-03 A (+520d) | 2014-05-01 → 2015-10-10 A (+527d) | 1d? → 5d | 0% → 100% | 0d → none |  |
| 188 | 2.14.1 iTrack #23 | 2014-05-01 → 2015-10-03 A (+520d) | 2014-05-01 → 2015-10-10 A (+527d) | 1d? → 7d | 0% → 100% |  |  |
| 189 | **5 Iterative Development and Testing** |  |  |  | 56% → 51% |  |  |
| 236 | 5.2.5 Test Approach/Test Cases |  | 2015-04-02 A |  | 90% → 100% |  |  |
| 313 | **5.11 New Requirement - New Master Tables** | 2014-05-22 → 2015-03-03 (+285d) | 2014-05-22 → 2015-05-08 (+351d) | 1d? → 49d |  |  |  |
| 314 | 5.11.1 iTrack #2 | 2014-05-22 → 2015-03-03 (+285d) | 2014-05-22 → 2015-04-24 (+337d) | 1d? → 39d |  |  |  |
| 315 | 5.11.2 User Manual | 2014-05-22 → 2015-04-28 (+341d) | 2014-05-22 → 2015-05-05 (+348d) | 1d? → 6d |  |  |  |
| 316 | 5.11.3 Test Approach/Test Cases | 2014-05-22 → 2015-04-24 (+337d) | 2014-05-22 → 2015-04-28 (+341d) | 1d? → 3d |  |  |  |
| 317 | 5.11.4 QA Testing | 2014-05-22 → 2015-04-28 (+341d) | 2014-05-22 → 2015-04-30 (+343d) | 1d? → 3d |  |  |  |
| 318 | 5.11.5 UAT | 2014-05-22 → 2015-05-05 (+348d) | 2014-05-22 → 2015-05-08 (+351d) | 1d? → 4d |  |  |  |
| 319 | **5.12 New Requirement - LOG Request** | 2014-05-22 → 2015-03-03 (+285d) | 2014-05-22 → 2015-05-08 (+351d) | 1d? → 49d |  |  |  |
| 320 | 5.12.1 iTrack #10 | 2014-05-22 → 2015-03-03 (+285d) | 2014-05-22 → 2015-04-24 (+337d) | 1d? → 39d |  |  |  |
| 321 | 5.12.2 User Manual | 2014-05-22 → 2015-04-28 (+341d) | 2014-05-22 → 2015-05-05 (+348d) | 1d? → 6d |  |  |  |
| 322 | 5.12.3 Test Approach/Test Cases | 2014-05-22 → 2015-04-24 (+337d) | 2014-05-22 → 2015-04-28 (+341d) | 1d? → 3d |  |  |  |
| 323 | 5.12.4 QA Testing | 2014-05-22 → 2015-04-28 (+341d) | 2014-05-22 → 2015-04-30 (+343d) | 1d? → 3d |  |  |  |
| 324 | 5.12.5 UAT | 2014-05-22 → 2015-05-05 (+348d) | 2014-05-22 → 2015-05-08 (+351d) | 1d? → 4d |  |  |  |
| 325 | **5.13 New Requirement - FAL Masters** | 2014-05-22 → 2015-03-03 (+285d) | 2014-05-22 → 2015-05-08 (+351d) | 1d? → 49d |  |  |  |
| 326 | 5.13.1 iTrack #23 | 2014-05-22 → 2015-03-03 (+285d) | 2014-05-22 → 2015-04-24 (+337d) | 1d? → 39d |  |  |  |
| 327 | 5.13.2 User Manual | 2014-05-22 → 2015-04-28 (+341d) | 2014-05-22 → 2015-05-05 (+348d) | 1d? → 6d |  |  |  |
| 328 | 5.13.3 Test Approach/Test Cases | 2014-05-22 → 2015-04-24 (+337d) | 2014-05-22 → 2015-04-28 (+341d) | 1d? → 3d |  |  |  |
| 329 | 5.13.4 QA Testing | 2014-05-22 → 2015-04-28 (+341d) | 2014-05-22 → 2015-04-30 (+343d) | 1d? → 3d |  |  |  |
| 330 | 5.13.5 UAT | 2014-05-22 → 2015-05-05 (+348d) | 2014-05-22 → 2015-05-08 (+351d) | 1d? → 4d |  |  |  |

## Version 17 (saved 2015-04-28, file MCAS Plan V20.mpp)

Note of the change: Add MCAS

Last finish stays 2015-12-09.

Changed:

| ID | Task | Start | Finish | Complete |
| --- | --- | --- | --- | --- |
| 1 | **MCAS Project** |  |  | 73% → 74% |
| 231 | **5.2 Upload** |  |  | 52% → 55% |
| 235 | 5.2.4 User Manual |  | 2015-04-08 A | 50% → 100% |
| 239 | **5.3 Claim** |  |  | 35% → 37% |
| 240 | **5.3.1 Buses** |  |  | 59% → 63% |
| 250 | 5.3.1.10 Reserve History |  |  | 0% → 20% |
| 251 | 5.3.1.11 Mandate |  |  | 19% → 20% |
| 252 | 5.3.1.12 Mandate History |  |  | 0% → 20% |
| 253 | 5.3.1.13 Payment |  |  | 0% → 20% |
| 254 | 5.3.1.14 Payment History | 2015-03-02 A |  | 0% → 20% |
| 255 | 5.3.1.15 Recovery |  |  | 0% → 5% |
| 280 | **5.6 Claim Enquiry** |  |  | 64% → 50% |
| 281 | 5.6.1 Claims |  | 2015-04-01 A → 2015-04-01 | 100% → 50% |

## Version 18 (saved 2015-05-11, file MCAS Plan V21.mpp)

Note of the change: Add MCAS

Last finish stays 2015-12-09. Complete tasks 186 → 191.

Changed:

| ID | Task | Start | Finish | Duration | Complete | Total float |
| --- | --- | --- | --- | --- | --- | --- |
| 1 | **MCAS Project** |  |  |  | 74% → 69% |  |
| 189 | **5 Iterative Development and Testing** |  |  |  | 51% → 43% |  |
| 231 | **5.2 Upload** |  | 2015-04-21 → 2015-05-15 (+24d) | 58d → 76d | 55% → 21% |  |
| 232 | 5.2.1 TAC Upload |  | 2015-04-01 A → 2015-05-15 (+44d) | 25d → 57d | 100% → 44% |  |
| 233 | 5.2.2 Claim File Upload |  | 2015-04-01 → 2015-05-15 (+44d) | 25d → 57d | 85% → 37% |  |
| 234 | 5.2.3 SAP File Upload |  | 2015-04-01 → 2015-07-31 (+121d) | 25d → 112d |  |  |
| 239 | **5.3 Claim** |  | 2015-07-22 → 2015-05-29 (-54d) | 179d → 141d | 37% → 20% |  |
| 240 | **5.3.1 Buses** |  |  |  | 63% → 22% |  |
| 249 | 5.3.1.9 Reserve |  | 2015-01-15 → 2015-05-15 (+120d) | 10d → 96d | 58% → 6% |  |
| 250 | 5.3.1.10 Reserve History |  | 2015-01-22 → 2015-05-15 (+113d) | 5d → 86d | 20% → 1% |  |
| 251 | 5.3.1.11 Mandate |  | 2015-02-12 → 2015-05-15 (+92d) | 30d → 96d | 20% → 6% |  |
| 252 | 5.3.1.12 Mandate History |  | 2015-01-22 → 2015-05-15 (+113d) | 5d → 86d | 20% → 1% |  |
| 253 | 5.3.1.13 Payment |  | 2015-02-27 → 2015-05-15 (+77d) | 30d → 85d | 20% → 7% |  |
| 254 | 5.3.1.14 Payment History |  | 2015-03-06 → 2015-05-15 (+70d) | 5d → 55d | 20% → 2% |  |
| 255 | 5.3.1.15 Recovery |  | 2015-03-23 → 2015-05-29 (+67d) | 30d → 79d | 5% → 2% |  |
| 313 | **5.11 New Requirement - New Master Tables** | 2015-03-03 A |  |  | 0% → 86% |  |
| 314 | 5.11.1 iTrack #2 | 2015-03-03 A | 2015-04-24 A |  | 0% → 100% |  |
| 315 | 5.11.2 User Manual | 2015-04-28 A | 2015-05-05 A |  | 0% → 100% |  |
| 316 | 5.11.3 Test Approach/Test Cases | 2015-04-24 A |  |  | 0% → 69% |  |
| 317 | 5.11.4 QA Testing | 2015-04-28 A |  |  | 0% → 3% |  |
| 319 | **5.12 New Requirement - LOG Request** | 2015-03-03 A |  |  | 0% → 82% |  |
| 320 | 5.12.1 iTrack #10 | 2015-03-03 A | 2015-04-24 A |  | 0% → 100% |  |
| 321 | 5.12.2 User Manual | 2015-04-28 A | 2015-05-05 A |  | 0% → 100% |  |
| 325 | **5.13 New Requirement - FAL Masters** | 2015-03-03 A |  |  | 0% → 86% | 0d → none |
| 326 | 5.13.1 iTrack #23 | 2015-03-03 A | 2015-04-24 A |  | 0% → 100% |  |
| 327 | 5.13.2 User Manual | 2015-04-28 A | 2015-05-05 A |  | 0% → 100% |  |
| 328 | 5.13.3 Test Approach/Test Cases | 2015-04-24 A |  |  | 0% → 69% |  |
| 329 | 5.13.4 QA Testing | 2015-04-28 A |  |  | 0% → 3% |  |

## Version 19 (saved 2015-05-12, file MCAS Plan V22.mpp)

Note of the change: Add MCAS

Last finish stays 2015-12-09.

Changed:

| ID | Task | Start | Finish | Complete |
| --- | --- | --- | --- | --- |
| 1 | **MCAS Project** |  |  | 69% → 73% |
| 6 | **2 Requirement Gathering** |  |  | 83% → 86% |
| 86 | **2.10 Security Management System** | 2015-01-29 A | 2015-03-06 A | 0% → 100% |
| 87 | 2.10.1 Permission Screen UI | 2015-01-29 A | 2015-03-06 A | 0% → 100% |
| 88 | 2.10.2 Permission screen functionality | 2015-01-29 A | 2015-03-06 A | 0% → 100% |
| 98 | **4 Design UI and Functionality** |  |  | 83% → 81% |
| 99 | **4.1 System Admin Requirements** |  |  | 97% → 99% |
| 100 | **4.1.1 Upload Main Menu** |  |  | 67% → 83% |
| 102 | 4.1.1.2 Bus Captain Listing |  |  | 0% → 50% |
| 140 | **4.3 Claim** |  |  | 83% → 79% |
| 141 | **4.3.1 Buses** |  |  | 93% → 87% |
| 151 | 4.3.1.10 Reserve History |  | 2015-01-02 A → 2015-01-02 | 100% → 50% |
| 153 | 4.3.1.12 Mandate History |  | 2015-01-02 A → 2015-01-02 | 100% → 50% |
| 155 | 4.3.1.14 Payment History |  |  | 83% → 50% |
| 156 | 4.3.1.15 Recovery |  |  | 22% → 70% |
| 189 | **5 Iterative Development and Testing** |  |  | 43% → 54% |
| 190 | **5.1 System Admin** |  |  | 95% → 96% |
| 191 | **5.1.1 Upload Main Menu** |  |  | 50% → 75% |
| 193 | 5.1.1.2 Bus Captain Listing |  |  | 0% → 50% |
| 231 | **5.2 Upload** |  |  | 21% → 44% |
| 232 | 5.2.1 TAC Upload |  |  | 44% → 90% |
| 233 | 5.2.2 Claim File Upload |  |  | 37% → 90% |
| 239 | **5.3 Claim** |  |  | 20% → 38% |
| 240 | **5.3.1 Buses** |  |  | 22% → 48% |
| 249 | 5.3.1.9 Reserve |  |  | 6% → 80% |
| 250 | 5.3.1.10 Reserve History |  |  | 1% → 25% |
| 251 | 5.3.1.11 Mandate |  |  | 6% → 60% |
| 252 | 5.3.1.12 Mandate History |  |  | 1% → 0% |
| 253 | 5.3.1.13 Payment |  |  | 7% → 30% |
| 254 | 5.3.1.14 Payment History |  |  | 2% → 0% |
| 255 | 5.3.1.15 Recovery |  |  | 2% → 30% |

## Version 20 (saved 2015-05-14, file MCAS Plan V23.mpp)

Note of the change: Add MCAS

Last finish stays 2015-12-09. Complete tasks 191 → 189.

Removed: 286 5.6.6 QA Testing; 287 5.6.7 UAT

Changed:

| ID | Task | Start | Finish | Duration | Complete | Predecessors | Other |
| --- | --- | --- | --- | --- | --- | --- | --- |
| 1 | **MCAS Project** |  |  |  | 73% → 70% |  |  |
| 189 | **5 Iterative Development and Testing** |  |  |  | 54% → 48% |  |  |
| 240 | **5.3.1 Buses** |  |  |  | 48% → 47% |  |  |
| 250 | 5.3.1.10 Reserve History |  | 2015-05-15 → 2015-05-24 (+9d) | 86d → 92d | 25% → 23% |  |  |
| 252 | 5.3.1.12 Mandate History |  | 2015-05-15 → 2015-05-24 (+9d) | 86d → 92d |  |  |  |
| 254 | 5.3.1.14 Payment History |  | 2015-05-15 → 2015-05-24 (+9d) | 55d → 61d |  |  |  |
| 257 | 5.3.1.17 Alert Indicator for Deductible | 2014-11-14 → 2015-02-24 A (+102d) | 2014-11-14 → 2015-05-28 (+195d) | 1d? → 68d | 0% → 50% |  |  |
| 266 | **5.4 Dashboard** |  |  |  | 16% → 11% |  |  |
| 267 | 5.4.1 Sections of Dashboard per User Group |  | 2015-02-25 → 2015-05-24 (+88d) | 10d → 73d |  |  |  |
| 268 | 5.4.2 User Manual |  | 2015-03-11 → 2015-05-30 (+80d) | 10d → 68d |  |  |  |
| 269 | 5.4.3 Test Approach/Test Cases |  | 2015-03-04 → 2015-05-30 (+87d) | 5d → 68d |  |  |  |
| 270 | 5.4.4 QA Testing |  | 2015-02-27 → 2015-06-01 (+94d) | 2d → 68d |  |  |  |
| 271 | 5.4.5 UAT |  | 2015-03-18 → 2015-06-01 (+75d) | 5d → 58d |  |  |  |
| 280 | **5.6 Claim Enquiry** |  |  |  | 50% → 36% |  |  |
| 281 | 5.6.1 Claims |  | 2015-04-01 → 2015-05-24 (+53d) | 15d → 53d |  |  |  |
| 282 | 5.6.2 User Manual | 2015-05-01 A → 2015-05-26 (+25d) | 2015-05-14 A → 2015-05-30 (+16d) | 10d → 5d | 100% → 0% | 171 → 283 | was named 5.6.2 Claim Documents Printing |
| 283 | 5.6.3 Test Approach/Test Cases | 2015-05-15 A → 2015-05-26 (+11d) | 2015-05-28 A → 2015-05-30 (+2d) | 10d → 5d | 100% → 0% | 282 → none | was named 5.6.3 Job Schedule Enquiry |
| 284 | 5.6.4 QA Testing | 2015-05-29 → 2015-01-06 (-143d) | 2015-06-04 → 2015-01-13 (-142d) |  |  |  | was named 5.6.4 User Manual; resources India → Singapore |
| 285 | 5.6.5 UAT | 2015-05-29 → 2015-01-06 (-143d) | 2015-06-04 → 2015-01-13 (-142d) |  |  | 283 → 284 | was named 5.6.5 Test Approach/Test Cases; resources India → CDGI |

## Version 21 (saved 2015-05-25, file MCAS Plan V24.mpp)

Note of the change: Add MCAS

Last finish stays 2015-12-09. Complete tasks 189 → 191.

Added:

| ID | Task | Duration | Start | Finish | Resources |
| --- | --- | --- | --- | --- | --- |
| 239 | 5.2.8 Linking of Unreported Claim | 26d | 2015-04-22 A | 2015-05-27 | India |
| 240 | 5.2.9 QA Testing | 3d | 2015-05-27 | 2015-05-29 | Sinagpore |
| 241 | 5.2.10 User Manual | 4d | 2015-05-29 | 2015-06-03 | India |
| 242 | 5.2.11 UAT | 2d | 2015-06-03 | 2015-06-04 | CDGI |

Changed:

| ID | Task | Finish | Duration | Complete | Total float | Other |
| --- | --- | --- | --- | --- | --- | --- |
| 1 | **MCAS Project** |  |  | 70% → 71% |  |  |
| 6 | **2 Requirement Gathering** |  |  | 86% → 89% |  |  |
| 7 | **2.1 System Admin Requirements** |  |  | 94% → 99% |  |  |
| 8 | **2.1.1 Upload Main Menu** |  |  | 21% → 99% |  |  |
| 9 | 2.1.1.1 Vehicle Listing Upload | 2015-02-13 A |  | 21% → 100% |  |  |
| 10 | 2.1.1.2 Bus Captain Listing | 2015-02-13 A |  | 21% → 100% |  |  |
| 98 | **4 Design UI and Functionality** |  |  | 81% → 82% |  |  |
| 100 | **4.1.1 Upload Main Menu** |  |  | 83% → 90% |  |  |
| 101 | 4.1.1.1 Vehicle Listing Upload | 2014-07-02 A → 2014-07-02 |  | 100% → 90% | none → 56d | resources Singapore → India |
| 102 | 4.1.1.2 Bus Captain Listing |  |  | 50% → 90% |  | resources Singapore → India |
| 153 | 4.3.1.12 Mandate History |  |  | 50% → 0% |  |  |
| 155 | 4.3.1.14 Payment History | 2015-01-16 A |  | 50% → 100% |  |  |
| 163 | **4.4 Dashboard** |  |  | 80% → 90% |  |  |
| 164 | 4.4.1 Sections of Dashboard as per User Group |  |  | 80% → 90% |  |  |
| 189 | **5 Iterative Development and Testing** |  |  | 48% → 51% |  |  |
| 191 | **5.1.1 Upload Main Menu** |  |  | 75% → 65% |  |  |
| 192 | 5.1.1.1 Vehicle Listing Upload | 2014-09-22 A → 2014-09-22 |  | 100% → 80% |  |  |
| 243 | **5.3 Claim** |  |  | 38% → 45% |  |  |
| 244 | **5.3.1 Buses** |  |  | 47% → 56% |  |  |
| 253 | 5.3.1.9 Reserve |  |  | 80% → 95% |  |  |
| 258 | 5.3.1.14 Payment History | 2015-05-24 A |  | 0% → 100% |  |  |
| 263 | 5.3.3 Taxis | 2015-05-18 → 2015-06-18 (+31d) | 30d → 53d |  |  |  |
| 266 | 5.3.6 User Manual |  |  | 0% → 20% |  |  |
| 271 | 5.4.1 Sections of Dashboard per User Group | 2015-05-24 → 2015-05-28 (+4d) | 73d → 76d |  |  |  |
| 284 | **5.6 Claim Enquiry** |  |  | 36% → 37% |  |  |
| 285 | 5.6.1 Claims | 2015-05-24 → 2015-05-28 (+4d) | 53d → 56d |  |  |  |

## Version 22 (saved 2015-06-16, file MCAS Plan V25.mpp)

Note of the change: Add MCAS

Last finish stays 2015-12-09.

Changed:

| ID | Task | Finish | Duration | Complete |
| --- | --- | --- | --- | --- |
| 1 | **MCAS Project** |  |  | 71% → 70% |
| 189 | **5 Iterative Development and Testing** |  |  | 51% → 48% |
| 190 | **5.1 System Admin** |  |  | 96% → 75% |
| 226 | 5.1.21 Deductible | 2015-01-09 → 2015-06-18 (+160d) | 10d → 124d | 98% → 8% |
| 243 | **5.3 Claim** |  |  | 45% → 44% |
| 244 | **5.3.1 Buses** |  |  | 56% → 55% |
| 259 | 5.3.1.15 Recovery | 2015-05-29 → 2015-06-18 (+20d) | 79d → 93d | 30% → 25% |

## Version 23 (saved 2015-07-20, file MCAS Plan V26.mpp)

Note of the change: Add MCAS

Last finish stays 2015-12-09. Complete tasks 191 → 293.

Added:

| ID | Task | Duration | Start | Finish |
| --- | --- | --- | --- | --- |
| 2 | **PHASE 1** | 506d | 2014-01-01 A | 2015-12-09 A |
| 355 | **PHASE 2** | 1d? | 2014-01-01 | 2014-01-01 |
| 356 | **1 Requirement Gathering** | 1d? | 2014-01-01 | 2014-01-01 |
| 357 | Document Generation Specification | 1d? | 2014-01-01 | 2014-01-01 |
| 358 | Doument Print Specification | 1d? | 2014-01-01 | 2014-01-01 |
| 359 | **Claim Registration Specification** | 1d? | 2014-01-01 | 2014-01-01 |
| 360 | Taxis | 1d? | 2014-01-01 | 2014-01-01 |
| 361 | Rental Cars | 1d? | 2014-01-01 | 2014-01-01 |
| 362 | Private Cars | 1d? | 2014-01-01 | 2014-01-01 |
| 363 | Migration | 1d? | 2014-01-01 | 2014-01-01 |
| 364 | **2 Requirements Finalized in TFS** | 1d? | 2014-01-01 | 2014-01-01 |
| 365 | Document Generation Specification | 1d? | 2014-01-01 | 2014-01-01 |
| 366 | Doument Print Specification | 1d? | 2014-01-01 | 2014-01-01 |
| 367 | **Claim Registration Specification** | 1d? | 2014-01-01 | 2014-01-01 |
| 368 | Taxis | 1d? | 2014-01-01 | 2014-01-01 |
| 369 | Rental Cars | 1d? | 2014-01-01 | 2014-01-01 |
| 370 | Private Cars | 1d? | 2014-01-01 | 2014-01-01 |
| 371 | Migration | 1d? | 2014-01-01 | 2014-01-01 |
| 372 | **3 Design UI and Fuctionality** | 1d? | 2014-01-01 | 2014-01-01 |
| 373 | Document Generation | 1d? | 2014-01-01 | 2014-01-01 |
| 374 | Doument Print | 1d? | 2014-01-01 | 2014-01-01 |
| 375 | **Claim Registration** | 1d? | 2014-01-01 | 2014-01-01 |
| 376 | Taxis | 1d? | 2014-01-01 | 2014-01-01 |
| 377 | Rental Cars | 1d? | 2014-01-01 | 2014-01-01 |
| 378 | Private Cars | 1d? | 2014-01-01 | 2014-01-01 |
| 379 | Migration | 1d? | 2014-01-01 | 2014-01-01 |
| 380 | **4 Iterative Development, Testing & Deployment** | 1d? | 2014-01-01 | 2014-01-01 |
| 381 | **Document Generation** | 1d? | 2014-01-01 | 2014-01-01 |
| 382 | Development | 1d? | 2014-01-01 | 2014-01-01 |
| 383 | Testing | 1d? | 2014-01-01 | 2014-01-01 |
| 384 | Deployment | 1d? | 2014-01-01 | 2014-01-01 |
| 385 | **Doument Print** | 1d? | 2014-01-01 | 2014-01-01 |
| 386 | Development | 1d? | 2014-01-01 | 2014-01-01 |
| 387 | Testing | 1d? | 2014-01-01 | 2014-01-01 |
| 388 | Deployment | 1d? | 2014-01-01 | 2014-01-01 |
| 389 | **Claim Registration** | 1d? | 2014-01-01 | 2014-01-01 |
| 390 | **Taxis** | 1d? | 2014-01-01 | 2014-01-01 |
| 391 | Development | 1d? | 2014-01-01 | 2014-01-01 |
| 392 | Testing | 1d? | 2014-01-01 | 2014-01-01 |
| 393 | Deployment | 1d? | 2014-01-01 | 2014-01-01 |
| 394 | **Rental Cars** | 1d? | 2014-01-01 | 2014-01-01 |
| 395 | Development | 1d? | 2014-01-01 | 2014-01-01 |
| 396 | Testing | 1d? | 2014-01-01 | 2014-01-01 |
| 397 | Deployment | 1d? | 2014-01-01 | 2014-01-01 |
| 398 | **Private Cars** | 1d? | 2014-01-01 | 2014-01-01 |
| 399 | Development | 1d? | 2014-01-01 | 2014-01-01 |
| 400 | Testing | 1d? | 2014-01-01 | 2014-01-01 |
| 401 | Deployment | 1d? | 2014-01-01 | 2014-01-01 |
| 402 | Migration | 1d | 2014-01-01 | 2014-01-01 |

Changed:

| ID | Task | Start | Finish | Duration | Complete | Total float |
| --- | --- | --- | --- | --- | --- | --- |
| 1 | **MCAS Project** |  |  |  | 70% → 99% |  |
| 7 | **2 Requirement Gathering** |  |  |  | 89% → 100% |  |
| 8 | **2.1 System Admin Requirements** |  | 2015-02-13 A |  | 99% → 100% |  |
| 9 | **2.1.1 Upload Main Menu** |  | 2015-02-13 A |  | 99% → 100% |  |
| 45 | **2.2 Upload Requirements** |  |  |  | 61% → 100% |  |
| 48 | 2.2.3 SAP File Upload |  | 2015-06-30 A |  | 0% → 100% |  |
| 49 | **2.3 Claim Requirements** |  |  |  | 80% → 100% |  |
| 68 | 2.3.2 Trains | 2015-02-16 A | 2015-03-17 A |  | 0% → 100% |  |
| 69 | 2.3.3 Taxis | 2015-03-17 A | 2015-04-15 A |  | 0% → 100% |  |
| 70 | 2.3.4 Rental Cars | 2015-04-15 A | 2015-05-14 A |  | 0% → 100% |  |
| 71 | 2.3.5 Private Cars | 2015-05-14 A | 2015-06-12 A |  | 0% → 100% |  |
| 72 | 2.4 Dashboard Requirements |  | 2015-02-20 A |  | 80% → 100% |  |
| 81 | **2.7 Document Generation Module** |  | 2015-03-06 A |  | 0% → 100% |  |
| 82 | 2.7.1 Document Generation Criteria |  | 2015-03-06 A |  | 0% → 100% |  |
| 83 | **2.8 Document Print** |  | 2015-03-06 A |  | 0% → 100% |  |
| 84 | 2.7.1 Claim Payment Document Printing |  | 2015-03-06 A |  | 0% → 100% |  |
| 85 | 2.7.2 Claim Registration Document Printing |  | 2015-03-06 A |  | 0% → 100% |  |
| 90 | **2.11 Requirements signed off by client** |  | 2015-06-19 A |  | 99% → 100% |  |
| 97 | **3 Requirements Finalized in TFS** |  | 2015-09-01 A |  | 57% → 100% | 0d → none |
| 98 | 3.1 Document Upload in TFS |  | 2015-09-01 A |  | 57% → 100% |  |
| 99 | **4 Design UI and Functionality** |  |  |  | 82% → 100% |  |
| 100 | **4.1 System Admin Requirements** |  | 2015-07-03 A |  | 99% → 100% |  |
| 101 | **4.1.1 Upload Main Menu** |  | 2015-02-23 A |  | 90% → 100% |  |
| 102 | 4.1.1.1 Vehicle Listing Upload |  | 2014-07-02 A |  | 90% → 100% | 56d → none |
| 103 | 4.1.1.2 Bus Captain Listing |  | 2015-02-23 A |  | 90% → 100% |  |
| 104 | **4.1.2 User Admin** |  | 2015-02-27 A |  | 99% → 100% | 0d → none |
| 137 | **4.2 Upload** |  | 2015-02-25 A |  | 67% → 100% |  |
| 140 | 4.2.3 SAP File Upload |  | 2015-02-25 A |  | 0% → 100% |  |
| 141 | **4.3 Claim** |  | 2015-05-07 A |  | 79% → 100% | 0d → none |
| 142 | **4.3.1 Buses** |  | 2015-02-12 A |  | 87% → 100% |  |
| 152 | 4.3.1.10 Reserve History |  | 2015-01-02 A |  | 50% → 100% |  |
| 154 | 4.3.1.12 Mandate History |  | 2015-01-02 A |  | 0% → 100% |  |
| 155 | 4.3.1.13 Payment |  | 2015-01-16 A |  | 83% → 100% |  |
| 157 | 4.3.1.15 Recovery |  | 2015-02-12 A |  | 70% → 100% |  |
| 159 | 4.3.1.17 Alert Indicator for Deductible | 2014-10-02 A | 2014-10-02 A | 1d? → 1d | 0% → 100% |  |
| 161 | 4.3.3 Taxis | 2015-03-10 A | 2015-04-06 A |  | 0% → 100% |  |
| 162 | 4.3.4 Rental Cars | 2015-04-10 A | 2015-05-07 A |  | 0% → 100% |  |
| 163 | 4.3.5 Private Cars | 2015-04-10 A | 2015-05-07 A |  | 0% → 100% |  |
| 164 | **4.4 Dashboard** |  | 2015-03-02 A |  | 90% → 100% |  |
| 165 | 4.4.1 Sections of Dashboard as per User Group |  | 2015-03-02 A |  | 90% → 100% |  |
| 174 | **4.7 Document Generation Module** | 2015-03-02 A | 2015-04-10 A |  | 0% → 100% |  |
| 175 | 4.7.1 Document Generation Criteria | 2015-03-02 A | 2015-04-10 A |  | 0% → 100% |  |
| 176 | **4.8 Document Print** | 2015-03-25 A | 2015-05-05 A |  | 0% → 100% |  |
| 177 | 4.8.1 Claim Payment Document Printing | 2015-03-25 A | 2015-05-05 A |  | 0% → 100% |  |
| 178 | 4.8.2 Claim Registration Document Printing | 2015-03-25 A | 2015-05-05 A |  | 0% → 100% |  |
| 190 | **5 Iterative Development and Testing** |  |  |  | 48% → 100% |  |
| 191 | **5.1 System Admin** |  |  |  | 75% → 100% |  |
| 192 | **5.1.1 Upload Main Menu** |  | 2015-03-06 A |  | 65% → 100% | 0d → none |
| 193 | 5.1.1.1 Vehicle Listing Upload |  | 2014-09-22 A |  | 80% → 100% |  |
| 194 | 5.1.1.2 Bus Captain Listing |  | 2015-03-06 A |  | 50% → 100% |  |
| 195 | **5.1.2 User Admin** |  | 2015-03-13 A |  | 99% → 100% | 0d → none |
| 227 | 5.1.21 Deductible |  | 2015-06-18 A |  | 8% → 100% |  |
| 231 | 5.1.25 UAT |  | 2015-04-06 A |  | 50% → 100% |  |
| 232 | **5.2 Upload** | 2015-01-30 A |  |  | 44% → 100% |  |
| 233 | 5.2.1 TAC Upload |  | 2015-05-15 A |  | 90% → 100% |  |
| 234 | 5.2.2 Claim File Upload |  | 2015-05-15 A |  | 90% → 100% |  |
| 235 | 5.2.3 SAP File Upload | 2015-02-26 A | 2015-07-31 A |  | 0% → 100% |  |
| 238 | 5.2.6 QA Testing | 2015-04-01 A | 2015-04-07 A |  | 0% → 100% |  |
| 239 | 5.2.7 UAT | 2015-04-08 A | 2015-04-21 A |  | 0% → 100% |  |
| 240 | 5.2.8 Linking of Unreported Claim |  | 2015-05-27 A |  | 60% → 100% |  |
| 241 | 5.2.9 QA Testing | 2015-05-27 A | 2015-05-29 A |  | 0% → 100% |  |
| 242 | 5.2.10 User Manual | 2015-05-29 A | 2015-06-03 A |  | 0% → 100% |  |
| 243 | 5.2.11 UAT | 2015-06-03 A | 2015-06-04 A |  | 0% → 100% |  |
| 244 | **5.3 Claim** |  |  |  | 44% → 100% |  |
| 245 | **5.3.1 Buses** |  |  |  | 55% → 100% |  |
| 254 | 5.3.1.9 Reserve |  | 2015-05-15 A |  | 95% → 100% |  |
| 255 | 5.3.1.10 Reserve History |  | 2015-05-24 A |  | 23% → 100% |  |
| 256 | 5.3.1.11 Mandate |  | 2015-05-15 A |  | 60% → 100% |  |
| 257 | 5.3.1.12 Mandate History |  | 2015-05-24 A |  | 0% → 100% |  |
| 258 | 5.3.1.13 Payment |  | 2015-05-15 A |  | 30% → 100% |  |

| ID | Task | Start | Finish | Complete | Total float |
| --- | --- | --- | --- | --- | --- |
| 260 | 5.3.1.15 Recovery |  | 2015-06-18 A | 25% → 100% |  |
| 262 | 5.3.1.17 Alert Indicator for Deductible |  | 2015-05-28 A | 50% → 100% |  |
| 263 | 5.3.2 Trains |  | 2015-05-11 A | 32% → 100% |  |
| 264 | 5.3.3 Taxis | 2015-04-07 A | 2015-06-18 A | 0% → 100% |  |
| 265 | 5.3.4 Rental Cars | 2015-05-08 A | 2015-06-18 A | 0% → 100% |  |
| 266 | 5.3.5 Private Cars | 2015-05-08 A | 2015-06-18 A | 0% → 100% |  |
| 267 | 5.3.6 User Manual |  | 2015-06-19 A | 20% → 100% |  |
| 268 | 5.3.7 Test Approach/Test Cases |  | 2015-05-28 A | 0% → 100% |  |
| 269 | 5.3.8 QA Testing |  | 2015-07-01 A | 0% → 100% |  |
| 270 | 5.3.9 UAT | 2015-07-02 A | 2015-07-22 A | 0% → 100% |  |
| 271 | **5.4 Dashboard** |  |  | 11% → 100% |  |
| 272 | 5.4.1 Sections of Dashboard per User Group |  | 2015-05-28 A | 50% → 100% |  |
| 273 | 5.4.2 User Manual | 2015-02-26 A | 2015-05-30 A | 0% → 100% |  |
| 274 | 5.4.3 Test Approach/Test Cases | 2015-02-26 A | 2015-05-30 A | 0% → 100% |  |
| 275 | 5.4.4 QA Testing | 2015-02-26 A | 2015-06-01 A | 0% → 100% |  |
| 276 | 5.4.5 UAT | 2015-03-12 A | 2015-06-01 A | 0% → 100% |  |
| 285 | **5.6 Claim Enquiry** |  | 2015-06-11 A | 37% → 100% |  |
| 286 | 5.6.1 Claims |  | 2015-05-28 A | 50% → 100% |  |
| 287 | 5.6.2 User Manual | 2015-05-26 A | 2015-05-30 A | 0% → 100% |  |
| 288 | 5.6.3 Test Approach/Test Cases | 2015-05-26 A | 2015-05-30 A | 0% → 100% |  |
| 289 | 5.6.4 QA Testing |  | 2015-01-13 A | 0% → 100% |  |
| 290 | 5.6.5 UAT |  | 2015-01-13 A | 0% → 100% |  |
| 291 | **5.7 Document Generation Module** | 2015-04-23 A | 2015-05-29 A | 0% → 100% |  |
| 292 | 5.7.1 Document Generation Criteria | 2015-04-23 A | 2015-05-13 A | 0% → 100% |  |
| 293 | 5.7.2 User Manual | 2015-05-14 A | 2015-05-20 A | 0% → 100% |  |
| 294 | 5.7.3 Test Approach/Test Cases | 2015-05-21 A | 2015-05-27 A | 0% → 100% |  |
| 295 | 5.7.4 QA Testing | 2015-05-21 A | 2015-05-27 A | 0% → 100% |  |
| 296 | 5.7.5 UAT | 2015-05-25 A | 2015-05-29 A | 0% → 100% |  |
| 297 | **5.8 Document Print** | 2015-05-06 A | 2015-06-09 A | 0% → 100% |  |
| 298 | 5.8.1 Claim Payment Document Printing | 2015-05-06 A | 2015-05-19 A | 0% → 100% |  |
| 299 | 5.8.2 Claim Registration Document Printing | 2015-05-06 A | 2015-05-19 A | 0% → 100% |  |
| 300 | 5.8.3 User Manual | 2015-05-20 A | 2015-05-26 A | 0% → 100% |  |
| 301 | 5.8.4 Test Approach/Test Cases | 2015-05-20 A | 2015-05-26 A | 0% → 100% |  |
| 302 | 5.8.5 QA Testing | 2015-05-20 A | 2015-05-26 A | 0% → 100% |  |
| 303 | 5.8.6 UAT | 2015-05-27 A | 2015-06-09 A | 0% → 100% |  |
| 310 | **5.10 Security Management System** |  | 2015-03-30 A | 26% → 100% |  |
| 312 | 5.7.2 User Manual | 2015-02-02 A | 2015-03-13 A | 0% → 100% |  |
| 313 | 5.7.3 Test Approach/Test Cases |  | 2015-02-06 A | 0% → 100% |  |
| 315 | 5.7.5 UAT | 2015-03-16 A | 2015-03-30 A | 0% → 100% |  |
| 316 | **5.11 New Requirement - New Master Tables** |  | 2015-05-08 A | 86% → 100% | 0d → none |
| 319 | 5.11.3 Test Approach/Test Cases |  | 2015-04-28 A | 69% → 100% |  |
| 320 | 5.11.4 QA Testing |  | 2015-04-30 A | 3% → 100% |  |
| 321 | 5.11.5 UAT | 2015-05-05 A | 2015-05-08 A | 0% → 100% |  |
| 322 | **5.12 New Requirement - LOG Request** |  | 2015-05-08 A | 82% → 100% | 0d → none |
| 325 | 5.12.3 Test Approach/Test Cases | 2015-04-24 A | 2015-04-28 A | 0% → 100% |  |
| 326 | 5.12.4 QA Testing | 2015-04-28 A | 2015-04-30 A | 0% → 100% |  |
| 327 | 5.12.5 UAT | 2015-05-05 A | 2015-05-08 A | 0% → 100% |  |
| 328 | **5.13 New Requirement - FAL Masters** |  | 2015-05-08 A | 86% → 100% |  |
| 331 | 5.13.3 Test Approach/Test Cases |  | 2015-04-28 A | 69% → 100% |  |
| 332 | 5.13.4 QA Testing |  | 2015-04-30 A | 3% → 100% |  |
| 333 | 5.13.5 UAT | 2015-05-05 A | 2015-05-08 A | 0% → 100% |  |
| 334 | **6 QA Test Scripts** | 2015-07-23 A |  | 0% → 100% |  |
| 335 | 6.1 Testing Approach Development/Confirmation | 2015-07-23 A | 2015-07-29 A | 0% → 100% |  |
| 336 | 6.2 Test Condition Development | 2015-08-06 A | 2015-08-12 A | 0% → 100% |  |
| 337 | 6.3 Test Script Development | 2015-08-20 A | 2015-08-26 A | 0% → 100% |  |
| 338 | 6.4 Expected Results Development | 2015-09-03 A | 2015-09-09 A | 0% → 100% |  |
| 339 | **7 QA Testing** | 2015-09-09 A | 2015-10-06 A | 0% → 100% |  |
| 340 | 7.1 QA Testing | 2015-09-09 A | 2015-09-22 A | 0% → 100% |  |
| 341 | 7.2 Review results | 2015-09-23 A | 2015-10-06 A | 0% → 100% |  |
| 342 | **8 End-to-end UAT** | 2015-10-07 A | 2015-11-03 A | 0% → 100% |  |
| 343 | 8.1 Access to UAT Environment | 2015-10-07 A | 2015-10-20 A | 0% → 100% |  |
| 344 | 8.2 Product Testing | 2015-10-21 A | 2015-11-03 A | 0% → 100% |  |
| 345 | **9 Client UAT** | 2015-10-07 A | 2015-11-03 A | 0% → 100% |  |
| 346 | 9.1 Access to UAT Environment | 2015-10-07 A | 2015-10-20 A | 0% → 100% |  |
| 347 | 9.2 Product Testing | 2015-10-21 A | 2015-11-03 A | 0% → 100% |  |
| 348 | **10 Deployment** | 2015-11-04 A | 2015-12-09 A | 0% → 100% |  |
| 349 | 10.1 Deployment Approach | 2015-11-04 A | 2015-11-10 A | 0% → 100% |  |
| 350 | 10.2 Platform Readiness | 2015-11-11 A | 2015-11-17 A | 0% → 100% |  |
| 351 | 10.3 Software Installation | 2015-11-18 A | 2015-11-24 A | 0% → 100% |  |
| 352 | 10.4 UAT Sign-off | 2015-11-25 A | 2015-11-25 A | 0% → 100% |  |

| ID | Task | Start | Finish | Complete |
| --- | --- | --- | --- | --- |
| 353 | 10.5 Go Live Preparation | 2015-11-26 A | 2015-12-02 A | 0% → 100% |
| 354 | 10.6 Support Kick Off | 2015-12-03 A | 2015-12-09 A | 0% → 100% |

## Version 24 (saved 2015-08-04, file MCAS Plan V27.mpp)

Note of the change: Add MCAS

Last finish 2015-12-09 → 2016-04-20 (+133d).

Added:

| ID | Task | Duration | Start | Finish |
| --- | --- | --- | --- | --- |
| 364 | Add New Requirement | 1d? | 2015-08-10 | 2015-08-10 |
| 373 | Add New Requirement | 1d? | 2015-08-10 | 2015-08-10 |
| 382 | Add New Requirement | 1d? | 2015-08-10 | 2015-08-10 |
| 406 | Add New Requirement | 1d | 2015-08-10 | 2015-08-10 |

Changed:

| ID | Task | Start | Finish | Duration | Complete | Total float | Other |
| --- | --- | --- | --- | --- | --- | --- | --- |
| 1 | **MCAS Project** |  |  |  | 99% → 98% |  |  |
| 355 | **PHASE 2** | 2014-01-01 → 2015-08-10 (+586d) | 2014-01-01 → 2016-04-20 (+840d) | 1d? → 183d? |  | 0d → none |  |
| 356 | **1 Requirement Gathering** | 2014-01-01 → 2015-08-10 (+586d) | 2014-01-01 → 2015-09-11 (+618d) | 1d? → 25d? |  | 0d → none | resources none → Singapore |
| 357 | Document Generation Specification | 2014-01-01 → 2015-08-10 (+586d) | 2014-01-01 → 2015-08-28 (+604d) | 1d? → 15d |  |  | resources none → Singapore |
| 358 | Document Print Specification | 2014-01-01 → 2015-08-10 (+586d) | 2014-01-01 → 2015-08-28 (+604d) | 1d? → 15d |  |  | was named Doument Print Specification; resources none → Singapore |
| 359 | **Claim Registration Specification** | 2014-01-01 → 2015-08-10 (+586d) | 2014-01-01 → 2015-09-11 (+618d) | 1d? → 25d |  | 0d → none | resources none → Singapore |
| 360 | Taxis | 2014-01-01 → 2015-08-10 (+586d) | 2014-01-01 → 2015-09-11 (+618d) | 1d? → 25d |  |  | resources none → Singapore |
| 361 | Rental Cars | 2014-01-01 → 2015-08-10 (+586d) | 2014-01-01 → 2015-09-11 (+618d) | 1d? → 25d |  |  | resources none → Singapore |
| 362 | Private Cars | 2014-01-01 → 2015-08-10 (+586d) | 2014-01-01 → 2015-09-11 (+618d) | 1d? → 25d |  |  | resources none → Singapore |
| 363 | Migration | 2014-01-01 → 2015-08-10 (+586d) | 2014-01-01 → 2015-09-11 (+618d) | 1d? → 25d |  |  | resources none → Singapore |
| 365 | **2 Requirements Finalized in TFS** | 2014-01-01 → 2015-08-10 (+586d) | 2014-01-01 → 2015-08-10 (+586d) |  |  |  |  |
| 366 | Document Generation Specification | 2014-01-01 → 2015-08-10 (+586d) | 2014-01-01 → 2015-08-10 (+586d) |  |  |  |  |
| 367 | Document Print Specification | 2014-01-01 → 2015-08-10 (+586d) | 2014-01-01 → 2015-08-10 (+586d) |  |  |  | was named Doument Print Specification |
| 368 | **Claim Registration Specification** | 2014-01-01 → 2015-08-10 (+586d) | 2014-01-01 → 2015-08-10 (+586d) |  |  |  |  |
| 369 | Taxis | 2014-01-01 → 2015-08-10 (+586d) | 2014-01-01 → 2015-08-10 (+586d) |  |  |  |  |
| 370 | Rental Cars | 2014-01-01 → 2015-08-10 (+586d) | 2014-01-01 → 2015-08-10 (+586d) |  |  |  |  |
| 371 | Private Cars | 2014-01-01 → 2015-08-10 (+586d) | 2014-01-01 → 2015-08-10 (+586d) |  |  |  |  |
| 372 | Migration | 2014-01-01 → 2015-08-10 (+586d) | 2014-01-01 → 2015-08-10 (+586d) |  |  |  |  |
| 374 | **3 Design UI and Fuctionality** | 2014-01-01 → 2015-08-10 (+586d) | 2014-01-01 → 2015-08-10 (+586d) |  |  |  |  |
| 375 | Document Generation | 2014-01-01 → 2015-08-10 (+586d) | 2014-01-01 → 2015-08-10 (+586d) |  |  |  |  |
| 376 | Document Print | 2014-01-01 → 2015-08-10 (+586d) | 2014-01-01 → 2015-08-10 (+586d) |  |  |  | was named Doument Print |
| 377 | **Claim Registration** | 2014-01-01 → 2015-08-10 (+586d) | 2014-01-01 → 2015-08-10 (+586d) |  |  |  |  |
| 378 | Taxis | 2014-01-01 → 2015-08-10 (+586d) | 2014-01-01 → 2015-08-10 (+586d) |  |  |  |  |
| 379 | Rental Cars | 2014-01-01 → 2015-08-10 (+586d) | 2014-01-01 → 2015-08-10 (+586d) |  |  |  |  |
| 380 | Private Cars | 2014-01-01 → 2015-08-10 (+586d) | 2014-01-01 → 2015-08-10 (+586d) |  |  |  |  |
| 381 | Migration | 2014-01-01 → 2015-08-10 (+586d) | 2014-01-01 → 2015-08-10 (+586d) |  |  |  |  |
| 383 | **4 Iterative Development, Testing & Deployment** | 2014-01-01 → 2015-08-10 (+586d) | 2014-01-01 → 2015-08-10 (+586d) |  |  |  |  |
| 384 | **Document Generation** | 2014-01-01 → 2015-08-10 (+586d) | 2014-01-01 → 2015-08-10 (+586d) |  |  |  |  |
| 385 | Development | 2014-01-01 → 2015-08-10 (+586d) | 2014-01-01 → 2015-08-10 (+586d) |  |  |  |  |
| 386 | Testing | 2014-01-01 → 2015-08-10 (+586d) | 2014-01-01 → 2015-08-10 (+586d) |  |  |  |  |
| 387 | Deployment | 2014-01-01 → 2015-08-10 (+586d) | 2014-01-01 → 2015-08-10 (+586d) |  |  |  |  |
| 388 | **Document Print** | 2014-01-01 → 2015-08-10 (+586d) | 2014-01-01 → 2015-08-10 (+586d) |  |  |  | was named Doument Print |
| 389 | Development | 2014-01-01 → 2015-08-10 (+586d) | 2014-01-01 → 2015-08-10 (+586d) |  |  |  |  |
| 390 | Testing | 2014-01-01 → 2015-08-10 (+586d) | 2014-01-01 → 2015-08-10 (+586d) |  |  |  |  |
| 391 | Deployment | 2014-01-01 → 2015-08-10 (+586d) | 2014-01-01 → 2015-08-10 (+586d) |  |  |  |  |
| 392 | **Claim Registration** | 2014-01-01 → 2015-08-10 (+586d) | 2014-01-01 → 2015-08-10 (+586d) |  |  |  |  |
| 393 | **Taxis** | 2014-01-01 → 2015-08-10 (+586d) | 2014-01-01 → 2015-08-10 (+586d) |  |  |  |  |
| 394 | Development | 2014-01-01 → 2015-08-10 (+586d) | 2014-01-01 → 2015-08-10 (+586d) |  |  |  |  |
| 395 | Testing | 2014-01-01 → 2015-08-10 (+586d) | 2014-01-01 → 2015-08-10 (+586d) |  |  |  |  |
| 396 | Deployment | 2014-01-01 → 2015-08-10 (+586d) | 2014-01-01 → 2015-08-10 (+586d) |  |  |  |  |
| 397 | **Rental Cars** | 2014-01-01 → 2015-08-10 (+586d) | 2014-01-01 → 2015-08-10 (+586d) |  |  |  |  |
| 398 | Development | 2014-01-01 → 2015-08-10 (+586d) | 2014-01-01 → 2015-08-10 (+586d) |  |  |  |  |
| 399 | Testing | 2014-01-01 → 2015-08-10 (+586d) | 2014-01-01 → 2015-08-10 (+586d) |  |  |  |  |
| 400 | Deployment | 2014-01-01 → 2015-08-10 (+586d) | 2014-01-01 → 2015-08-10 (+586d) |  |  |  |  |
| 401 | **Private Cars** | 2014-01-01 → 2015-08-10 (+586d) | 2014-01-01 → 2015-08-10 (+586d) |  |  |  |  |
| 402 | Development | 2014-01-01 → 2015-08-10 (+586d) | 2014-01-01 → 2015-08-10 (+586d) |  |  |  |  |
| 403 | Testing | 2014-01-01 → 2015-08-10 (+586d) | 2014-01-01 → 2015-08-10 (+586d) |  |  |  |  |
| 404 | Deployment | 2014-01-01 → 2015-08-10 (+586d) | 2014-01-01 → 2015-08-10 (+586d) |  |  |  |  |
| 405 | Migration | 2014-01-01 → 2015-08-10 (+586d) | 2014-01-01 → 2015-08-10 (+586d) |  |  |  |  |
